# Laiyifen

Schedule from MS Project, 2010-01-04 to 2011-08-22, A marks actual dates.
Microsoft

## Calendars

- 标准: Mon-Fri 08:00-12:00, 13:00-17:00; Sat-Sun off. Exceptions (off unless hours are given): 2010-02-13 to 2010-02-20, 2010-04-05, 2010-04-30, 2010-05-16 08:00-12:00, 13:00-17:00, 2010-06-16.

## Resources

| Resource |
| --- |
| 爱屋项目经理 |
| CDP项目总监 |
| CDP质量总监 |
| CDP项目经理 |
| 爱屋HR模块对口业务人员 |
| 爱屋ABAP开发人员 |
| 爱屋系统管理员 |
| CDP考勤薪资顾问2 |
| CDP培训员工发展顾问2 |
| CDP组织人事顾问 |
| CDP考勤薪资顾问1 |
| CDP招聘绩效顾问 |
| CDP BASIS顾问 |
| CDP管理咨询顾问 |
| CDP培训员工发展顾问1 |
| CDP PORTAL顾问 |
| CDP ABAP开发顾问1 |
| CDP ABAP开发顾问2 |
| 爱屋项目经理 爱屋HR模块对口业务人员 |
| 爱屋高层领导 |
| 实施顾问 |
| 爱屋高层领导和全体项目组成员 |
| 爱屋全体项目组成员 |
| 各部门经理及关键用户 |
| 董事长总裁 |
| 关键用户 |
| HR部门经理 |
| 项目指导委员会 |
| 财务 |
| 财务相关负责人 |
| EIP项目经理 |
| 项目经理 |
| 变革经理 |
| 项目管理层 |
| 收据收集小组 |
| 开发小组 |
| IT开发人员 |
| CDP顾问 |
| 爱屋关键用户 |
| 爱屋项目经理 CDP项目经理 |
| 爱屋项目组成员 |
| 各部门经理及关键用户P顾问 |
| 数据收集小组 |
| CDP开发顾问 |
| 爱屋开发顾问 |
| IT关键用户 |
| 爱屋数据收集小组 |
| 最终用户 |
| 爱屋最终用户 |
| 爱屋薪资关键用户 |
| 爱屋开发人员 |

## Schedule

| ID | WBS | Task | Type | Duration | Start | Finish | Predecessors | Complete | Remaining | Total slack | Free slack | Constraint | Deadline | Resources | Work | Actual work |
| --- | --- | --- | --- | --- | --- | --- | --- | --- | --- | --- | --- | --- | --- | --- | --- | --- |
| 1 | 1 | **上海爱屋食品有限公司SAP人力资源项目实施主计划** |  | 419d | 2010-01-04 A | 2011-08-22 |  | 56% | 183.38d | -254d | 0d |  | 2010-01-04 |  | 14524h | 8246.8h |
| 2 | 1.1 | **10 项目准备** |  | 10d | 2010-01-04 A | 2010-01-15 A |  | 100% |  |  |  |  | 2010-01-04 |  | 252h | 252h |
| 3 | 1.1.1 | 建立项目团队 |  | 1d | 2010-01-04 A | 2010-01-04 A |  | 100% |  |  |  | start no earlier than 2010-01-04 |  | 爱屋项目经理; CDP项目经理 | 16h | 16h |
| 4 | 1.1.3 | 制定项目实施主计划及蓝图阶段详细计划 |  | 3d | 2010-01-05 A | 2010-01-07 A |  | 100% |  |  |  | start no earlier than 2010-01-05 |  | 爱屋项目经理; CDP项目经理 | 48h | 48h |
| 5 | 1.1.5 | 制定项目管理制度 |  | 0.5d | 2010-01-05 A | 2010-01-05 A |  | 100% |  |  |  | finish no earlier than 2010-01-05 |  | 爱屋项目经理; CDP项目经理 | 8h | 8h |
| 6 | 1.1.4 | 建立项目工作环境 |  | 3d | 2010-01-04 A | 2010-01-06 A |  | 100% |  |  |  | start no earlier than 2010-01-04 |  | 爱屋项目经理 | 24h | 24h |
| 7 | 1.1.5 | 开发环境、测试环境检查调试 |  | 1d | 2010-01-11 A | 2010-01-11 A |  | 100% |  |  |  | start no earlier than 2010-01-11 |  | CDP项目经理 | 8h | 8h |
| 8 | 1.1.6 | 项目风险管理评估 |  | 0.5d | 2010-01-06 A | 2010-01-06 A |  | 100% |  |  |  | start no earlier than 2010-01-06 |  | 爱屋项目经理; CDP项目经理 | 8h | 8h |
| 9 | 1.1.7 | 准备关健用户培训资料 |  | 4d | 2010-01-06 A | 2010-01-11 A | 5 | 100% |  |  |  |  |  | CDP顾问 | 32h | 32h |
| 10 | 1.1.9 | CDP顾问集体学习爱屋项目章程及管理制度 |  | 2d | 2010-01-07 A | 2010-01-08 A |  | 100% |  |  |  | start no earlier than 2010-01-07 |  | CDP顾问 | 16h | 16h |
| 11 | 1.1.6 | **项目启动会** |  | 3d | 2010-01-08 A | 2010-01-13 A |  | 100% |  |  |  |  |  |  | 28h | 28h |
| 12 | 1.1.6 | 准备项目启动会议资料 |  | 1.5d | 2010-01-08 A | 2010-01-11 A | 4 | 100% |  |  |  | finish no earlier than 2010-01-11 |  | 爱屋项目经理; CDP项目经理 | 24h | 24h |
| 13 | 1.1.8 | 召开项目启动大会 |  | 0.5d | 2010-01-13 A | 2010-01-13 A | 12 | 100% |  |  |  | start no earlier than 2010-01-13 |  | 爱屋全体项目组成员 | 4h | 4h |
| 14 | 1.1.8 | **爱屋提交人力资源管理制度文档** |  | 2d | 2010-01-11 A | 2010-01-12 A |  | 100% |  |  |  |  |  |  | 16h | 16h |
| 15 | 1.1.8.1 | 整理提交现有人力资源管理制度、流程、办法文档 |  | 1d | 2010-01-11 A | 2010-01-11 A |  | 100% |  |  |  | start no earlier than 2010-01-11 |  | 爱屋关键用户 | 8h | 8h |
| 16 | 1.1.8.2 | 整理提交咨询公司交付的人力资源管理咨询文档 |  | 1d | 2010-01-12 A | 2010-01-12 A |  | 100% |  |  |  | start no earlier than 2010-01-11 |  | 爱屋关键用户 | 8h | 8h |
| 17 | 1.1.10 | **质量检查** |  | 6d | 2010-01-08 A | 2010-01-15 A |  | 100% |  |  |  |  |  |  | 48h | 48h |
| 18 | 1.1.9 | 项目准备阶段质量检查及验收 | milestone | 6d | 2010-01-08 A | 2010-01-15 A |  | 100% |  |  |  | finish no earlier than 2010-01-15 |  | 爱屋项目经理 CDP项目经理 | 48h | 48h |
| 19 | 1.2 | **20 现状调研及蓝图设计** |  | 96d | 2010-01-08 A | 2010-05-31 A |  | 100% |  |  |  |  |  |  | 1664h | 1664h |
| 20 | 1.2.1 | **整体调研** |  | 12d | 2010-01-08 A | 2010-01-25 A |  | 100% |  |  |  |  |  |  | 192h | 192h |
| 21 | 1.2.3 | 准备培训环境及数据 |  | 2d | 2010-01-08 A | 2010-01-11 A |  | 100% |  |  |  | start no earlier than 2010-01-08 |  | CDP顾问 | 16h | 16h |
| 22 | 1.2.2 | 关健用户SAP HR系统功能培训 |  | 3d | 2010-01-12 A | 2010-01-14 A |  | 100% |  |  |  | start no earlier than 2010-01-12 |  | CDP顾问; 爱屋项目组成员 | 48h | 48h |
| 23 | 1.2.1.3 | 调查问卷及访谈提纲准备 |  | 3d | 2010-01-11 A | 2010-01-13 A | 10 | 100% |  |  |  |  |  | CDP顾问 | 24h | 24h |
| 24 | 1.2.1.4 | 爱屋食品HR业务现状及需求整体调研（第一轮） |  | 3d | 2010-01-15 A | 2010-01-19 A | 23 | 100% |  |  |  | start no earlier than 2010-01-15 |  | 关键用户; HR部门经理 | 48h | 48h |
| 25 | 1.2.4 | 爱屋食品HR业务现状及需求整体调研 （第二轮） |  | 3d | 2010-01-20 A | 2010-01-22 A | 24 | 100% |  |  |  |  |  | 关键用户; HR部门经理 | 48h | 48h |
| 26 | 1.2.1.6 | 董事长和总裁访谈 |  | 1d | 2010-01-25 A | 2010-01-25 A | 25 | 100% |  |  |  | start no earlier than 2010-01-20 |  | 项目指导委员会 | 8h | 8h |

| ID | WBS | Task | Type | Duration | Start | Finish | Predecessors | Complete | Constraint | Resources | Work | Actual work |
| --- | --- | --- | --- | --- | --- | --- | --- | --- | --- | --- | --- | --- |
| 27 | 1.2.2 | **需求调研及蓝图设计(基础模块)** |  | 92d | 2010-01-14 A | 2010-05-31 A |  | 100% |  |  | 952h | 952h |
| 28 | 1.2.5 | **业务蓝图设计** |  | 35d | 2010-01-14 A | 2010-03-10 A |  | 100% |  |  | 232h | 232h |
| 29 | 1.2.2.1.1 | 发放调查问卷 |  | 1d | 2010-01-14 A | 2010-01-14 A | 23 | 100% | start no earlier than 2010-01-14 | CDP顾问 | 8h | 8h |
| 30 | 1.2.2.1.2 | 进行各功能现状及需求访谈（第一轮） |  | 5d | 2010-01-26 A | 2010-02-01 A | 26 | 100% | start no earlier than 2010-01-25 | 各部门经理及关键用户 | 40h | 40h |
| 31 | 1.2.2.1.3 | 财务部分过账需求调研 |  | 1d | 2010-02-02 A | 2010-02-02 A | 30 | 100% | start no earlier than 2010-01-29 | 财务相关负责人 | 8h | 8h |
| 32 | 1.2.2.1.4 | SAP PORTAL与爱屋EIP系统集成调研 |  | 3d | 2010-03-08 A | 2010-03-10 A |  | 100% | start no earlier than 2010-03-08 | EIP项目经理 | 24h | 24h |
| 33 | 1.2.2.1.5 | 将来业务流程和蓝图需求访谈（第二轮） |  | 3d | 2010-02-05 A | 2010-02-09 A | 31 | 100% | finish no earlier than 2010-02-09 | 各部门经理及关键用户 | 24h | 24h |
| 34 | 1.2.5.1 | 编写将来业务流程及蓝图（初稿） |  | 5d | 2010-02-10 A | 2010-02-23 A | 33 | 100% | finish no earlier than 2010-02-12 | CDP顾问 | 40h | 40h |
| 35 | 1.2.5.2 | 对将来业务流程及蓝图进行讨论 |  | 3d | 2010-02-24 A | 2010-02-26 A | 34 | 100% | start no earlier than 2010-02-22 | 各部门经理及关键用户 | 24h | 24h |
| 36 | 1.2.2.1.8 | 根据讨论结果完善并修订业务流程及蓝图 |  | 5d | 2010-03-01 A | 2010-03-05 A | 35 | 100% |  | CDP顾问 | 40h | 40h |
| 37 | 1.2.2.1.9 | 确认将来业务流程及蓝图方案（最终版） |  | 3d | 2010-03-08 A | 2010-03-10 A | 36 | 100% |  | 各部门经理及关键用户P顾问 | 24h | 24h |
| 38 | 1.2.6 | **业务蓝图汇报和签署** |  | 5d | 2010-03-11 A | 2010-03-17 A |  | 100% |  |  | 160h | 160h |
| 39 | 1.2.11 | 项目组内部业务蓝图最终确认 |  | 2d | 2010-03-11 A | 2010-03-12 A | 37 | 100% | start no earlier than 2010-03-11 | 爱屋项目经理; CDP项目经理 | 32h | 32h |
| 40 | 1.2.2.2.2 | 爱屋高层业务蓝图汇报会 |  | 1d | 2010-03-15 A | 2010-03-15 A |  | 100% | start no earlier than 2010-03-15 | 项目指导委员会 | 8h | 8h |
| 41 | 1.2.13 | 未来业务流程及蓝图签署 |  | 5d | 2010-03-11 A | 2010-03-17 A |  | 100% | start no earlier than 2010-03-11 | 关键用户; HR部门经理; 爱屋项目经理 | 120h | 120h |
| 42 | 1.2.2.3 | 制定变革管理计划并推动 |  | 57d | 2010-03-11 A | 2010-05-31 A |  | 100% | finish no earlier than 2010-05-31 | 项目管理层 | 448h | 448h |
| 43 | 1.2.8 | **数据收集准备** |  | 5d | 2010-03-08 A | 2010-03-12 A |  | 100% |  |  | 80h | 80h |
| 44 | 1.2.7 | 制定数据收集方案，模板，计划 |  | 5d | 2010-03-08 A | 2010-03-12 A |  | 100% | start no earlier than 2010-03-08 | 关键用户; CDP顾问 | 80h | 80h |
| 45 | 1.2.14 | **质量检查** |  | 2d | 2010-03-17 A | 2010-03-18 A |  | 100% |  |  | 32h | 32h |
| 46 | 1.2.14.1 | 蓝图设计阶段质量检查及验收 | milestone | 2d | 2010-03-17 A | 2010-03-18 A | 39 | 100% | finish no earlier than 2010-03-18 | 爱屋项目经理; CDP项目经理 | 32h | 32h |
| 47 | 1.2.3 | **需求调研及蓝图设计(高阶模块)** |  | 40d | 2010-02-22 A | 2010-04-19 A |  | 100% |  |  | 520h | 520h |
| 48 | 1.2.5 | **业务蓝图设计** |  | 38d | 2010-02-22 A | 2010-04-15 A |  | 100% |  |  | 304h | 304h |
| 49 | 1.2.3.1.1 | 发放调查问卷 |  | 1d | 2010-02-22 A | 2010-02-22 A |  | 100% | start no earlier than 2010-02-22 | CDP顾问 | 8h | 8h |
| 50 | 1.2.3.1.2 | 进行各功能现状及需求访谈（第一轮） |  | 5d | 2010-02-23 A | 2010-03-01 A | 49 | 100% | start no earlier than 2010-01-25 | 各部门经理及关键用户 | 40h | 40h |
| 51 | 1.2.3.1.3 | 业务现状及需求访谈结果整理 |  | 5d | 2010-03-02 A | 2010-03-08 A | 50 | 100% | finish no earlier than 2010-02-05 | CDP顾问 | 40h | 40h |
| 52 | 1.2.3.1.4 | 将来业务流程和蓝图需求访谈（第二轮） |  | 5d | 2010-03-09 A | 2010-03-15 A | 51 | 100% | finish no earlier than 2010-02-05 | 各部门经理及关键用户 | 40h | 40h |
| 53 | 1.2.5.1 | 编写将来业务流程及蓝图 |  | 5d | 2010-03-16 A | 2010-03-22 A | 52 | 100% | start no earlier than 2010-02-22 | CDP顾问 | 40h | 40h |
| 54 | 1.2.5.2 | 对将来业务流程及蓝图进行讨论 |  | 5d | 2010-03-23 A | 2010-03-29 A | 53 | 100% | start no earlier than 2010-02-22 | 各部门经理及关键用户 | 40h | 40h |
| 55 | 1.2.3.1.7 | 根据讨论结果完善并修订业务流程及蓝图 |  | 5d | 2010-03-30 A | 2010-04-06 A | 54 | 100% |  | CDP顾问 | 40h | 40h |
| 56 | 1.2.3.1.8 | 确认将来业务流程及蓝图方案 |  | 7d | 2010-04-07 A | 2010-04-15 A | 55 | 100% |  | 各部门经理及关键用户P顾问 | 56h | 56h |

| ID | WBS | Task | Type | Duration | Start | Finish | Predecessors | Complete | Constraint | Resources | Work | Actual work |
| --- | --- | --- | --- | --- | --- | --- | --- | --- | --- | --- | --- | --- |
| 57 | 1.2.6 | **业务蓝图汇报和签署** |  | 6d | 2010-04-12 A | 2010-04-19 A |  | 100% |  |  | 160h | 160h |
| 58 | 1.2.11 | 项目组内部业务蓝图最终确认 |  | 2d | 2010-04-16 A | 2010-04-19 A | 56 | 100% | start no earlier than 2010-03-10 | 爱屋项目经理; CDP项目经理 | 32h | 32h |
| 59 | 1.2.3.2.2 | 爱屋高层业务蓝图汇报会 |  | 1d | 2010-04-16 A | 2010-04-16 A |  | 100% | start no earlier than 2010-04-16 | 项目指导委员会 | 8h | 8h |
| 60 | 1.2.13 | 未来业务流程及蓝图签署 |  | 5d | 2010-04-12 A | 2010-04-16 A |  | 100% | start no earlier than 2010-04-12 | 关键用户; HR部门经理; 爱屋项目经理 | 120h | 120h |
| 61 | 1.2.8 | **数据收集准备** |  | 2.5d | 2010-04-06 A | 2010-04-08 A |  | 100% |  |  | 40h | 40h |
| 62 | 1.2.7 | 制定数据收集方案、模板、计划制定 |  | 2.5d | 2010-04-06 A | 2010-04-08 A |  | 100% | start no earlier than 2010-04-05 | CDP顾问; 关键用户 | 40h | 40h |
| 63 | 1.2.14 | **质量检查** |  | 1d | 2010-04-16 A | 2010-04-16 A |  | 100% |  |  | 16h | 16h |
| 64 | 1.2.14.1 | 蓝图设计阶段质量检查及验收 | milestone | 1d | 2010-04-16 A | 2010-04-16 A |  | 100% | start no earlier than 2010-04-16 | 爱屋项目经理; CDP项目经理 | 16h | 16h |
| 65 | 1.3 | **30 系统实现(基础模块)** |  | 61d | 2010-03-01 A | 2010-05-25 A |  | 100% |  |  | 2528h | 2528h |
| 66 | 1.3.1 | **系统配置** |  | 25d | 2010-03-01 A | 2010-04-02 A |  | 100% |  |  | 360h | 360h |
| 67 | 1.3.1.1 | 确认PORTAL服务器采购及安装到位 |  | 5d | 2010-03-01 A | 2010-03-05 A |  | 100% | finish no earlier than 2010-03-05 | 爱屋项目经理 | 40h | 40h |
| 68 | 1.3.1.2 | 系统客户化配置 |  | 15d | 2010-03-15 A | 2010-04-02 A |  | 100% | start no earlier than 2010-03-15 | CDP顾问 | 120h | 120h |
| 69 | 1.3.1.3 | 权限方案设计及签署 |  | 10d | 2010-03-15 A | 2010-03-26 A |  | 100% | start no earlier than 2010-03-15 | CDP顾问 | 80h | 80h |
| 70 | 1.3.1.4 | 权限配置 |  | 5d | 2010-03-29 A | 2010-04-02 A |  | 100% | start no earlier than 2010-03-29 | CDP顾问 | 40h | 40h |
| 71 | 1.3.1.5 | SAP PORTAL与爱屋EIP系统集成 |  | 10d | 2010-03-22 A | 2010-04-02 A |  | 100% | start no earlier than 2010-03-22 | EIP项目经理 | 80h | 80h |
| 72 | 1.3.6 | **客户化开发** |  | 41d | 2010-03-10 A | 2010-05-07 A |  | 100% |  |  | 1080h | 1080h |
| 73 | 1.3.2.1 | 制定开发计划 |  | 1d | 2010-03-10 A | 2010-03-10 A |  | 100% | start no earlier than 2010-03-10 | CDP项目经理; 爱屋项目经理 | 16h | 16h |
| 74 | 1.3.2.2 | 功能说明书撰写 |  | 10d | 2010-03-15 A | 2010-03-26 A |  | 100% | finish no earlier than 2010-03-26 | 关键用户; CDP顾问 | 160h | 160h |
| 75 | 1.3.2.3 | IT关键用户客户化开发培训 |  | 0.5d | 2010-03-10 A | 2010-03-10 A |  | 100% | start no earlier than 2010-03-10 | CDP开发顾问; 爱屋开发人员 | 8h | 8h |
| 76 | 1.3.6.2 | 接口、报表、功能等客户化内容开发 |  | 33d | 2010-03-15 A | 2010-04-29 A |  | 100% | start no earlier than 2010-03-15 | CDP开发顾问; 爱屋开发顾问 | 528h | 528h |
| 77 | 1.3.6.5 | 客户化报表及接口测试 |  | 23d | 2010-04-06 A | 2010-05-07 A |  | 100% | finish no earlier than 2010-05-07 | 关键用户; CDP顾问 | 368h | 368h |
| 78 | 1.3.2 | **单元测试** |  | 15d | 2010-03-29 A | 2010-04-19 A |  | 100% |  |  | 168h | 168h |
| 79 | 1.3.2.1 | 制定单元测试计划 |  | 3d | 2010-03-29 A | 2010-03-31 A |  | 100% | start no earlier than 2010-03-29 | CDP项目经理; 爱屋项目经理 | 48h | 48h |
| 80 | 1.3.3.2 | 系统操作培训 |  | 2d | 2010-04-06 A | 2010-04-07 A |  | 100% | start no earlier than 2010-04-05 | CDP顾问; 关键用户 | 32h | 32h |
| 81 | 1.3.2.2 | 单元测试数据和案例准备 |  | 2d | 2010-04-08 A | 2010-04-09 A | 80 | 100% |  | 关键用户; CDP顾问 | 32h | 32h |
| 82 | 1.3.2.3 | 执行单元测试并记录结果 |  | 5d | 2010-04-12 A | 2010-04-16 A | 81 | 100% |  | 关键用户 | 40h | 40h |
| 83 | 1.3.2.4 | 单元测试总结 |  | 1d | 2010-04-19 A | 2010-04-19 A | 82 | 100% |  | CDP项目经理; 爱屋项目经理 | 16h | 16h |

Notes:
- 72: 开发任务分为高中低三类优先级别的开发。

| ID | WBS | Task | Type | Duration | Start | Finish | Predecessors | Complete | Remaining | Total slack | Constraint | Resources | Work | Actual work |
| --- | --- | --- | --- | --- | --- | --- | --- | --- | --- | --- | --- | --- | --- | --- |
| 84 | 1.3.3 | **集成测试** |  | 11d | 2010-04-16 A | 2010-05-03 A |  | 100% |  |  |  |  | 184h | 184h |
| 85 | 1.3.3.2 | 制定集成测试计划 |  | 0.5d | 2010-04-16 A | 2010-04-16 A |  | 100% |  |  | start no earlier than 2010-04-16 | CDP项目经理; 爱屋项目经理 | 8h | 8h |
| 86 | 1.3.3.3 | 召开集成测试启动会议 |  | 0.5d | 2010-04-16 A | 2010-04-16 A | 85 | 100% |  |  | start no earlier than 2010-04-06 | CDP项目经理; 爱屋项目经理 | 8h | 8h |
| 87 | 1.3.3.4 | 集成测试案例和数据准备 |  | 1.5d | 2010-04-19 A | 2010-04-20 A | 86 | 100% |  |  |  | 关键用户; CDP顾问 | 24h | 24h |
| 88 | 1.3.3.5 | 执行集成测试并记录结果 |  | 2d | 2010-04-26 A | 2010-04-27 A | 87 | 100% |  |  | finish no earlier than 2010-04-27 | 关键用户; CDP顾问 | 32h | 32h |
| 89 | 1.3.4.5 | 权限测试 |  | 3d | 2010-04-23 A | 2010-04-27 A |  | 100% |  |  | finish no earlier than 2010-04-27 | 关键用户; CDP顾问 | 48h | 48h |
| 90 | 1.3.4.6 | 系统压力测试 |  | 3d | 2010-04-19 A | 2010-04-21 A |  | 100% |  |  | start no earlier than 2010-04-19 | 爱屋全体项目组成员 | 24h | 24h |
| 91 | 1.3.4.7 | 集成测试问题完善 |  | 3d | 2010-04-27 A | 2010-04-29 A |  | 100% |  |  | start no earlier than 2010-04-27 | CDP顾问 | 24h | 24h |
| 92 | 1.3.3.6 | 集成测试总结 |  | 1d | 2010-05-03 A | 2010-05-03 A |  | 100% |  |  | start no earlier than 2010-04-30 | CDP项目经理; 爱屋项目经理 | 16h | 16h |
| 93 | 1.3.7 | **数据收集及整理** |  | 50d | 2010-03-16 A | 2010-05-25 A |  | 100% |  |  |  |  | 720h | 720h |
| 94 | 1.3.5.1 | 静态数据收集培训 |  | 1d | 2010-03-16 A | 2010-03-16 A |  | 100% |  |  | start no earlier than 2010-03-16 | CDP顾问; 爱屋数据收集小组 | 16h | 16h |
| 95 | 1.3.7.1 | 静态数据收集及检查 |  | 20d | 2010-04-01 A | 2010-04-29 A |  | 100% |  |  | start no earlier than 2010-04-01 | 爱屋数据收集小组; CDP顾问 | 320h | 320h |
| 96 | 1.3.7.2 | 数据导入工具制作开发 |  | 5d | 2010-04-06 A | 2010-04-12 A |  | 100% |  |  | start no earlier than 2010-04-05 | CDP顾问; IT关键用户 | 80h | 80h |
| 97 | 1.3.5.4 | 动态数据收集 |  | 38d | 2010-03-31 A | 2010-05-25 A |  | 100% |  |  | finish no earlier than 2010-05-25 | 爱屋数据收集小组 | 304h | 304h |
| 98 | 1.3.10 | **质量检查** |  | 1d | 2010-04-23 A | 2010-04-23 A |  | 100% |  |  |  |  | 16h | 16h |
| 99 | 1.3.10.1 | 系统实现阶段质量检查及验收 | milestone | 1d | 2010-04-23 A | 2010-04-23 A |  | 100% |  |  | start no earlier than 2010-04-23 | CDP项目经理; 爱屋项目经理 | 16h | 16h |
| 100 | 1.4 | **40 系统实现(高阶模块)** |  | 86d | 2010-04-12 A | 2010-08-10 |  | 64% | 30.93d | 0d |  |  | 3900h | 2204.8h |
| 101 | 1.4.1 | **系统配置** |  | 50d | 2010-04-19 A | 2010-06-28 |  | 88% | 6.19d | 0d |  |  |  |  |
| 102 | 1.4.1.1 | 系统客户化配置 |  | 41d | 2010-04-19 A | 2010-06-14 | 64 | 96% | 1.64d | 0d | finish no earlier than 2010-06-14 |  |  |  |
| 103 | 1.4.1.2 | 权限方案设计、签署及配置 |  | 45d | 2010-04-26 A | 2010-06-28 |  | 80% | 9d | 0d | finish no earlier than 2010-06-28 |  |  |  |
| 104 | 1.3.6 | **客户化开发** |  | 86d | 2010-04-12 A | 2010-08-10 |  | 61% | 33.36d | 0d |  |  | 2656h | 1625.6h |
| 105 | 1.4.2.1 | 客户化开发计划制定 |  | 1d | 2010-04-12 A | 2010-04-12 A |  | 100% |  |  | start no earlier than 2010-04-12 | CDP项目经理; 爱屋项目经理 | 16h | 16h |
| 106 | 1.4.2.2 | IT关键用户客户化开发培训 |  | 1d | 2010-04-12 A | 2010-04-12 A |  | 100% |  |  | start no earlier than 2010-04-12 | CDP顾问; 关键用户 | 16h | 16h |
| 107 | 1.4.2.3 | 功能说明书撰写 |  | 44d | 2010-04-19 A | 2010-06-18 | 64 | 90% | 4.4d | 0d | finish no earlier than 2010-06-18 | CDP开发顾问; 爱屋开发人员 | 704h | 633.6h |
| 108 | 1.3.6.2 | 接口、报表、功能等客户化内容开发 |  | 81d | 2010-04-19 A | 2010-08-10 |  | 50% | 40.5d | 0d | finish no earlier than 2010-08-10 | CDP开发顾问; 爱屋开发顾问 | 1296h | 648h |
| 109 | 1.3.6.5 | 客户化报表及接口测试 |  | 39d | 2010-05-18 A | 2010-07-12 |  | 50% | 19.5d | 0d | finish no earlier than 2010-07-12 | 关键用户; CDP顾问 | 624h | 312h |

Notes:
- 104: 开发任务分为高中低三类优先级别的开发。

| ID | WBS | Task | Type | Duration | Start | Finish | Predecessors | Complete | Remaining | Total slack | Free slack | Constraint | Resources | Work | Actual work |
| --- | --- | --- | --- | --- | --- | --- | --- | --- | --- | --- | --- | --- | --- | --- | --- |
| 110 | 1.3.2 | **单元测试** |  | 11d | 2010-06-15 | 2010-06-30 |  |  |  | -129d | 0d |  |  | 144h |  |
| 111 | 1.3.2.1 | 制定单元测试计划 |  | 2d | 2010-06-15 | 2010-06-17 |  |  |  | -129d | 0d | start no earlier than 2010-06-15 | CDP项目经理; 爱屋项目经理 | 32h |  |
| 112 | 1.4.3.2 | 系统操作培训 |  | 2d | 2010-06-18 | 2010-06-21 | 111 |  |  | -129d | 0d | start no earlier than 2010-06-18 | CDP顾问; 关键用户 | 32h |  |
| 113 | 1.3.2.2 | 单元测试数据和场景准备 |  | 2d | 2010-06-22 | 2010-06-23 | 112 |  |  | -129d | 0d | start no earlier than 2010-06-22 | 关键用户; CDP顾问 | 32h |  |
| 114 | 1.3.2.3 | 执行单元测试并记录结果 |  | 4d | 2010-06-24 | 2010-06-29 | 113 |  |  | -129d | 0d | start no earlier than 2010-06-24 | 关键用户 | 32h |  |
| 115 | 1.3.2.4 | 单元测试总结 |  | 1d | 2010-06-30 | 2010-06-30 | 114 |  |  | -129d | 0d | start no earlier than 2010-06-30 | CDP项目经理; 爱屋项目经理 | 16h |  |
| 116 | 1.3.3 | **集成测试** |  | 9d | 2010-07-01 | 2010-07-13 |  |  |  | -129d | 0d |  |  | 164h |  |
| 117 | 1.3.3.2 | 制定集成测试计划 |  | 0.5d | 2010-07-01 | 2010-07-01 | 115 |  |  | -129d | 0d | start no earlier than 2010-04-16 | CDP项目经理; 爱屋项目经理 | 8h |  |
| 118 | 1.3.3.3 | 召开集成测试启动会议 |  | 0.5d | 2010-07-01 | 2010-07-01 | 117 |  |  | -129d | 0d | start no earlier than 2010-04-06 | CDP项目经理; 爱屋项目经理 | 8h |  |
| 119 | 1.3.3.4 | 集成测试场景和数据准备 |  | 1.5d | 2010-07-02 | 2010-07-05 | 118 |  |  | -129d | 0d |  | 关键用户; CDP顾问 | 24h |  |
| 120 | 1.3.3.5 | 执行集成测试并记录结果 |  | 3d | 2010-07-05 | 2010-07-08 | 119 |  |  | -125.5d | 0d | start no earlier than 2010-07-05 | 关键用户; CDP顾问 | 48h |  |
| 121 | 1.4.4.5 | 权限测试 |  | 2d | 2010-07-05 | 2010-07-07 | 119 |  |  | -129d | 0d | start no earlier than 2010-07-05 | 关键用户; CDP顾问 | 32h |  |
| 122 | 1.4.4.6 | 系统压力测试 |  | 1d | 2010-07-07 | 2010-07-08 | 115, 121 |  |  | -129d | 0d | start no earlier than 2010-07-07 | 爱屋全体项目组成员 | 8h |  |
| 123 | 1.4.4.7 | 集成测试问题完善 |  | 2.5d | 2010-07-08 | 2010-07-12 | 122 |  |  | -129d | 0d | start no earlier than 2010-07-08 | CDP顾问 | 20h |  |
| 124 | 1.3.3.6 | 集成测试总结 |  | 1d | 2010-07-13 | 2010-07-13 | 123 |  |  | -129d | 0d | start no earlier than 2010-07-13 | CDP项目经理; 爱屋项目经理 | 16h |  |
| 125 | 1.3.7 | **数据收集及整理** |  | 61d | 2010-04-19 A | 2010-07-13 |  | 64% | 22.16d | 0d |  |  |  | 920h | 579.2h |
| 126 | 1.4.5.1 | 数据收集计划制定 |  | 1d | 2010-04-19 A | 2010-04-19 A |  | 100% |  |  |  | start no earlier than 2010-04-19 | CDP顾问; 爱屋数据收集小组 | 16h | 16h |
| 127 | 1.4.5.2 | 数据收集培训 |  | 2d | 2010-05-03 A | 2010-05-04 A |  | 100% |  |  |  | start no earlier than 2010-05-03 | 爱屋数据收集小组; CDP顾问 | 32h | 32h |
| 128 | 1.3.7.1 | 数据收集及检查 |  | 52d | 2010-05-03 A | 2010-07-13 |  | 60% | 20.8d | -129d | 0d | start no earlier than 2010-05-03 | CDP顾问; IT关键用户 | 832h | 499.2h |
| 129 | 1.3.7.2 | 数据导入工具制作开发 |  | 5d | 2010-06-07 A | 2010-06-11 |  | 80% | 1d | -108d | 0d | start no earlier than 2010-06-07 | 爱屋数据收集小组 | 40h | 32h |
| 130 | 1.3.10 | **质量检查** |  | 1d | 2010-07-13 | 2010-07-13 |  |  |  | -142d | 0d |  |  | 16h |  |
| 131 | 1.3.10.1 | 系统实现阶段质量检查 | milestone | 1d | 2010-07-13 | 2010-07-13 |  |  |  | -142d | 0d | start no earlier than 2010-07-13 | CDP项目经理; 爱屋项目经理 | 16h |  |
| 132 | 1.5 | **50 最后准备(基础模块)** |  | 26d | 2010-04-26 A | 2010-05-31 A |  | 100% |  |  |  |  |  | 668h | 668h |
| 133 | 1.5.1 | **最终用户培训** |  | 18.5d | 2010-04-26 A | 2010-05-20 A |  | 100% |  |  |  |  |  | 308h | 308h |
| 134 | 1.5.1.4 | 培训计划发布 |  | 1d | 2010-04-26 A | 2010-04-26 A |  | 100% |  |  |  | start no earlier than 2010-04-26 | CDP项目经理; 爱屋项目经理 | 16h | 16h |
| 135 | 1.5.1.1 | 讲师培训 |  | 2d | 2010-05-04 A | 2010-05-05 A |  | 100% |  |  |  | start no earlier than 2010-05-04 | CDP顾问 | 16h | 16h |
| 136 | 1.5.1.5 | 上线需要的制度政策准备发布 |  | 5d | 2010-05-06 A | 2010-05-12 A | 135 | 100% |  |  |  | start no earlier than 2010-04-28 | 关键用户 | 40h | 40h |
| 137 | 1.5.1.2 | 编制用户手册及考试题 |  | 5d | 2010-05-06 A | 2010-05-12 A | 135 | 100% |  |  |  | start no earlier than 2010-04-28 | 关键用户; CDP顾问 | 80h | 80h |
| 138 | 1.5.1.3 | 培训环境准备 |  | 1d | 2010-05-04 A | 2010-05-04 A |  | 100% |  |  |  | start no earlier than 2010-05-04 | CDP顾问 | 8h | 8h |
| 139 | 1.5.5.1 | 静态数据格式转换及上载测试 |  | 2d | 2010-05-05 A | 2010-05-06 A |  | 100% |  |  |  | start no earlier than 2010-05-05 | 关键用户; CDP顾问 | 32h | 32h |
| 140 | 1.5.1.6 | 执行最终用户培训 |  | 3d | 2010-05-13 A | 2010-05-16 A |  | 100% |  |  |  | finish no earlier than 2010-05-16 | 关键用户 | 24h | 24h |

Notes:
- 135: 讲师培训完毕之后，客户进行用户手册编写。

| ID | WBS | Task | Duration | Start | Finish | Predecessors | Complete | Constraint | Resources | Work | Actual work |
| --- | --- | --- | --- | --- | --- | --- | --- | --- | --- | --- | --- |
| 141 | 1.3.4 | **用户接受测试UAT** | 9.5d | 2010-05-10 A | 2010-05-20 A |  | 100% |  |  | 92h | 92h |
| 142 | 1.3.4.2 | 制定UAT计划 | 0.5d | 2010-05-10 A | 2010-05-10 A |  | 100% | start no earlier than 2010-05-10 | CDP项目经理; 爱屋项目经理 | 8h | 8h |
| 143 | 1.3.4.3 | 准备UAT场景和数据 | 3d | 2010-05-13 A | 2010-05-16 A |  | 100% | start no earlier than 2010-05-13 | 关键用户; CDP顾问 | 48h | 48h |
| 144 | 1.3.4.4 | 召开UAT启动会议 | 0.5d | 2010-05-17 A | 2010-05-17 A |  | 100% | start no earlier than 2010-05-17 | 爱屋全体项目组成员 | 4h | 4h |
| 145 | 1.3.4.6 | 执行UAT测试并记录结果 | 2d | 2010-05-17 A | 2010-05-18 A |  | 100% | start no earlier than 2010-05-17 | 爱屋最终用户 | 16h | 16h |
| 146 | 1.3.4.8 | UAT测试结果签字 | 1d | 2010-05-19 A | 2010-05-19 A | 145 | 100% | start no earlier than 2010-04-29 | 爱屋最终用户 | 8h | 8h |
| 147 | 1.3.4.7 | UAT总结 | 0.5d | 2010-05-20 A | 2010-05-20 A | 146 | 100% | start no earlier than 2010-04-30 | CDP项目经理; 爱屋项目经理 | 8h | 8h |
| 148 | 1.5.2 | 最终用户培训考试 | 1d | 2010-05-18 A | 2010-05-18 A |  | 100% | start no earlier than 2010-05-18 |  |  |  |
| 149 | 1.5.2 | **支持(运维)体系建立** | 10d | 2010-05-10 A | 2010-05-20 A |  | 100% |  |  | 40h | 40h |
| 150 | 1.5.2.1 | 支持制度建立 | 1d | 2010-05-10 A | 2010-05-10 A |  | 100% | start no earlier than 2010-05-10 | 爱屋项目经理; CDP项目经理 | 16h | 16h |
| 151 | 1.5.2.2 | 支持团队成立 | 1d | 2010-05-11 A | 2010-05-11 A | 150 | 100% |  | 爱屋项目经理; CDP项目经理 | 16h | 16h |
| 152 | 1.5.2.4 | 支持团队启动运作 | 1d | 2010-05-20 A | 2010-05-20 A |  | 100% | start no earlier than 2010-05-20 | 爱屋关键用户 | 8h | 8h |
| 153 | 1.5.4 | **上线策略与计划** | 4d | 2010-05-13 A | 2010-05-17 A |  | 100% |  |  | 104h | 104h |
| 154 | 1.5.4.1 | 制定上线策略与计划 | 3d | 2010-05-13 A | 2010-05-16 A |  | 100% | start no earlier than 2010-05-13 | CDP项目经理; 爱屋项目经理 | 48h | 48h |
| 155 | 1.5.4.2 | 系统容灾及恢复方案 | 3d | 2010-05-13 A | 2010-05-16 A |  | 100% | start no earlier than 2010-05-13 | CDP项目经理; 爱屋项目经理 | 48h | 48h |
| 156 | 1.5.4.3 | 上线前准备会议 | 1d | 2010-05-17 A | 2010-05-17 A | 155 | 100% |  | 爱屋全体项目组成员 | 8h | 8h |
| 157 | 1.5.3 | **生产环境准备** | 12d | 2010-05-10 A | 2010-05-24 A |  | 100% |  |  | 56h | 56h |
| 158 | 1.5.3.1 | 生产环境环境确认 | 1d | 2010-05-10 A | 2010-05-10 A |  | 100% | start no earlier than 2010-05-10 | CDP顾问 | 8h | 8h |
| 159 | 1.5.3.2 | 配置传输和检查 | 2d | 2010-05-17 A | 2010-05-18 A |  | 100% | start no earlier than 2010-05-17 | 爱屋系统管理员 | 16h | 16h |
| 160 | 1.5.3.3 | 用户ID创建以及权限分配 | 3d | 2010-05-19 A | 2010-05-21 A |  | 100% | start no earlier than 2010-05-19 | 爱屋系统管理员 | 24h | 24h |
| 161 | 1.5.3.4 | 终端设备检查(网络、打印机、GUI配置等) | 1d | 2010-05-24 A | 2010-05-24 A | 160 | 100% |  | 爱屋系统管理员 | 8h | 8h |
| 162 | 1.5.5 | **数据准备与导入** | 8d | 2010-05-20 A | 2010-05-31 A |  | 100% |  |  | 144h | 144h |
| 163 | 1.5.5.1 | 静态数据格式转换 | 2d | 2010-05-20 A | 2010-05-21 A |  | 100% | start no earlier than 2010-05-20 | 爱屋关键用户 | 16h | 16h |
| 164 | 1.5.5.2 | 主数据导入生产系统 | 4d | 2010-05-25 A | 2010-05-28 A | 163 | 100% | start no earlier than 2010-05-25 | 爱屋关键用户; CDP顾问 | 64h | 64h |
| 165 | 1.5.6.3 | 生产系统动态数据补录 | 4d | 2010-05-26 A | 2010-05-31 A |  | 100% | start no earlier than 2010-05-26 | 爱屋关键用户 | 32h | 32h |
| 166 | 1.5.5.3 | 业务数据检查确认 | 2d | 2010-05-27 A | 2010-05-28 A |  | 100% | start no earlier than 2010-05-27 | 爱屋关键用户; CDP顾问 | 32h | 32h |

Notes:
- 152: 客户方支持团队协助顾问公司进行数据导入和测试
- 166: 保证10号之前考勤和薪资业务数据导入完整和正确，模拟运算正确。10号正式运算，15号薪资进卡。之后，奖金发放两三笔之后，在6月底正式成功。3-7号，保证5月份考勤数据得到。

| ID | WBS | Task | Type | Duration | Start | Finish | Predecessors | Complete | Total slack | Free slack | Constraint | Resources | Work | Actual work |
| --- | --- | --- | --- | --- | --- | --- | --- | --- | --- | --- | --- | --- | --- | --- |
| 167 | 1.5.6 | **质量检查** |  | 1d | 2010-05-31 A | 2010-05-31 A |  | 100% |  |  |  |  | 16h | 16h |
| 168 | 1.5.6.1 | 最后准备阶段质量检查及验收 | milestone | 1d | 2010-05-31 A | 2010-05-31 A |  | 100% |  |  | start no earlier than 2010-05-31 | 爱屋项目经理; CDP项目经理 | 16h | 16h |
| 169 | 1.5 | **60 最后准备(高阶模块)** |  | 34d | 2010-07-01 | 2010-08-17 |  |  | -154d | 0d |  |  | 712h |  |
| 170 | 1.5.1 | **最终用户培训** |  | 32d | 2010-07-01 | 2010-08-13 |  |  | -152d | 0d |  |  | 440h |  |
| 171 | 1.5.1.4 | 培训计划发布 |  | 1d | 2010-07-01 | 2010-07-01 |  |  | -121d | 0d | start no earlier than 2010-07-01 | CDP项目经理; 爱屋项目经理 | 16h |  |
| 172 | 1.5.1.1 | 讲师培训 |  | 2d | 2010-07-14 | 2010-07-15 | 131 |  | -142d | 0d | start no earlier than 2010-04-26 | CDP顾问 | 16h |  |
| 173 | 1.5.1.5 | 上线需要的制度政策准备发布 |  | 5d | 2010-07-01 | 2010-07-07 |  |  | -127d | 0d | start no earlier than 2010-07-01 | 关键用户 | 40h |  |
| 174 | 1.5.1.2 | 编制用户手册及考试题 |  | 5d | 2010-07-16 | 2010-07-22 | 172 |  | -141d | 0d | start no earlier than 2010-04-28 | 关键用户; CDP顾问 | 80h |  |
| 175 | 1.5.5.1 | 静态数据格式转换及上载测试 |  | 2d | 2010-07-08 | 2010-07-09 | 173 |  | -127d | 0d | start no earlier than 2010-04-26 | CDP顾问 | 16h |  |
| 176 | 1.5.1.3 | 培训环境准备 |  | 2d | 2010-07-16 | 2010-07-19 | 172 |  | -133d | 0d |  | 关键用户; CDP顾问 | 32h |  |
| 177 | 1.5.1.6 | 执行HR最终用户培训 |  | 5d | 2010-07-23 | 2010-07-29 | 174 |  | -141d | 0d | start no earlier than 2009-10-09 | 关键用户 | 40h |  |
| 178 | 1.3.4 | **用户接受测试UAT** |  | 11.5d | 2010-07-16 | 2010-08-02 |  |  | -142.5d | 0d |  |  | 120h |  |
| 179 | 1.3.4.2 | 制定UAT计划 |  | 0.5d | 2010-07-16 | 2010-07-16 | 172 |  | -142d | 0d | start no earlier than 2010-05-10 | CDP项目经理; 爱屋项目经理 | 8h |  |
| 180 | 1.3.4.3 | 准备UAT场景和数据 |  | 3d | 2010-07-16 | 2010-07-21 | 179 |  | -142d | 0d | start no earlier than 2010-05-05 | 关键用户; CDP顾问 | 48h |  |
| 181 | 1.3.4.4 | 召开UAT启动会议 |  | 1d | 2010-07-21 | 2010-07-22 | 180 |  | -142d | 0d | start no earlier than 2010-05-13 | 爱屋全体项目组成员 | 8h |  |
| 182 | 1.3.4.6 | 执行UAT测试并记录结果 |  | 5d | 2010-07-22 | 2010-07-29 | 181 |  | -142d | 0d | finish no earlier than 2010-05-14 | 爱屋最终用户 | 40h |  |
| 183 | 1.3.4.8 | UAT测试结果签字 |  | 1d | 2010-07-29 | 2010-07-30 | 182 |  | -142d | 0d | start no earlier than 2010-04-29 | 爱屋最终用户 | 8h |  |
| 184 | 1.3.4.7 | UAT总结 |  | 0.5d | 2010-08-02 | 2010-08-02 | 183 |  | -142.5d | 0d | start no earlier than 2010-08-02 | CDP项目经理; 爱屋项目经理 | 8h |  |
| 185 | 1.6.1.9 | 非HR最终用户培训考试（经理和员工） |  | 10d | 2010-08-02 | 2010-08-13 |  |  | -152d | 0d | start no earlier than 2010-08-02 | 关键用户 | 80h |  |
| 186 | 1.5.2 | **支持(运维)体系建立** |  | 3d | 2010-08-02 | 2010-08-04 |  |  | -152d | 0d |  |  | 40h |  |
| 187 | 1.5.2.1 | 支持制度建立 |  | 1d | 2010-08-02 | 2010-08-02 |  |  | -152d | 0d | start no earlier than 2010-08-02 | 爱屋项目经理; CDP项目经理 | 16h |  |
| 188 | 1.5.2.2 | 支持团队成立 |  | 1d | 2010-08-03 | 2010-08-03 | 187 |  | -152d | 0d |  | 爱屋项目经理; CDP项目经理 | 16h |  |
| 189 | 1.5.2.3 | 支持团队启动运作 |  | 1d | 2010-08-04 | 2010-08-04 | 188 |  | -152d | 0d |  | 爱屋关键用户 | 8h |  |
| 190 | 1.5.4 | **上线策略与计划** |  | 5d | 2010-08-04 | 2010-08-10 |  |  | -149d | 0d |  |  | 104h |  |
| 191 | 1.5.4.1 | 制定上线策略与计划 |  | 3d | 2010-08-04 | 2010-08-06 | 188 |  | -147d | 0d | start no earlier than 2010-05-13 | CDP项目经理; 爱屋项目经理 | 48h |  |
| 192 | 1.5.4.2 | 系统容灾及恢复方案 |  | 3d | 2010-08-05 | 2010-08-09 | 189 |  | -149d | 0d | start no earlier than 2010-05-13 | CDP项目经理; 爱屋项目经理 | 48h |  |
| 193 | 1.5.4.3 | 上线前准备会议 |  | 1d | 2010-08-10 | 2010-08-10 | 192 |  | -149d | 0d |  | 爱屋全体项目组成员 | 8h |  |

Notes:
- 172: 讲师培训完毕之后，客户进行用户手册编写。

| ID | WBS | Task | Type | Duration | Start | Finish | Predecessors | Complete | Remaining | Total slack | Free slack | Constraint | Resources | Work | Actual work |
| --- | --- | --- | --- | --- | --- | --- | --- | --- | --- | --- | --- | --- | --- | --- | --- |
| 194 | 1.5.3 | **生产环境准备** |  | 4d | 2010-08-05 | 2010-08-10 |  |  |  | -152d | 0d |  |  | 32h |  |
| 195 | 1.5.3.1 | 生产环境环境确认 |  | 1d | 2010-08-05 | 2010-08-05 | 189 |  |  | -152d | 0d | start no earlier than 2010-05-11 | CDP顾问 | 8h |  |
| 196 | 1.5.3.2 | 配置传输和检查 |  | 1d | 2010-08-06 | 2010-08-06 | 195 |  |  | -149d | 0d |  | 爱屋系统管理员 | 8h |  |
| 197 | 1.5.3.3 | 用户ID创建以及权限分配 |  | 1d | 2010-08-09 | 2010-08-09 | 196 |  |  | -149d | 0d | start no earlier than 2010-05-19 | 爱屋系统管理员 | 8h |  |
| 198 | 1.5.3.4 | 终端设备检查(网络、打印机、GUI配置等) |  | 1d | 2010-08-10 | 2010-08-10 | 197 |  |  | -149d | 0d |  | 爱屋系统管理员 | 8h |  |
| 199 | 1.5.5 | **数据准备与导入** |  | 8d | 2010-08-06 | 2010-08-17 |  |  |  | -154d | 0d |  |  | 80h |  |
| 200 | 1.5.5.1 | 静态数据格式转换 |  | 2d | 2010-08-06 | 2010-08-09 | 195 |  |  | -152d | 0d | start no earlier than 2010-05-14 | 爱屋关键用户 | 16h |  |
| 201 | 1.5.5.2 | 主数据导入生产系统 |  | 2d | 2010-08-10 | 2010-08-11 | 200 |  |  | -152d | 0d |  | 爱屋关键用户; CDP顾问 | 32h |  |
| 202 | 1.6.5.3 | 生产系统动态数据补录 |  | 2d | 2010-08-16 | 2010-08-17 | 201 |  |  | -154d | 0d | start no earlier than 2010-08-16 | 爱屋关键用户 | 16h |  |
| 203 | 1.5.5.3 | 业务数据检查确认 |  | 1d | 2010-08-17 | 2010-08-17 |  |  |  | -154d | 0d | start no earlier than 2010-08-17 | 爱屋关键用户; CDP顾问 | 16h |  |
| 204 | 1.5.6 | **质量检查** |  | 1d | 2010-08-17 | 2010-08-17 |  |  |  | -154d | 0d |  |  | 16h |  |
| 205 | 1.5.6.1 | 最后准备阶段质量检查及验收 | milestone | 1d | 2010-08-17 | 2010-08-17 |  |  |  | -154d | 0d | start no earlier than 2010-08-17 | 爱屋项目经理; CDP项目经理 | 16h |  |
| 206 | 1.6 | **70 上线与支持(基础模块)** |  | 71d | 2010-05-24 A | 2010-08-31 |  | 61% | 27.56d | 0d |  |  |  | 1408h | 930h |
| 207 | 1.6.1 | **系统上线** |  | 20d | 2010-05-24 A | 2010-06-21 |  | 67% | 6.67d | -3d | 0d |  |  | 288h | 192h |
| 208 | 1.6.1.1 | 正式上线前检查 |  | 1d | 2010-05-31 A | 2010-05-31 A |  | 100% |  |  |  | start no earlier than 2010-05-31 | 爱屋项目经理; CDP项目经理 | 16h | 16h |
| 209 | 1.6.1.2 | 系统正式上线 |  | 1d | 2010-06-01 A | 2010-06-01 A | 208 | 100% |  |  |  |  | 爱屋项目经理; CDP项目经理 | 16h | 16h |
| 210 | 1.7.1.3 | 工资核算并行检核计划制定 |  | 1d | 2010-05-24 A | 2010-05-24 A |  | 100% |  |  |  | start no earlier than 2010-05-24 | CDP项目经理; 爱屋项目经理 | 16h | 16h |
| 211 | 1.7.1.4 | 2010.5月工资计算并行 |  | 8d | 2010-06-01 A | 2010-06-10 A |  | 100% |  |  |  | finish no earlier than 2010-06-10 | 爱屋薪资关键用户; CDP顾问 | 128h | 128h |
| 212 | 1.7.1.5 | 2010.5工资并行结果核对 |  | 4d | 2010-06-10 A | 2010-06-15 |  | 25% | 3d | 0d |  | finish no earlier than 2010-06-15 | 爱屋薪资关键用户; CDP顾问 | 64h | 16h |
| 213 | 1.7.1.6 | 2010.5工资核算并行结果签字 |  | 3d | 2010-06-17 | 2010-06-21 | 212 |  |  | -113d | 0d |  | 爱屋薪资关键用户; CDP顾问 | 48h |  |
| 214 | 1.7.2 | **上线支持** |  | 65d | 2010-06-01 A | 2010-08-31 |  | 60% | 25.85d | 0d |  |  |  | 1120h | 738h |
| 215 | 1.6.2 | 多级支持体系启动 |  | 21d | 2010-06-22 A | 2010-07-20 A | 213 | 100% |  |  |  | start no earlier than 2010-05-20 | 爱屋项目经理; CDP项目经理 | 336h | 336h |
| 216 | 1.6.3 | 文档整理与移交 |  | 5d | 2010-06-02 A | 2010-06-08 A |  | 100% |  |  |  | start no earlier than 2010-06-02 | CDP顾问 | 40h | 40h |
| 217 | 1.7.2.3 | IT关键用户培训及知识转移 |  | 3d | 2010-06-09 A | 2010-06-11 A | 216 | 100% |  |  |  |  | IT关键用户; CDP顾问 | 48h | 48h |
| 218 | 1.6.4 | 系统运行评价 |  | 5d | 2010-06-02 A | 2010-06-08 A |  | 100% |  |  |  | start no earlier than 2010-06-02 | 爱屋项目经理; CDP项目经理 | 80h | 80h |
| 219 | 1.6.5 | 项目验收报告 |  | 5d | 2010-06-18 | 2010-06-24 | 218 |  |  | -116d | 0d | start no earlier than 2010-06-18 | 爱屋项目经理; CDP项目经理 | 80h |  |
| 220 | 1.6.6 | 签署项目验收报告 | milestone | 1d | 2010-06-25 | 2010-06-25 |  |  |  | -117d | 0d | start no earlier than 2010-06-25 | 爱屋项目经理; CDP项目经理 | 16h |  |
| 221 | 1.6.7 | 现场支持 |  | 65d | 2010-06-01 A | 2010-08-31 |  | 45% | 35.75d | -164d | 0d | start no earlier than 2010-06-01 | CDP顾问 | 520h | 234h |

Notes:
- 203: 保证10号之前考勤和薪资业务数据导入完整和正确，模拟运算正确。10号正式运算，15号薪资进卡。之后，奖金发放两三笔之后，在6月底正式成功。3-7号，保证5月份考勤数据得到。

| ID | WBS | Task | Type | Duration | Start | Finish | Predecessors | Total slack | Free slack | Constraint | Resources | Work |
| --- | --- | --- | --- | --- | --- | --- | --- | --- | --- | --- | --- | --- |
| 222 | 1.6 | **80 上线与支持(高阶模块)** |  | 265d | 2010-08-17 | 2011-08-22 |  | -418d | 0d |  |  | 3392h |
| 223 | 1.6.1 | **系统上线** |  | 2d | 2010-08-17 | 2010-08-18 |  | -220d | 0d |  |  | 32h |
| 224 | 1.6.1.1 | 正式上线前检查 |  | 1d | 2010-08-17 | 2010-08-17 |  | -220d | 0d | start no earlier than 2010-08-17 | 爱屋项目经理; CDP项目经理 | 16h |
| 225 | 1.6.1.2 | 系统正式上线 |  | 1d | 2010-08-18 | 2010-08-18 | 224 | -220d | 0d | start no earlier than 2010-08-18 | 爱屋项目经理; CDP项目经理 | 16h |
| 226 | 1.8.2 | **上线支持** |  | 66d | 2010-08-18 | 2010-11-17 |  | -220d | 0d |  |  | 1272h |
| 227 | 1.6.2 | 多级支持体系启动 |  | 1d | 2010-08-18 | 2010-08-18 | 224 | -160d | 0d | start no earlier than 2010-08-09 | 爱屋项目经理; CDP项目经理 | 16h |
| 228 | 1.6.3 | 文档整理与移交 |  | 5d | 2010-08-19 | 2010-08-25 | 227 | -160d | 0d | start no earlier than 2010-08-09 | CDP顾问 | 40h |
| 229 | 1.6.4 | IT关键用户培训及知识转移 |  | 5d | 2010-08-19 | 2010-08-25 | 225 | -166d | 0d | start no earlier than 2010-08-09 | IT关键用户; CDP顾问 | 80h |
| 230 | 1.6.5 | 系统运行评价 |  | 5d | 2010-08-26 | 2010-09-01 | 229 | -166d | 0d |  | 爱屋项目经理; CDP项目经理 | 80h |
| 231 | 1.6.6 | 项目验收报告 | milestone | 1d | 2010-09-02 | 2010-09-02 | 230 | -166d | 0d | finish no earlier than 2010-04-30 | 爱屋项目经理; CDP项目经理 | 16h |
| 232 | 1.6.7 | 签署项目验收报告 |  | 65d | 2010-08-19 | 2010-11-17 | 225 | -220d | 0d |  | 爱屋项目经理; CDP项目经理 | 1040h |
| 233 | 2 | 现场支持 |  | 261d | 2010-08-23 | 2011-08-22 |  | -418d | 0d | start no earlier than 2010-08-23 | CDP顾问 | 2088h |
