# 来伊份T-BPM项目实施进度计划-v2-0.5

Schedule from MS Project, 2011-05-16 to 2012-05-04.
cordys

## Calendars

- 标准: Mon-Fri 08:00-12:00, 13:00-17:00; Sat-Sun off. Exceptions (off unless hours are given): 2011-06-06, 2011-09-12, 2011-10-03 to 2011-10-07, 2011-10-08 to 2011-10-09 08:00-12:00, 13:00-17:00, 2012-01-02, 2012-01-23 to 2012-01-27.

## Resources

| Resource |
| --- |
| PM |
| TM |
| TL |
| BA |
| SE-C01 |
| SE-L01 |
| SE-L02 |
| TE1 |
| TE2 |
| SE-C02 |
| TN |

## Schedule

| ID | WBS | Task | Type | Duration | Start | Finish | Predecessors | Total slack | Free slack | Constraint | Resources | Work |
| --- | --- | --- | --- | --- | --- | --- | --- | --- | --- | --- | --- | --- |
| 1 | 1 | **项目准备** |  | 19d | 2011-05-16 | 2011-06-10 |  | 10d |  |  |  | 244h |
| 2 | 1.1 | 建立项目团队 |  | 1d | 2011-05-16 | 2011-05-16 |  | 243d |  |  | PM | 8h |
| 3 | 1.2 | 制定项目实施主计划 |  | 3d | 2011-05-17 | 2011-05-19 |  | 240d |  | start no earlier than 2011-05-17 | PM; TM [50%] | 28h |
| 4 | 1.3 | 制定项目章程 |  | 2d | 2011-05-18 | 2011-05-19 |  | 237d | 0d | start no earlier than 2011-05-18 | PM [50%]; TM [50%] | 12h |
| 5 | 1.4 | 准备项目文档模板 |  | 3d | 2011-05-20 | 2011-05-24 | 4 | 237d |  |  | TM | 24h |
| 6 | 1.5 | **项目启动会** |  | 7d | 2011-05-20 | 2011-05-30 |  | 6d |  |  |  | 52h |
| 7 | 1.5.1 | 准备项目启动会议材料 |  | 3d | 2011-05-20 | 2011-05-24 |  | 237d |  | start no earlier than 2011-05-20 | PM | 24h |
| 8 | 1.5.2 | 召开项目启动大会 |  | 0.5d | 2011-05-30 | 2011-05-30 |  | 0d |  | start no earlier than 2011-05-30 | PM; TM; TL | 12h |
| 9 | 1.5.3 | 双方项目组集体学习来伊份项目章程 |  | 0.5d | 2011-05-30 | 2011-05-30 | 8 | 0d |  |  | PM; TM; TL; SE-C01 | 16h |
| 10 | 1.6 | 开发环境产品安装 |  | 2d | 2011-05-31 | 2011-06-01 | 9 | 0d |  | start no earlier than 2011-05-26 | TM | 16h |
| 11 | 1.7 | 开发环境初始化与配置管理环境搭建 |  | 1d | 2011-06-02 | 2011-06-02 | 10 | 0d |  |  | TM | 8h |
| 12 | 1.8 | 产品基础培训 |  | 4d | 2011-06-07 | 2011-06-10 |  | 225d |  | start no earlier than 2011-06-07 | TN; SE-L01; SE-L02 | 96h |
| 13 | 2 | **需求调研与分析** |  | 34d | 2011-06-03 | 2011-07-21 |  | 0d |  |  |  | 1292h |
| 14 | 2.1 | **用户需求调研** |  | 16d | 2011-06-03 | 2011-06-27 |  | 0d |  |  |  | 640h |
| 15 | 2.1.1 | 调研提纲准备 |  | 2d | 2011-06-03 | 2011-06-07 | 11 | 0d |  |  | PM; TM; TL; BA; SE-C01 | 80h |
| 16 | 2.1.2 | 新开店流程业务需求调研 |  | 6d | 2011-06-08 | 2011-06-15 | 15 | 0d |  |  | PM; TM; TL; BA; SE-C01 | 240h |
| 17 | 2.1.3 | 商品促销流程业务需求调研 |  | 6d | 2011-06-16 | 2011-06-23 | 16 | 0d |  |  | PM; TM; TL; BA; SE-C01 | 240h |
| 18 | 2.1.4 | 系统整合需求 |  | 1d | 2011-06-24 | 2011-06-24 | 17 | 0d |  |  | PM; TM; TL; BA; SE-C01 | 40h |
| 19 | 2.1.5 | 界面定制要求 |  | 1d | 2011-06-27 | 2011-06-27 | 18 | 0d |  |  | PM; TM; TL; BA; SE-C01 | 40h |
| 20 | 2.2 | **用户需求分析** |  | 14d | 2011-06-28 | 2011-07-15 |  | 0d |  |  |  | 544h |
| 21 | 2.2.1 | 总体需求 |  | 2d | 2011-06-28 | 2011-06-29 | 19 | 0d |  |  | PM; TM; TL; SE-C01 | 64h |
| 22 | 2.2.2 | 新开店流程业务需求分析与第二轮调研 |  | 6d | 2011-06-30 | 2011-07-07 | 21 | 0d |  |  | PM; TM; TL; BA; SE-C01 | 240h |
| 23 | 2.2.3 | 商品促销流程业务需求分析与第二轮调研 |  | 6d | 2011-07-08 | 2011-07-15 | 22 | 0d |  |  | PM; TM; TL; BA; SE-C01 | 240h |
| 24 | 2.3 | 用户需求说明书确认 |  | 2d | 2011-07-18 | 2011-07-19 | 20 | 0d |  |  | PM; TM; TL; BA; SE-C01 | 80h |
| 25 | 2.4 | 功能设计完毕 | milestone | 0d | 2011-07-19 | 2011-07-19 | 24 | 0d |  |  |  |  |
| 26 | 2.5 | 项目计划修正 |  | 1d | 2011-07-20 | 2011-07-20 | 25 | 0d |  |  | PM [50%]; TM | 12h |
| 27 | 2.6 | 项目计划确认 |  | 1d | 2011-07-21 | 2011-07-21 | 26 | 0d |  |  | PM; TM | 16h |

Notes:
- 16: 每0.5天完成一个流程需求调研，含2天流程分析统计调研 / 业务分析人员全程参与并对相关流程熟悉所有细节，调研开始前1周提供所有相关文档，包括界面全部布局说明和功能逻辑说明，没有提供的认为在项目范围外 / 分为两个调研组
- 17: 每0.5天完成一个流程需求调研，含2天流程分析统计调研 / 业务分析人员全程参与并对相关流程熟悉所有细节 / 分为两个调研组
- 18: 需求讲解/网络拓扑/待集成系统
- 19: 需求讲解/网络拓扑/待集成系统
- 21: 建模与文档
- 22: 建模与文档 / 业务分析人员全程参与并对相关流程熟悉所有细节，可及时解答所有问题
- 23: 建模与文档 / 业务分析人员全程参与并对相关流程熟悉所有细节，可及时解答所有问题
- 24: 来伊份BA参与需求说明书的编写工作，确认工作可简化

| ID | WBS | Task | Type | Duration | Start | Finish | Predecessors | Total slack | Free slack | Resources | Work |
| --- | --- | --- | --- | --- | --- | --- | --- | --- | --- | --- | --- |
| 28 | 3 | **系统设计** |  | 19d | 2011-07-22 | 2011-08-17 |  | 0d |  |  | 424h |
| 29 | 3.1 | **系统架构设计** |  | 6d | 2011-07-22 | 2011-07-29 |  | 0d |  |  | 120h |
| 30 | 3.1.1 | 总体架构 |  | 3d | 2011-07-22 | 2011-07-26 | 27 | 0d |  | TM | 24h |
| 31 | 3.1.2 | 用户管理 |  | 3d | 2011-07-22 | 2011-07-26 | 27 | 0d |  | TL | 24h |
| 32 | 3.1.3 | TIM用户统一管理(AD/LDAP) |  | 3d | 2011-07-22 | 2011-07-26 | 27 | 3d |  | SE-C01 | 24h |
| 33 | 3.1.4 | SAP集成 |  | 3d | 2011-07-27 | 2011-07-29 | 30 | 0d |  | TM | 24h |
| 34 | 3.1.5 | IBM Websphere Portal集成 |  | 3d | 2011-07-27 | 2011-07-29 | 31 | 0d |  | TL | 24h |
| 35 | 3.2 | 系统架构设计评审 |  | 1d | 2011-08-01 | 2011-08-01 | 29 | 0d |  | TM; TL; SE-C01 | 24h |
| 36 | 3.3 | 系统架构设计修正 |  | 1d | 2011-08-02 | 2011-08-02 | 35 | 0d |  | TM; TL; SE-C01 | 24h |
| 37 | 3.4 | 系统架构设计最终评审与确认 |  | 1d | 2011-08-03 | 2011-08-03 | 36 | 0d |  | TM; TL; SE-C01 | 24h |
| 38 | 3.5 | **系统详细设计(含原型)** |  | 7d | 2011-08-04 | 2011-08-12 |  | 0d |  |  | 160h |
| 39 | 3.5.1 | 数据库设计 |  | 4d | 2011-08-04 | 2011-08-09 | 37 | 0d |  | TM; TL | 64h |
| 40 | 3.5.2 | 表单 |  | 3d | 2011-08-10 | 2011-08-12 | 39 | 0d |  | TL | 24h |
| 41 | 3.5.3 | 业务流程 |  | 3d | 2011-08-10 | 2011-08-12 | 39 | 0d |  | TM | 24h |
| 42 | 3.5.4 | 系统整合 |  | 3d | 2011-08-04 | 2011-08-08 | 37 | 4d |  | SE-C01 | 24h |
| 43 | 3.5.5 | 页面定制 |  | 3d | 2011-08-04 | 2011-08-08 | 37 | 4d |  | SE-L01 | 24h |
| 44 | 3.6 | 系统详细设计评审 |  | 1d | 2011-08-15 | 2011-08-15 | 38 | 0d |  | TM; TL; SE-C01 | 24h |
| 45 | 3.7 | 系统详细些设计修正 |  | 1d | 2011-08-16 | 2011-08-16 | 44 | 0d |  | TM; TL; SE-C01 | 24h |
| 46 | 3.8 | 系统详细设计最终评审与确认 |  | 1d | 2011-08-17 | 2011-08-17 | 45 | 0d |  | TM; TL; SE-C01 | 24h |
| 47 | 3.9 | 系统设计完毕 | milestone | 0d | 2011-08-17 | 2011-08-17 | 46 | 0d |  |  |  |
| 48 | 4 | **系统开发-新开店相关流程** |  | 23d | 2011-08-18 | 2011-09-20 |  | 0d |  |  | 864h |
| 49 | 4.1 | 系统框架 |  | 2d | 2011-08-18 | 2011-08-19 | 47 | 158d | 0d | TL | 16h |
| 50 | 4.2 | **系统管理** |  | 5d | 2011-08-22 | 2011-08-26 |  | 158d |  |  | 40h |
| 51 | 4.2.1 | 权限管理 |  | 1d | 2011-08-22 | 2011-08-22 | 49 | 158d | 0d | TL | 8h |
| 52 | 4.2.2 | 帐号管理 |  | 1d | 2011-08-23 | 2011-08-23 | 51 | 158d | 0d | TL | 8h |
| 53 | 4.2.3 | 群组角色管理 |  | 1d | 2011-08-24 | 2011-08-24 | 52 | 158d | 0d | TL | 8h |
| 54 | 4.2.4 | 导航管理 |  | 1d | 2011-08-25 | 2011-08-25 | 53 | 158d | 0d | TL | 8h |
| 55 | 4.2.5 | 流程管理 |  | 1d | 2011-08-26 | 2011-08-26 | 54 | 158d | 0d | TL | 8h |

Notes:
- 31: 基于CORDYS现有功能，无需二次开发
- 32: 只需从TIM同步用户到CORDYS
- 34: 只需界面整合CORDYS待办
- 39: 新开店相关流程可基本复用现有数据库设计
- 48: 所有开发人员在此时间点前通过Cordys基础认证考试并掌握开发规范
- 50: 基于Cordys产品标准功能，不需要二次开发

| ID | WBS | Task | Type | Duration | Start | Finish | Predecessors | Total slack | Free slack | Resources | Work |
| --- | --- | --- | --- | --- | --- | --- | --- | --- | --- | --- | --- |
| 56 | 4.3 | **数据交互** |  | 12d | 2011-08-29 | 2011-09-14 |  | 158d |  |  | 96h |
| 57 | 4.3.1 | TIM用户统一管理(AD/LDAP) |  | 3d | 2011-08-29 | 2011-08-31 | 55 | 158d | 0d | TL | 24h |
| 58 | 4.3.2 | SAP集成 |  | 3d | 2011-09-01 | 2011-09-05 | 57 | 158d | 0d | TL | 24h |
| 59 | 4.3.3 | IBM Websphere Portal集成 |  | 3d | 2011-09-06 | 2011-09-08 | 58 | 158d | 0d | TL | 24h |
| 60 | 4.3.4 | 日志及监控 |  | 3d | 2011-09-09 | 2011-09-14 | 59 | 158d |  | TL | 24h |
| 61 | 4.4 | **新开店相关流程** |  | 21d | 2011-08-18 | 2011-09-16 |  | 0d |  |  | 648h |
| 62 | 4.4.1 | **标准新开店流程** |  | 17d | 2011-08-18 | 2011-09-09 |  | 0d |  |  | 456h |
| 63 | 4.4.1.1 | 网点年度规划(6步骤) |  | 8d | 2011-08-18 | 2011-08-29 | 47 | 1d | 0d | SE-L01 | 64h |
| 64 | 4.4.1.2 | 标准新店选址与发布(6步骤) |  | 8d | 2011-08-18 | 2011-08-29 | 47 | 0d |  | SE-L02 | 64h |
| 65 | 4.4.1.3 | 标准新开店(11步骤) |  | 9d | 2011-08-18 | 2011-08-30 | 47 | 0d |  | SE-C01 | 72h |
| 66 | 4.4.1.4 | 非集成发票校验(5步骤) |  | 7d | 2011-08-18 | 2011-08-26 | 47 | 2d | 0d | SE-C02 | 56h |
| 67 | 4.4.1.5 | 商品预置键主数据新增 变更(7步骤) |  | 8d | 2011-08-30 | 2011-09-08 | 63 | 1d |  | SE-L01 | 64h |
| 68 | 4.4.1.6 | 新开门店导入管理(14步骤) |  | 9d | 2011-08-30 | 2011-09-09 | 64 | 0d |  | SE-L02 | 72h |
| 69 | 4.4.1.7 | 供应商主数据新增 变更(8步骤) |  | 8d | 2011-08-31 | 2011-09-09 | 65 | 0d |  | SE-C01 | 64h |
| 70 | 4.4.2 | **主数据相关流程** |  | 12d | 2011-08-29 | 2011-09-14 |  | 2d |  |  | 96h |
| 71 | 4.4.2.1 | 门店主数据新增(12步骤)(复杂表单) |  | 12d | 2011-08-29 | 2011-09-14 | 66 | 2d |  | SE-C02 | 96h |
| 72 | 4.4.3 | 新开店打印(8打印) |  | 4d | 2011-09-13 | 2011-09-16 | 67, 68, 69 | 0d |  | SE-L01; SE-L02; SE-C01 | 96h |
| 73 | 4.5 | 新开店阶段设计文档更新及代码评审 |  | 2d | 2011-09-19 | 2011-09-20 | 70, 62, 72 | 0d |  | SE-C01; SE-L01; SE-L02; SE-C02 | 64h |
| 74 | 4.6 | 新开店系统开发完毕 | milestone | 0d | 2011-09-20 | 2011-09-20 | 73 | 0d |  |  |  |
| 75 | 5 | **系统测试-新开店** |  | 63d | 2011-07-20 | 2011-10-20 |  | 0d |  |  | 1068h |
| 76 | 5.1 | **系统测试计划与准备-新开店** |  | 25d | 2011-07-20 | 2011-08-23 |  | 19d |  |  | 404h |
| 77 | 5.1.1 | 测试需求理解 |  | 1d | 2011-07-20 | 2011-07-20 | 25 | 19d | 0d | TE1; TE2; PM [50%] | 20h |
| 78 | 5.1.2 | 测试计划编写 |  | 2d | 2011-07-21 | 2011-07-22 | 77 | 19d | 0d | TE1; TE2 | 32h |
| 79 | 5.1.3 | 测试计划评审与修改 |  | 2d | 2011-07-25 | 2011-07-26 | 78 | 19d | 0d | TE1; TE2; PM | 48h |
| 80 | 5.1.4 | 测试用例编写-新开店流程业务 |  | 16d | 2011-07-27 | 2011-08-17 | 79 | 19d | 0d | TE1; TE2 | 256h |
| 81 | 5.1.5 | 测试用例评审及修改-新开店流程业务 |  | 2d | 2011-08-18 | 2011-08-19 | 80 | 19d | 0d | TE1; TE2 | 32h |
| 82 | 5.1.6 | 测试环境产品安装 |  | 2d | 2011-08-22 | 2011-08-23 | 81 | 19d |  | TM | 16h |

Notes:
- 57: 用户从TIM同步至CORDYS
- 58: 不需要二次开发BAPI等SAP端接口 / 现有接口提供详细说明文档
- 60: 基于Cordys产品标准功能
- 61: �75%为普通表单(20字段以内，单表信息)，也即16*0.75=12个流程 / �25%为复杂表单，也即4个流程/ �各流程1个打印/ �各步骤操作类似，可由一种业务单据也即一个表单贯穿 / �内控指标超时处理可统一按照每流程超时监控点小于等于2个，超时后通过发送通知escalate给某一具体负责人 / �会签可不考虑部分人审批完成即退回或继续执行的情况，也即必须所有人完成审批(无论审批通过或拒绝)，才进行进一步判断 / �无需整合OA系统 / �不需要在线编辑OFFICE/ �各流程需要2个SAP接口调用，接口在20属性以内，单一调用 / �促销主数据管理及系统主配管理移到促销模块
- 72: 16打印，4复杂

| ID | WBS | Task | Type | Duration | Start | Finish | Predecessors | Total slack | Free slack | Resources | Work |
| --- | --- | --- | --- | --- | --- | --- | --- | --- | --- | --- | --- |
| 83 | 5.2 | **系统测试执行-新开店** |  | 19d | 2011-09-21 | 2011-10-20 | 81 | 0d |  |  | 664h |
| 84 | 5.2.1 | 测试系统部署-新开店流程业务 |  | 1d | 2011-09-21 | 2011-09-21 | 74, 82 | 0d |  | TL | 8h |
| 85 | 5.2.2 | 测试系统初始化-新开店流程业务 |  | 1d | 2011-09-22 | 2011-09-22 | 84 | 0d |  | TL | 8h |
| 86 | 5.2.3 | 新开店流程业务功能测试与修改 |  | 6d | 2011-09-23 | 2011-09-30 | 81, 85 | 0d |  | TL [50%]; SE-C01; SE-L01; SE-L02; TE1; TE2; PM [50%]; TM [50%]; SE-C02 | 360h |
| 87 | 5.2.4 | 生产环境准备-新开店流程业务 |  | 2d | 2011-10-08 | 2011-10-09 | 86 | 0d |  | TL | 16h |
| 88 | 5.2.5 | 系统压力测试及调优-新开店流程业务 |  | 8d | 2011-10-10 | 2011-10-19 | 87 | 0d |  | PM [50%]; TM [50%]; TL; SE-C01; SE-L01 | 256h |
| 89 | 5.2.6 | 提交系统测试报告-新开店流程业务 |  | 1d | 2011-10-20 | 2011-10-20 | 88 | 0d |  | TE1; TE2 | 16h |
| 90 | 5.2.7 | 确认系统测试报告-新开店流程业务 | milestone | 0d | 2011-10-20 | 2011-10-20 | 89 | 0d |  |  |  |
| 91 | 5.3 | 系统测试完毕-新开店流程业务 | milestone | 0d | 2011-10-20 | 2011-10-20 | 90 | 0d |  |  |  |
| 92 | 6 | **系统部署-新开店** |  | 9d | 2011-10-21 | 2011-11-02 |  | 0d |  |  | 332h |
| 93 | 6.1 | 生产环境系统部署、配置与初始化-新开店 |  | 2d | 2011-10-21 | 2011-10-24 | 75 | 0d |  | PM [50%]; TM [50%]; TL [50%]; SE-C01; SE-L01 | 56h |
| 94 | 6.2 | 部署验证测试-新开店 |  | 2d | 2011-10-25 | 2011-10-26 | 93 | 0d |  | TL [50%]; TE1; TE2; SE-C01 | 56h |
| 95 | 6.3 | 用户验收测试支持与问题修正-新开店 |  | 5d | 2011-10-27 | 2011-11-02 | 94 | 0d |  | PM [50%]; TM [50%]; TL [50%]; SE-C01; SE-L01; SE-L02; SE-C02 | 220h |
| 96 | 6.4 | 系统验收报告签字确认-新开店 | milestone | 0d | 2011-11-02 | 2011-11-02 | 95 | 5d | 0d |  |  |
| 97 | 6.5 | 系统部署完毕-新开店 | milestone | 0d | 2011-11-02 | 2011-11-02 | 96 | 126d |  |  |  |
| 98 | 7 | **收尾阶段-新开店** |  | 54d | 2011-08-22 | 2011-11-09 |  | 0d |  |  | 568h |
| 99 | 7.1 | 培训材料与用户手册准备-新开店 |  | 12d | 2011-08-22 | 2011-09-06 | 81 | 41d | 36d | TE1; TE2; BA | 288h |
| 100 | 7.2 | 流程业务培训-新开店 |  | 2d | 2011-10-27 | 2011-10-28 | 94 | 8d |  | PM [50%]; TM [50%]; TL [50%] | 24h |
| 101 | 7.3 | 培训材料修正 |  | 1d | 2011-11-02 | 2011-11-02 | 99, 96FF | 5d | 0d | TE1; TE2 | 16h |
| 102 | 7.4 | **系统试运行** |  | 5d | 2011-11-03 | 2011-11-09 |  | 0d |  |  | 240h |
| 103 | 7.4.1 | 新开店试运行 |  | 5d | 2011-11-03 | 2011-11-09 | 95 | 0d |  | TM; TL; SE-C01; SE-L01; SE-L02; SE-C02 | 240h |
| 104 | 8 | **系统开发-促销管理相关流程** |  | 43d | 2011-11-10 | 2012-01-10 | 98 | 0d |  |  | 1656h |
| 105 | 8.1 | **促销管理相关流程** |  | 41d | 2011-11-10 | 2012-01-06 |  | 0d |  |  | 1544h |
| 106 | 8.1.1 | **促销活动方案规划** |  | 9d | 2011-11-10 | 2011-11-22 | 98 | 0d |  |  | 272h |
| 107 | 8.1.1.1 | 全年促销计划(7步骤) |  | 8d | 2011-11-10 | 2011-11-21 |  | 2d | 0d | SE-L01 | 64h |
| 108 | 8.1.1.2 | 包装或专项设计(8步骤) |  | 8d | 2011-11-10 | 2011-11-21 |  | 1d | 0d | SE-L02 | 64h |
| 109 | 8.1.1.3 | 促销物资申购(16步骤) |  | 9d | 2011-11-10 | 2011-11-22 |  | 0d |  | SE-C01 | 72h |
| 110 | 8.1.1.4 | 促销活动培训课件制作(13步骤) |  | 9d | 2011-11-10 | 2011-11-22 |  | 7d | 0d | SE-C02 | 72h |

Notes:
- 88: 需在生产环境中进行压力测试
- 95: 验收测试严格执行经双方确认的测试用例，2天测试，3天修改
- 104: 所有开发人员在此时间点前通过Cordys基础认证考试
- 105: �75%为普通表单(20字段以内，单表信息)，也即16*0.75=12个流程 / �25%为复杂表单，也即4个流程 / �各流程2个打印 / �各步骤操作类似，可由一种业务单据也即一个表单贯穿 / �内控指标超时处理可统一按照每流程超时监控点小于等于2个，超时后通过发送通知escalate给某一具体负责人 / �会签可不考虑部分人审批完成即退回或继续执行的情况，也即必须所有人完成审批(无论审批通过或拒绝)，才进行进一步判断 / �无需整合OA系统 / �不需要在线编辑OFFICE/ �各流程需要2个SAP接口调用，接口在20属性以内，单一调用

| ID | WBS | Task | Type | Duration | Start | Finish | Predecessors | Total slack | Free slack | Resources | Work |
| --- | --- | --- | --- | --- | --- | --- | --- | --- | --- | --- | --- |
| 111 | 8.1.2 | **促销活动商品制定** |  | 9d | 2011-11-22 | 2011-12-02 |  | 1d |  |  | 200h |
| 112 | 8.1.2.1 | 食品采购订单处理(14步骤) |  | 9d | 2011-11-22 | 2011-12-02 | 107 | 2d | 0d | SE-L01 | 72h |
| 113 | 8.1.2.2 | 系统主配维护(7步骤) |  | 8d | 2011-11-22 | 2011-12-01 | 108 | 1d | 0d | SE-L02 | 64h |
| 114 | 8.1.2.3 | 促销商品信息发布(6步骤) |  | 8d | 2011-11-23 | 2011-12-02 | 109 | 0d |  | SE-C01 | 64h |
| 115 | 8.1.3 | **促销活动执行** |  | 32d | 2011-11-10 | 2011-12-23 |  | 0d |  |  | 640h |
| 116 | 8.1.3.1 | 物料状态修改数据新增 变更(15步骤) |  | 9d | 2011-11-23 | 2011-12-05 | 110 | 7d | 0d | SE-C02 | 72h |
| 117 | 8.1.3.2 | 牌价制作及交接（主配）(20步骤)(复杂表单) |  | 13d | 2011-11-10 | 2011-11-28 | 98 | 11d | 0d | TL | 104h |
| 118 | 8.1.3.3 | 促销主数据新增 变更(19步骤)(复杂表单) |  | 13d | 2011-12-05 | 2011-12-21 | 112 | 2d |  | SE-L01 | 104h |
| 119 | 8.1.3.4 | 市场营销人员巡店(8步骤) |  | 8d | 2011-11-29 | 2011-12-08 | 117 | 11d | 0d | TL | 64h |
| 120 | 8.1.3.5 | 营运巡店(28步骤)(复杂表单) |  | 15d | 2011-12-02 | 2011-12-22 | 113 | 1d |  | SE-L02 | 120h |
| 121 | 8.1.3.6 | 服务检核实施(16步骤)(复杂表单) |  | 15d | 2011-12-05 | 2011-12-23 | 114 | 0d |  | SE-C01 | 120h |
| 122 | 8.1.3.7 | 食品非常规采购申请(5步骤) |  | 7d | 2011-12-06 | 2011-12-14 | 116 | 7d |  | SE-C02 | 56h |
| 123 | 8.1.4 | **标准促销收尾** |  | 9d | 2011-12-09 | 2011-12-21 |  | 11d |  |  | 72h |
| 124 | 8.1.4.1 | 门店退货预约(12步骤) |  | 9d | 2011-12-09 | 2011-12-21 | 119 | 11d |  | TL | 72h |
| 125 | 8.1.5 | 促销打印 |  | 9d | 2011-12-26 | 2012-01-06 | 115 | 0d |  | SE-C01; SE-C02; SE-L01; SE-L02; TL | 360h |
| 126 | 8.2 | 促销阶段设计文档更新及代码评审 |  | 2d | 2012-01-09 | 2012-01-10 | 105, 125 | 0d |  | PM; TL; TM; SE-C01; SE-C02; SE-L01; SE-L02 | 112h |
| 127 | 8.3 | 促销管理系统开发完毕 | milestone | 0d | 2012-01-10 | 2012-01-10 | 126 | 0d |  |  |  |
| 128 | 9 | **系统测试-促销** |  | 63d | 2011-11-03 | 2012-02-07 |  | 0d |  |  | 940h |
| 129 | 9.1 | **系统测试计划与准备-促销** |  | 21d | 2011-11-03 | 2011-12-01 |  | 27d |  |  | 344h |
| 130 | 9.1.1 | 测试需求理解 |  | 1d | 2011-11-03 | 2011-11-03 | 101, 13 | 27d | 0d | TE1; TE2; PM [50%] | 20h |
| 131 | 9.1.2 | 测试计划编写 |  | 1d | 2011-11-04 | 2011-11-04 | 130 | 27d | 0d | TE1; TE2 | 16h |
| 132 | 9.1.3 | 测试计划评审与修改 |  | 1d | 2011-11-07 | 2011-11-07 | 131 | 27d | 0d | TE1; TE2; PM [50%] | 20h |
| 133 | 9.1.4 | 业务测试用例编写-商品促销流程 |  | 16d | 2011-11-08 | 2011-11-29 | 132 | 27d | 0d | TE1; TE2 | 256h |
| 134 | 9.1.5 | 测试用例评审及修改-商品促销流程业务 |  | 2d | 2011-11-30 | 2011-12-01 | 133 | 27d |  | TE1; TE2 | 32h |

Notes:
- 113: 在促销及新开店流程需求中的系统主配流程为同一流程
- 121: L02在完成牌价制作及交接后辅助完成该项目,TL支持2天
- 125: 30打印，8复杂

| ID | WBS | Task | Type | Duration | Start | Finish | Predecessors | Total slack | Constraint | Resources | Work |
| --- | --- | --- | --- | --- | --- | --- | --- | --- | --- | --- | --- |
| 135 | 9.2 | **系统测试执行-促销** |  | 15d | 2012-01-11 | 2012-02-07 |  | 0d |  |  | 596h |
| 136 | 9.2.1 | 测试系统部署-商品促销流程业务 |  | 1d | 2012-01-11 | 2012-01-11 | 134, 127 | 0d |  | TL | 8h |
| 137 | 9.2.2 | 测试系统初始化-商品促销流程业务 |  | 1d | 2012-01-12 | 2012-01-12 | 136 | 0d |  | TL | 8h |
| 138 | 9.2.3 | 商品促销流程业务功能测试与修改 |  | 9d | 2012-01-13 | 2012-02-01 | 137 | 0d |  | TL; SE-C01; SE-L01; SE-L02; PM; TM; SE-C02 | 480h |
| 139 | 9.2.4 | 系统压力测试及调优-商品促销流程业务 |  | 3d | 2012-02-02 | 2012-02-06 | 138 | 0d |  | PM [50%]; TM [50%]; TL [50%]; SE-C01; SE-L01 | 84h |
| 140 | 9.2.5 | 提交系统测试报告-商品促销流程业务 |  | 1d | 2012-02-07 | 2012-02-07 | 139 | 0d |  | TE1; TE2 | 16h |
| 141 | 9.2.6 | 确认系统测试报告-商品促销流程业务 | milestone | 0d | 2012-02-07 | 2012-02-07 | 140 | 0d |  |  |  |
| 142 | 9.3 | 系统测试完毕-商品促销流程业务 | milestone | 0d | 2012-02-07 | 2012-02-07 | 141 | 0d |  |  |  |
| 143 | 10 | **系统部署-促销** |  | 9d | 2012-02-08 | 2012-02-20 |  | 0d |  |  | 332h |
| 144 | 10.1 | 生产环境系统部署、配置与初始化 |  | 2d | 2012-02-08 | 2012-02-09 | 142 | 0d |  | PM [50%]; TM [50%]; TL [50%]; SE-C01; SE-L01 | 56h |
| 145 | 10.2 | 部署验证测试 |  | 2d | 2012-02-10 | 2012-02-13 | 144 | 0d |  | TL [50%]; TE1; TE2; SE-C01 | 56h |
| 146 | 10.3 | 用户验收测试支持与问题修正 |  | 5d | 2012-02-14 | 2012-02-20 | 145 | 0d |  | PM [50%]; TM [50%]; TL [50%]; SE-C01; SE-L01; SE-L02; SE-C02 | 220h |
| 147 | 10.4 | 系统验收报告签字确认 | milestone | 0d | 2012-02-20 | 2012-02-20 | 146 | 0d |  |  |  |
| 148 | 10.5 | 系统部署完毕 | milestone | 0d | 2012-02-20 | 2012-02-20 | 147 | 0d |  |  |  |
| 149 | 11 | **收尾阶段-促销** |  | 62d | 2011-11-24 | 2012-02-27 |  | 49d |  |  | 536h |
| 150 | 11.1 | 培训材料与用户手册准备-促销 |  | 36d | 2011-11-24 | 2012-01-13 | 104SS+10d | 75d |  | BA | 288h |
| 151 | 11.2 | 流程业务培训-商品促销 |  | 4d | 2012-02-14 | 2012-02-17 | 145 | 1d |  | PM [50%]; TM [50%]; TL [50%] | 48h |
| 152 | 11.3 | **系统试运行** |  | 5d | 2012-02-21 | 2012-02-27 |  | 0d |  |  | 200h |
| 153 | 11.3.1 | 试运行初期 |  | 5d | 2012-02-21 | 2012-02-27 | 151, 148 | 0d |  | TM; TL; SE-C01; SE-L01; SE-L02 | 200h |
| 154 | 12 | **系统开发-其余流程** |  | 23d | 2012-02-28 | 2012-03-29 |  | 0d |  |  | 800h |
| 155 | 12.1 | **门店翻新及续约相关流程** |  | 15d | 2012-02-28 | 2012-03-19 | 153 | 0d |  |  | 432h |
| 156 | 12.1.1 | 标准暂闭店(19步骤)(复杂表单) |  | 14d | 2012-02-28 | 2012-03-16 |  | 35d |  | SE-C01 | 112h |
| 157 | 12.1.2 | 门店整体翻新(11步骤) |  | 9d | 2012-02-28 | 2012-03-09 |  | 0d |  | SE-L02 | 72h |
| 158 | 12.1.3 | 加盟商新开店及老翻新(7步骤) |  | 8d | 2012-02-28 | 2012-03-08 |  | 1d |  | SE-C02 | 64h |
| 159 | 12.1.4 | 门店续租(9步骤) |  | 8d | 2012-02-28 | 2012-03-08 |  | 1d |  | TL | 64h |
| 160 | 12.1.5 | 标准门店拆店(42步骤)(复杂表单) |  | 15d | 2012-02-28 | 2012-03-19 |  | 34d | start no earlier than 2011-08-31 | SE-L01 | 120h |
| 161 | 12.2 | 其余流程打印(5) |  | 12d | 2012-03-12 | 2012-03-27 | 157, 158, 159 | 0d |  | TL; SE-L02; SE-C02 | 288h |
| 162 | 12.3 | 促销阶段设计文档更新及代码评审 |  | 2d | 2012-03-28 | 2012-03-29 | 161 | 0d |  | TL; SE-C01; SE-L01; SE-L02; SE-C02 | 80h |
| 163 | 12.4 | 促销管理系统开发完毕 | milestone | 0d | 2012-03-29 | 2012-03-29 | 162 | 0d |  |  |  |

Notes:
- 139: 需在生产环境中进行压力测试
- 146: 验收测试严格执行经双方确认的测试用例，2天测试，3天修改
- 151: 由客户方PM对内部人员在测试环境进行培训，CORDYS提供支持
- 154: 所有开发人员在此时间点前通过Cordys基础认证考试
- 160: TL对此模块进行2天的支持.从9.15-9.16两天
- 161: 5 个表单,2复杂

| ID | WBS | Task | Type | Duration | Start | Finish | Predecessors | Total slack | Free slack | Resources | Work |
| --- | --- | --- | --- | --- | --- | --- | --- | --- | --- | --- | --- |
| 164 | 13 | **系统测试-其余流程** |  | 33d | 2012-02-28 | 2012-04-12 |  | 0d |  |  | 524h |
| 165 | 13.1 | **系统测试计划与准备-其余流程** |  | 8d | 2012-02-28 | 2012-03-08 |  | 15d |  |  | 136h |
| 166 | 13.1.1 | 测试需求理解及计划编写 |  | 1d | 2012-02-28 | 2012-02-28 | 153 | 15d | 0d | TE1; TE2; PM [50%] | 20h |
| 167 | 13.1.2 | 测试计划评审与修改 |  | 1d | 2012-02-29 | 2012-02-29 | 166 | 15d | 0d | TE1; TE2; PM [50%] | 20h |
| 168 | 13.1.3 | 业务测试用例编写-其余流程 |  | 4d | 2012-03-01 | 2012-03-06 | 167 | 15d | 0d | TE1; TE2 | 64h |
| 169 | 13.1.4 | 测试用例评审及修改-其余流程业务 |  | 2d | 2012-03-07 | 2012-03-08 | 168 | 15d |  | TE1; TE2 | 32h |
| 170 | 13.2 | **系统测试执行-促销** |  | 10d | 2012-03-30 | 2012-04-12 |  | 0d |  |  | 388h |
| 171 | 13.2.1 | 测试系统部署-其余流程业务 |  | 1d | 2012-03-30 | 2012-03-30 | 163, 169 | 0d |  | TL | 8h |
| 172 | 13.2.2 | 测试系统初始化-其余流程业务 |  | 1d | 2012-04-02 | 2012-04-02 | 171 | 0d |  | TL | 8h |
| 173 | 13.2.3 | 其余流程业务功能测试与修改 |  | 5d | 2012-04-03 | 2012-04-09 | 172 | 0d |  | TL [50%]; SE-C01; SE-L01; SE-L02; TE1; TE2; PM [50%]; TM [50%]; SE-C02 | 300h |
| 174 | 13.2.4 | 系统压力测试及调优-其余流程业务 |  | 2d | 2012-04-10 | 2012-04-11 | 173 | 0d |  | PM [50%]; TM [50%]; TL [50%]; SE-C01; SE-L01 | 56h |
| 175 | 13.2.5 | 提交系统测试报告-其余流程业务 |  | 1d | 2012-04-12 | 2012-04-12 | 174 | 0d |  | TE1; TE2 | 16h |
| 176 | 13.2.6 | 确认系统测试报告-其余流程业务 | milestone | 0d | 2012-04-12 | 2012-04-12 | 175 | 0d |  |  |  |
| 177 | 13.3 | 系统测试完毕-其余流程业务 | milestone | 0d | 2012-04-12 | 2012-04-12 | 176 | 0d |  |  |  |
| 178 | 14 | **系统部署-其余流程** |  | 9d | 2012-04-13 | 2012-04-25 |  | 0d |  |  | 332h |
| 179 | 14.1 | 生产环境系统部署、配置与初始化 |  | 2d | 2012-04-13 | 2012-04-16 | 177 | 0d |  | PM [50%]; TM [50%]; TL [50%]; SE-C01; SE-L01 | 56h |
| 180 | 14.2 | 部署验证测试 |  | 2d | 2012-04-17 | 2012-04-18 | 179 | 0d |  | TL [50%]; TE1; TE2; SE-C01 | 56h |
| 181 | 14.3 | 用户验收测试支持与问题修正 |  | 5d | 2012-04-19 | 2012-04-25 | 180 | 0d |  | PM [50%]; TM [50%]; TL [50%]; SE-C01; SE-L01; SE-L02; SE-C02 | 220h |
| 182 | 14.4 | 系统验收报告签字确认 | milestone | 0d | 2012-04-25 | 2012-04-25 | 181 | 0d |  |  |  |
| 183 | 14.5 | 系统部署完毕 | milestone | 0d | 2012-04-25 | 2012-04-25 | 182 | 0d |  |  |  |
| 184 | 15 | **收尾阶段-其余流程** |  | 39d | 2012-03-13 | 2012-05-04 |  | 0d |  |  | 348h |
| 185 | 15.1 | 培训材料与用户手册准备-其余流程业务 |  | 8d | 2012-03-13 | 2012-03-22 | 154SS+10d | 31d |  | BA | 64h |
| 186 | 15.2 | 流程业务培训-其余流程业务 |  | 1d | 2012-04-19 | 2012-04-19 | 180 | 4d |  | PM [50%]; TM [50%]; TL [50%] | 12h |
| 187 | 15.3 | **系统试运行** |  | 5d | 2012-04-26 | 2012-05-02 |  | 0d |  |  | 240h |
| 188 | 15.3.1 | 试运行初期 |  | 5d | 2012-04-26 | 2012-05-02 | 183, 186 | 0d |  | TM; TL; SE-C01; SE-L01; SE-L02; SE-C02 | 240h |
| 189 | 15.4 | 系统正式运行 | milestone | 0d | 2012-05-02 | 2012-05-02 | 188 | 2d |  |  |  |
| 190 | 15.5 | 项目移交 |  | 2d | 2012-05-03 | 2012-05-04 | 188 | 0d |  | PM; TM | 32h |
| 191 | 15.6 | 项目结束 | milestone | 0d | 2012-05-04 | 2012-05-04 | 190 | 0d |  |  |  |

Notes:
- 174: 需在生产环境中进行压力测试
- 181: 验收测试严格执行经双方确认的测试用例，2天测试，3天修改
- 186: 由客户方PM对内部人员在测试环境进行培训，CORDYS提供支持
- 190: 由于项目分阶段允许,在前面的几个阶段中已经包含了试运行.因此,将试运行时间去除
