# 来伊份T-BPM项目实施进度计划-v2-0.5

Schedule from MS Project, 2011-05-16 to 2012-05-22.
cordys

## Calendars

- 标准: Mon-Fri 08:00-12:00, 13:00-17:00; Sat-Sun off. Exceptions (off unless hours are given): 2011-06-06, 2011-09-12, 2011-10-03 to 2011-10-07, 2011-10-08 to 2011-10-09 08:00-12:00, 13:00-17:00, 2012-01-02, 2012-01-23 to 2012-01-27.

## Resources

| Resource |
| --- |
| PM |
| TM |
| TL |
| BA |
| SE-C01 |
| SE-L01 |
| SE-L02 |
| TE1 |
| TE2 |
| SE-C02 |
| TN |

## Schedule

| ID | WBS | Task | Type | Duration | Start | Finish | Predecessors | Total slack | Free slack | Constraint | Resources | Work |
| --- | --- | --- | --- | --- | --- | --- | --- | --- | --- | --- | --- | --- |
| 1 | 1 | 项目启动 | milestone | 0d | 2011-05-16 | 2011-05-16 |  | 3d | 0d |  |  |  |
| 2 | 2 | **项目准备** |  | 19d | 2011-05-16 | 2011-06-10 | 1 | 3d |  |  |  | 244h |
| 3 | 2.1 | 建立项目团队 |  | 1d | 2011-05-16 | 2011-05-16 | 1 | 3d | 0d |  | PM | 8h |
| 4 | 2.2 | 制定项目实施主计划 |  | 3d | 2011-05-17 | 2011-05-19 | 3 | 3d | 0d | start no earlier than 2011-05-17 | PM; TM [50%] | 28h |
| 5 | 2.3 | 制定项目章程 |  | 2d | 2011-05-18 | 2011-05-19 | 4FF | 3d | 0d | start no earlier than 2011-05-18 | PM [50%]; TM [50%] | 12h |
| 6 | 2.4 | 准备项目文档模板 |  | 3d | 2011-05-20 | 2011-05-24 | 5 | 3d | 0d |  | TM | 24h |
| 7 | 2.5 | **项目启动会** |  | 7d | 2011-05-20 | 2011-05-30 | 5 | 0d |  |  |  | 52h |
| 8 | 2.5.1 | 准备项目启动会议材料 |  | 3d | 2011-05-20 | 2011-05-24 | 6FF | 3d |  | start no earlier than 2011-05-20 | PM | 24h |
| 9 | 2.5.2 | 召开项目启动大会 |  | 0.5d | 2011-05-30 | 2011-05-30 | 8 | 0d |  | start no earlier than 2011-05-30 | PM; TM; TL | 12h |
| 10 | 2.5.3 | 双方项目组集体学习来伊份项目章程 |  | 0.5d | 2011-05-30 | 2011-05-30 | 9 | 0d |  |  | PM; TM; TL; SE-C01 | 16h |
| 11 | 2.6 | 开发环境产品安装 |  | 2d | 2011-05-31 | 2011-06-01 | 7 | 0d |  | start no earlier than 2011-05-26 | TM | 16h |
| 12 | 2.7 | 开发环境初始化与配置管理环境搭建 |  | 1d | 2011-06-02 | 2011-06-02 | 11 | 0d |  |  | TM | 8h |
| 13 | 2.8 | 产品基础培训 |  | 4d | 2011-06-07 | 2011-06-10 | 11FF+5d | 237d |  | start no earlier than 2011-06-07 | TN; SE-L01; SE-L02 | 96h |
| 14 | 3 | **需求调研与分析** |  | 32d | 2011-06-03 | 2011-07-19 | 1 | 0d |  |  |  | 1264h |
| 15 | 3.1 | **用户需求调研** |  | 16d | 2011-06-03 | 2011-06-27 | 12 | 0d |  |  |  | 640h |
| 16 | 3.1.1 | 调研提纲准备 |  | 2d | 2011-06-03 | 2011-06-07 | 12 | 0d |  |  | PM; TM; TL; BA; SE-C01 | 80h |
| 17 | 3.1.2 | 新开店流程业务需求调研 |  | 6d | 2011-06-08 | 2011-06-15 | 16 | 0d |  |  | PM; TM; TL; BA; SE-C01 | 240h |
| 18 | 3.1.3 | 商品促销流程业务需求调研 |  | 6d | 2011-06-16 | 2011-06-23 | 17 | 0d |  | start no earlier than 2011-06-16 | PM; TM; TL; BA; SE-C01 | 240h |
| 19 | 3.1.4 | 系统整合需求 |  | 1d | 2011-06-24 | 2011-06-24 | 18 | 0d |  |  | PM; TM; TL; BA; SE-C01 | 40h |
| 20 | 3.1.5 | 界面定制要求 |  | 1d | 2011-06-27 | 2011-06-27 | 19 | 0d |  |  | PM; TM; TL; BA; SE-C01 | 40h |
| 21 | 3.2 | **用户需求分析** |  | 14d | 2011-06-28 | 2011-07-15 | 15 | 0d |  |  |  | 544h |
| 22 | 3.2.1 | 总体需求 |  | 2d | 2011-06-28 | 2011-06-29 | 20 | 0d |  |  | PM; TM; TL; SE-C01 | 64h |
| 23 | 3.2.2 | 新开店流程业务需求分析与蓝图设计 |  | 10d | 2011-06-30 | 2011-07-13 | 22 | 0d |  |  | PM; TM; TL; BA; SE-C01 | 400h |
| 24 | 3.2.3 | 商品促销流程业务需求分析 |  | 2d | 2011-07-14 | 2011-07-15 | 23 | 0d |  |  | PM; TM; TL; BA; SE-C01 | 80h |
| 25 | 3.3 | 用户需求说明书确认-新开店 |  | 2d | 2011-07-18 | 2011-07-19 | 21 | 0d |  |  | PM; TM; TL; BA; SE-C01 | 80h |
| 26 | 4 | 功能设计(蓝图设计-新开店)完毕 | milestone | 0d | 2011-07-19 | 2011-07-19 | 14 | 0d |  |  |  |  |
| 27 | 5 | 项目计划修正 |  | 1d | 2011-07-20 | 2011-07-20 | 26 | 0d |  |  | PM [50%]; TM | 12h |
| 28 | 6 | 项目计划确认 |  | 1d | 2011-07-21 | 2011-07-21 | 27 | 0d |  |  | PM; TM | 16h |

Notes:
- 17: 每0.5天完成一个流程需求调研，含2天流程分析统计调研 / 业务分析人员全程参与并对相关流程熟悉所有细节，调研开始前1周提供所有相关文档，包括界面全部布局说明和功能逻辑说明，没有提供的认为在项目范围外 / 分为两个调研组
- 18: 每0.5天完成一个流程需求调研，含2天流程分析统计调研 / 业务分析人员全程参与并对相关流程熟悉所有细节 / 分为两个调研组 / -- / 增加5天需求调研，对13个流程
- 19: 需求讲解/网络拓扑/待集成系统
- 20: 需求讲解/网络拓扑/待集成系统
- 22: 建模与文档
- 23: 建模与文档 / 业务分析人员全程参与并对相关流程熟悉所有细节，可及时解答所有问题
- 24: 建模与文档 / 业务分析人员全程参与并对相关流程熟悉所有细节，可及时解答所有问题 / -- / 增加5天需求分析，对13个流程
- 25: 来伊份BA参与需求说明书的编写工作，确认工作可简化

| ID | WBS | Task | Type | Duration | Start | Finish | Predecessors | Total slack | Free slack | Resources | Work |
| --- | --- | --- | --- | --- | --- | --- | --- | --- | --- | --- | --- |
| 29 | 7 | **系统设计** |  | 19d | 2011-07-22 | 2011-08-17 | 14 | 0d |  |  | 424h |
| 30 | 7.1 | **系统架构设计** |  | 6d | 2011-07-22 | 2011-07-29 | 28 | 0d |  |  | 120h |
| 31 | 7.1.1 | 总体架构 |  | 3d | 2011-07-22 | 2011-07-26 | 28 | 0d |  | TM | 24h |
| 32 | 7.1.2 | 用户管理 |  | 3d | 2011-07-22 | 2011-07-26 | 28 | 0d |  | TL | 24h |
| 33 | 7.1.3 | TIM用户统一管理(AD/LDAP) |  | 3d | 2011-07-22 | 2011-07-26 | 28 | 3d |  | SE-C01 | 24h |
| 34 | 7.1.4 | SAP集成 |  | 3d | 2011-07-27 | 2011-07-29 | 31 | 0d |  | TM | 24h |
| 35 | 7.1.5 | IBM Websphere Portal集成 |  | 3d | 2011-07-27 | 2011-07-29 | 32 | 0d |  | TL | 24h |
| 36 | 7.2 | 系统架构设计评审 |  | 1d | 2011-08-01 | 2011-08-01 | 30 | 0d |  | TM; TL; SE-C01 | 24h |
| 37 | 7.3 | 系统架构设计修正 |  | 1d | 2011-08-02 | 2011-08-02 | 36 | 0d |  | TM; TL; SE-C01 | 24h |
| 38 | 7.4 | 系统架构设计最终评审与确认 |  | 1d | 2011-08-03 | 2011-08-03 | 37 | 0d |  | TM; TL; SE-C01 | 24h |
| 39 | 7.5 | **系统详细设计(含原型)** |  | 7d | 2011-08-04 | 2011-08-12 | 38 | 0d |  |  | 160h |
| 40 | 7.5.1 | 数据库设计 |  | 4d | 2011-08-04 | 2011-08-09 | 38 | 0d |  | TM; TL | 64h |
| 41 | 7.5.2 | 表单 |  | 3d | 2011-08-10 | 2011-08-12 | 40 | 0d |  | TL | 24h |
| 42 | 7.5.3 | 业务流程 |  | 3d | 2011-08-10 | 2011-08-12 | 40 | 0d |  | TM | 24h |
| 43 | 7.5.4 | 系统整合 |  | 3d | 2011-08-04 | 2011-08-08 | 38 | 4d |  | SE-C01 | 24h |
| 44 | 7.5.5 | 页面定制 |  | 3d | 2011-08-04 | 2011-08-08 | 38 | 4d |  | SE-L01 | 24h |
| 45 | 7.6 | 系统详细设计评审 |  | 1d | 2011-08-15 | 2011-08-15 | 39 | 0d |  | TM; TL; SE-C01 | 24h |
| 46 | 7.7 | 系统详细些设计修正 |  | 1d | 2011-08-16 | 2011-08-16 | 45 | 0d |  | TM; TL; SE-C01 | 24h |
| 47 | 7.8 | 系统详细设计最终评审与确认 |  | 1d | 2011-08-17 | 2011-08-17 | 46 | 0d |  | TM; TL; SE-C01 | 24h |
| 48 | 8 | 系统设计完毕 | milestone | 0d | 2011-08-17 | 2011-08-17 | 29 | 0d |  |  |  |
| 49 | 9 | **系统开发-新开店相关流程** |  | 23d | 2011-08-18 | 2011-09-20 | 29 | 0d |  |  | 864h |
| 50 | 9.1 | 系统框架 |  | 2d | 2011-08-18 | 2011-08-19 | 48 | 4d | 0d | TL | 16h |
| 51 | 9.2 | **系统管理** |  | 5d | 2011-08-22 | 2011-08-26 | 50 | 4d | 0d |  | 40h |
| 52 | 9.2.1 | 权限管理 |  | 1d | 2011-08-22 | 2011-08-22 | 50 | 4d | 0d | TL | 8h |
| 53 | 9.2.2 | 帐号管理 |  | 1d | 2011-08-23 | 2011-08-23 | 52 | 4d | 0d | TL | 8h |
| 54 | 9.2.3 | 群组角色管理 |  | 1d | 2011-08-24 | 2011-08-24 | 53 | 4d | 0d | TL | 8h |
| 55 | 9.2.4 | 导航管理 |  | 1d | 2011-08-25 | 2011-08-25 | 54 | 4d | 0d | TL | 8h |
| 56 | 9.2.5 | 流程管理 |  | 1d | 2011-08-26 | 2011-08-26 | 55 | 4d | 0d | TL | 8h |

Notes:
- 32: 基于CORDYS现有功能，无需二次开发
- 33: 只需从TIM同步用户到CORDYS
- 35: 只需界面整合CORDYS待办
- 40: 新开店相关流程可基本复用现有数据库设计
- 49: 所有开发人员在此时间点前通过Cordys基础认证考试并掌握开发规范
- 51: 基于Cordys产品标准功能，不需要二次开发

| ID | WBS | Task | Type | Duration | Start | Finish | Predecessors | Total slack | Free slack | Resources | Work |
| --- | --- | --- | --- | --- | --- | --- | --- | --- | --- | --- | --- |
| 57 | 9.3 | **数据交互** |  | 12d | 2011-08-29 | 2011-09-14 | 51 | 4d |  |  | 96h |
| 58 | 9.3.1 | TIM用户统一管理(AD/LDAP) |  | 3d | 2011-08-29 | 2011-08-31 | 56 | 4d | 0d | TL | 24h |
| 59 | 9.3.2 | SAP集成 |  | 3d | 2011-09-01 | 2011-09-05 | 58 | 4d | 0d | TL | 24h |
| 60 | 9.3.3 | IBM Websphere Portal集成 |  | 3d | 2011-09-06 | 2011-09-08 | 59 | 4d | 0d | TL | 24h |
| 61 | 9.3.4 | 日志及监控 |  | 3d | 2011-09-09 | 2011-09-14 | 60 | 4d |  | TL | 24h |
| 62 | 9.4 | **新开店相关流程** |  | 21d | 2011-08-18 | 2011-09-16 | 48 | 0d |  |  | 648h |
| 63 | 9.4.1 | **标准新开店流程** |  | 21d | 2011-08-18 | 2011-09-16 | 48 | 0d |  |  | 648h |
| 64 | 9.4.1.1 | 网点年度规划(6步骤) |  | 8d | 2011-08-18 | 2011-08-29 | 48 | 1d | 0d | SE-L01 | 64h |
| 65 | 9.4.1.2 | 标准新店选址与发布(6步骤) |  | 8d | 2011-08-18 | 2011-08-29 | 48 | 0d |  | SE-L02 | 64h |
| 66 | 9.4.1.3 | 标准新开店(11步骤) |  | 9d | 2011-08-18 | 2011-08-30 | 48 | 0d |  | SE-C01 | 72h |
| 67 | 9.4.1.4 | 非集成发票校验(5步骤) |  | 7d | 2011-08-18 | 2011-08-26 | 48 | 2d | 0d | SE-C02 | 56h |
| 68 | 9.4.1.5 | 商品预置键主数据新增 变更(7步骤) |  | 8d | 2011-08-30 | 2011-09-08 | 64 | 1d |  | SE-L01 | 64h |
| 69 | 9.4.1.6 | 新开门店导入管理(14步骤) |  | 9d | 2011-08-30 | 2011-09-09 | 65 | 0d |  | SE-L02 | 72h |
| 70 | 9.4.1.7 | 供应商主数据新增 变更(8步骤) |  | 8d | 2011-08-31 | 2011-09-09 | 66 | 0d |  | SE-C01 | 64h |
| 71 | 9.4.1.8 | **主数据相关流程** |  | 12d | 2011-08-29 | 2011-09-14 | 67 | 2d |  |  | 96h |
| 72 | 9.4.1.8.1 | 门店主数据新增(12步骤)(复杂表单) |  | 12d | 2011-08-29 | 2011-09-14 | 67 | 2d |  | SE-C02 | 96h |
| 73 | 9.4.1.9 | 新开店打印(8打印) |  | 4d | 2011-09-13 | 2011-09-16 | 68, 69, 70 | 0d |  | SE-L01; SE-L02; SE-C01 | 96h |
| 74 | 9.5 | 新开店阶段设计文档更新及代码评审 |  | 2d | 2011-09-19 | 2011-09-20 | 62 | 0d |  | SE-C01; SE-L01; SE-L02; SE-C02 | 64h |
| 75 | 10 | 系统开发完毕-新开店流程业务 | milestone | 0d | 2011-09-20 | 2011-09-20 | 49 | 0d |  |  |  |
| 76 | 11 | **系统测试-新开店** |  | 63d | 2011-07-20 | 2011-10-20 | 26 | 0d |  |  | 1068h |
| 77 | 11.1 | **系统测试计划与准备-新开店** |  | 23d | 2011-07-20 | 2011-08-19 | 26 | 19d | 0d |  | 388h |
| 78 | 11.1.1 | 测试需求理解 |  | 1d | 2011-07-20 | 2011-07-20 | 26 | 19d | 0d | TE1; TE2; PM [50%] | 20h |
| 79 | 11.1.2 | 测试计划编写 |  | 2d | 2011-07-21 | 2011-07-22 | 78 | 19d | 0d | TE1; TE2 | 32h |
| 80 | 11.1.3 | 测试计划评审与修改 |  | 2d | 2011-07-25 | 2011-07-26 | 79 | 19d | 0d | TE1; TE2; PM | 48h |
| 81 | 11.1.4 | 测试用例编写-新开店流程业务 |  | 16d | 2011-07-27 | 2011-08-17 | 80 | 19d | 0d | TE1; TE2 | 256h |
| 82 | 11.1.5 | 测试用例评审及修改-新开店流程业务 |  | 2d | 2011-08-18 | 2011-08-19 | 81 | 19d | 23d | TE1; TE2 | 32h |
| 83 | 11.2 | 测试环境产品安装 |  | 2d | 2011-08-22 | 2011-08-23 | 77 | 19d |  | TM | 16h |

Notes:
- 58: 用户从TIM同步至CORDYS
- 59: 不需要二次开发BAPI等SAP端接口 / 现有接口提供详细说明文档
- 61: 基于Cordys产品标准功能
- 62: �75%为普通表单(20字段以内，单表信息)，也即16*0.75=12个流程 / �25%为复杂表单，也即4个流程/ �各流程1个打印/ �各步骤操作类似，可由一种业务单据也即一个表单贯穿 / �内控指标超时处理可统一按照每流程超时监控点小于等于2个，超时后通过发送通知escalate给某一具体负责人 / �会签可不考虑部分人审批完成即退回或继续执行的情况，也即必须所有人完成审批(无论审批通过或拒绝)，才进行进一步判断 / �无需整合OA系统 / �不需要在线编辑OFFICE/ �各流程需要2个SAP接口调用，接口在20属性以内，单一调用 / �促销主数据管理及系统主配管理移到促销模块
- 73: 16打印，4复杂

| ID | WBS | Task | Type | Duration | Start | Finish | Predecessors | Total slack | Free slack | Resources | Work |
| --- | --- | --- | --- | --- | --- | --- | --- | --- | --- | --- | --- |
| 84 | 11.3 | **系统测试执行-新开店** |  | 19d | 2011-09-21 | 2011-10-20 | 77 | 0d |  |  | 664h |
| 85 | 11.3.1 | 测试系统部署-新开店流程业务 |  | 1d | 2011-09-21 | 2011-09-21 | 75, 83 | 0d |  | TL | 8h |
| 86 | 11.3.2 | 测试系统初始化-新开店流程业务 |  | 1d | 2011-09-22 | 2011-09-22 | 85 | 0d |  | TL | 8h |
| 87 | 11.3.3 | 新开店流程业务功能测试与修改 |  | 6d | 2011-09-23 | 2011-09-30 | 82, 86 | 0d |  | TL [50%]; SE-C01; SE-L01; SE-L02; TE1; TE2; PM [50%]; TM [50%]; SE-C02 | 360h |
| 88 | 11.3.4 | 生产环境准备-新开店流程业务 |  | 2d | 2011-10-08 | 2011-10-09 | 87 | 0d |  | TL | 16h |
| 89 | 11.3.5 | 系统压力测试及调优-新开店流程业务 |  | 8d | 2011-10-10 | 2011-10-19 | 88 | 0d |  | PM [50%]; TM [50%]; TL; SE-C01; SE-L01 | 256h |
| 90 | 11.3.6 | 提交系统测试报告-新开店流程业务 |  | 1d | 2011-10-20 | 2011-10-20 | 89 | 0d |  | TE1; TE2 | 16h |
| 91 | 11.3.7 | 确认系统测试报告-新开店流程业务 | milestone | 0d | 2011-10-20 | 2011-10-20 | 90 | 0d |  |  |  |
| 92 | 12 | 系统测试完毕-新开店流程业务 | milestone | 0d | 2011-10-20 | 2011-10-20 | 76 | 147d |  |  |  |
| 93 | 13 | **系统部署-新开店** |  | 9d | 2011-10-21 | 2011-11-02 | 76 | 0d |  |  | 332h |
| 94 | 13.1 | 生产环境系统部署、配置与初始化-新开店 |  | 2d | 2011-10-21 | 2011-10-24 | 76 | 0d |  | PM [50%]; TM [50%]; TL [50%]; SE-C01; SE-L01 | 56h |
| 95 | 13.2 | 部署验证测试-新开店 |  | 2d | 2011-10-25 | 2011-10-26 | 94 | 0d |  | TL [50%]; TE1; TE2; SE-C01 | 56h |
| 96 | 13.3 | 用户验收测试支持与问题修正-新开店 |  | 5d | 2011-10-27 | 2011-11-02 | 95 | 0d |  | PM [50%]; TM [50%]; TL [50%]; SE-C01; SE-L01; SE-L02; SE-C02 | 220h |
| 97 | 13.4 | 系统验收报告签字确认-新开店 | milestone | 0d | 2011-11-02 | 2011-11-02 | 96 | 5d | 4d |  |  |
| 98 | 14 | 系统部署完毕-新开店流程业务 | milestone | 0d | 2011-11-02 | 2011-11-02 | 93 | 138d |  |  |  |
| 99 | 15 | **收尾阶段-新开店** |  | 14d | 2011-10-21 | 2011-11-09 | 84 | 0d |  |  | 568h |
| 100 | 15.1 | 培训材料与用户手册准备-新开店 |  | 12d | 2011-10-21 | 2011-11-07 | 77 | 1d | 0d | TE1; TE2; BA | 288h |
| 101 | 15.2 | 流程业务培训-新开店 |  | 2d | 2011-10-27 | 2011-10-28 | 95 | 8d |  | PM [50%]; TM [50%]; TL [50%] | 24h |
| 102 | 15.3 | 培训材料修正 |  | 1d | 2011-11-08 | 2011-11-08 | 100, 97FF | 1d | 0d | TE1; TE2 | 16h |
| 103 | 15.4 | **系统试运行-新开店流程业务** |  | 5d | 2011-11-03 | 2011-11-09 | 96 | 0d |  |  | 240h |
| 104 | 15.4.1 | 新开店流程业务试运行 |  | 5d | 2011-11-03 | 2011-11-09 | 96 | 0d |  | TM; TL; SE-C01; SE-L01; SE-L02; SE-C02 | 240h |
| 105 | 16 | **需求调研与分析二次确认** |  | 12d | 2011-11-10 | 2011-11-25 | 99 | 0d |  |  | 480h |
| 106 | 16.1 | 商品促销流程业务需求分析与蓝图设计 |  | 10d | 2011-11-10 | 2011-11-23 | 99 | 0d |  | PM; TM; TL; BA; SE-C01 | 400h |
| 107 | 16.2 | 用户需求说明书确认-促销 |  | 2d | 2011-11-24 | 2011-11-25 | 106 | 0d |  | PM; TM; TL; BA; SE-C01 | 80h |
| 108 | 16.3 | 功能设计(蓝图设计-促销)完毕 | milestone | 0d | 2011-11-25 | 2011-11-25 | 107 | 0d |  |  |  |

Notes:
- 89: 需在生产环境中进行压力测试
- 96: 验收测试严格执行经双方确认的测试用例，2天测试，3天修改
- 107: 来伊份BA参与需求说明书的编写工作，确认工作可简化

| ID | WBS | Task | Type | Duration | Start | Finish | Predecessors | Total slack | Free slack | Resources | Work |
| --- | --- | --- | --- | --- | --- | --- | --- | --- | --- | --- | --- |
| 109 | 17 | **系统开发-促销管理相关流程** |  | 43d | 2011-11-28 | 2012-02-02 | 105 | 0d |  |  | 1696h |
| 110 | 17.1 | **促销管理相关流程** |  | 41d | 2011-11-28 | 2012-01-31 | 105 | 0d |  |  | 1584h |
| 111 | 17.1.1 | **全年促销计划** |  | 8d | 2011-11-28 | 2011-12-07 | 105 | 0d |  |  | 256h |
| 112 | 17.1.1.1 | 全年促销计划(7步骤) |  | 8d | 2011-11-28 | 2011-12-07 | 105 | 0d |  | SE-L01 | 64h |
| 113 | 17.1.1.2 | 新品推广活动规划(6步骤) |  | 8d | 2011-11-28 | 2011-12-07 | 105 | 1d | 0d | SE-L02 | 64h |
| 114 | 17.1.1.3 | 库存及竞品促销活动规划(6步骤) |  | 8d | 2011-11-28 | 2011-12-07 | 105 | 6d | 0d | SE-C01 | 64h |
| 115 | 17.1.1.4 | 商品或主题或热点或异业促销活动规划(7步骤) |  | 8d | 2011-11-28 | 2011-12-07 | 105 | 0d |  | SE-C02 | 64h |
| 116 | 17.1.2 | **促销活动执行** |  | 32d | 2011-11-28 | 2012-01-11 | 105 | 0d |  |  | 880h |
| 117 | 17.1.2.1 | 促销活动商品制定(9步骤) |  | 9d | 2011-12-08 | 2011-12-20 | 112 | 0d |  | SE-L01 | 72h |
| 118 | 17.1.2.2 | 促销商品信息发布(6步骤) |  | 8d | 2011-12-08 | 2011-12-19 | 113 | 1d | 0d | SE-L02 | 64h |
| 119 | 17.1.2.3 | 促销活动培训课件制作(13步骤) |  | 9d | 2011-12-08 | 2011-12-20 | 114 | 6d | 0d | SE-C01 | 72h |
| 120 | 17.1.2.4 | 物资需求配置表的制作(19步骤) |  | 13d | 2011-12-08 | 2011-12-26 | 115 | 0d |  | SE-C02 | 104h |
| 121 | 17.1.2.5 | 活动赠品立项及策划(11步骤) |  | 11d | 2011-11-28 | 2011-12-12 | 105 | 0d |  | TL | 88h |
| 122 | 17.1.2.6 | 活动赠品申购(7步骤) |  | 8d | 2011-12-13 | 2011-12-22 | 121 | 0d |  | TL | 64h |
| 123 | 17.1.2.7 | 活动赠品设计及打样封样(14步骤) |  | 10d | 2011-12-21 | 2012-01-04 | 117 | 0d |  | SE-L01 | 80h |
| 124 | 17.1.2.8 | 活动赠品订购入库及配送(16步骤) |  | 10d | 2011-12-20 | 2012-01-03 | 118 | 1d |  | SE-L02 | 80h |
| 125 | 17.1.2.9 | 物料状态修改数据新增 变更(15步骤) |  | 9d | 2011-12-21 | 2012-01-03 | 119 | 6d |  | SE-C01 | 72h |
| 126 | 17.1.2.10 | 促销主数据新增 变更(19步骤)(复杂表单) |  | 13d | 2011-12-23 | 2012-01-11 | 122 | 0d |  | TL | 104h |
| 127 | 17.1.2.11 | 促销活动执行(6步骤) |  | 5d | 2012-01-05 | 2012-01-11 | 123, 124 | 0d |  | SE-L01; SE-L02 | 80h |
| 128 | 17.1.3 | **标准促销收尾** |  | 11d | 2011-12-27 | 2012-01-11 |  | 0d |  |  | 88h |
| 129 | 17.1.3.1 | 标准促销收尾(11步骤) |  | 11d | 2011-12-27 | 2012-01-11 | 120 | 0d |  | SE-C02 | 88h |
| 130 | 17.1.4 | 促销打印 |  | 9d | 2012-01-12 | 2012-01-31 | 111, 116, 128 | 0d |  | SE-C01; SE-C02; SE-L01; SE-L02; TL | 360h |
| 131 | 17.2 | 促销阶段设计文档更新及代码评审 |  | 2d | 2012-02-01 | 2012-02-02 | 110 | 0d |  | PM; TL; TM; SE-C01; SE-C02; SE-L01; SE-L02 | 112h |
| 132 | 18 | 系统开发完毕-商品促销管理主体流程业务 | milestone | 0d | 2012-02-02 | 2012-02-02 | 109 | 0d |  |  |  |

Notes:
- 109: 所有开发人员在此时间点前通过Cordys基础认证考试
- 110: �75%为普通表单(20字段以内，单表信息)，也即16*0.75=12个流程 / �25%为复杂表单，也即4个流程 / �各流程2个打印 / �各步骤操作类似，可由一种业务单据也即一个表单贯穿 / �内控指标超时处理可统一按照每流程超时监控点小于等于2个，超时后通过发送通知escalate给某一具体负责人 / �会签可不考虑部分人审批完成即退回或继续执行的情况，也即必须所有人完成审批(无论审批通过或拒绝)，才进行进一步判断 / �无需整合OA系统 / �不需要在线编辑OFFICE/ �各流程需要2个SAP接口调用，接口在20属性以内，单一调用
- 130: 30打印，8复杂

| ID | WBS | Task | Type | Duration | Start | Finish | Predecessors | Total slack | Free slack | Resources | Work |
| --- | --- | --- | --- | --- | --- | --- | --- | --- | --- | --- | --- |
| 133 | 19 | **系统测试-促销** |  | 71d | 2011-11-09 | 2012-02-23 | 102, 14 | 0d |  |  | 940h |
| 134 | 19.1 | **系统测试计划与准备-促销** |  | 21d | 2011-11-09 | 2011-12-07 | 102, 14 | 35d |  |  | 344h |
| 135 | 19.1.1 | 测试需求理解 |  | 1d | 2011-11-09 | 2011-11-09 | 102, 14 | 35d | 0d | TE1; TE2; PM [50%] | 20h |
| 136 | 19.1.2 | 测试计划编写 |  | 1d | 2011-11-10 | 2011-11-10 | 135 | 35d | 0d | TE1; TE2 | 16h |
| 137 | 19.1.3 | 测试计划评审与修改 |  | 1d | 2011-11-11 | 2011-11-11 | 136 | 35d | 0d | TE1; TE2; PM [50%] | 20h |
| 138 | 19.1.4 | 业务测试用例编写-商品促销流程 |  | 16d | 2011-11-14 | 2011-12-05 | 137 | 35d | 0d | TE1; TE2 | 256h |
| 139 | 19.1.5 | 测试用例评审及修改-商品促销流程业务 |  | 2d | 2011-12-06 | 2011-12-07 | 138 | 35d |  | TE1; TE2 | 32h |
| 140 | 19.2 | **系统测试执行-促销** |  | 15d | 2012-02-03 | 2012-02-23 | 139, 132 | 0d |  |  | 596h |
| 141 | 19.2.1 | 测试系统部署-商品促销流程业务 |  | 1d | 2012-02-03 | 2012-02-03 | 139, 132 | 0d |  | TL | 8h |
| 142 | 19.2.2 | 测试系统初始化-商品促销流程业务 |  | 1d | 2012-02-06 | 2012-02-06 | 141 | 0d |  | TL | 8h |
| 143 | 19.2.3 | 商品促销流程业务功能测试与修改 |  | 9d | 2012-02-07 | 2012-02-17 | 142 | 0d |  | TL; SE-C01; SE-L01; SE-L02; PM; TM; SE-C02 | 480h |
| 144 | 19.2.4 | 系统压力测试及调优-商品促销流程业务 |  | 3d | 2012-02-20 | 2012-02-22 | 143 | 0d |  | PM [50%]; TM [50%]; TL [50%]; SE-C01; SE-L01 | 84h |
| 145 | 19.2.5 | 提交系统测试报告-商品促销流程业务 |  | 1d | 2012-02-23 | 2012-02-23 | 144 | 0d |  | TE1; TE2 | 16h |
| 146 | 19.2.6 | 确认系统测试报告-商品促销流程业务 | milestone | 0d | 2012-02-23 | 2012-02-23 | 145 | 0d |  |  |  |
| 147 | 20 | 系统测试完毕-商品促销管理主体流程业务 | milestone | 0d | 2012-02-23 | 2012-02-23 | 133 | 0d |  |  |  |
| 148 | 21 | **系统部署-促销** |  | 9d | 2012-02-24 | 2012-03-07 | 147 | 0d |  |  | 332h |
| 149 | 21.1 | 生产环境系统部署、配置与初始化 |  | 2d | 2012-02-24 | 2012-02-27 | 147 | 0d |  | PM [50%]; TM [50%]; TL [50%]; SE-C01; SE-L01 | 56h |
| 150 | 21.2 | 部署验证测试 |  | 2d | 2012-02-28 | 2012-02-29 | 149 | 0d |  | TL [50%]; TE1; TE2; SE-C01 | 56h |
| 151 | 21.3 | 用户验收测试支持与问题修正 |  | 5d | 2012-03-01 | 2012-03-07 | 150 | 0d |  | PM [50%]; TM [50%]; TL [50%]; SE-C01; SE-L01; SE-L02; SE-C02 | 220h |
| 152 | 21.4 | 系统验收报告签字确认 | milestone | 0d | 2012-03-07 | 2012-03-07 | 151 | 0d |  |  |  |
| 153 | 22 | 系统部署完毕-商品促销管理主体流程业务 | milestone | 0d | 2012-03-07 | 2012-03-07 | 148 | 0d |  |  |  |
| 154 | 23 | **收尾阶段-促销** |  | 62d | 2011-12-12 | 2012-03-14 | 109SS+10d | 0d |  |  | 536h |
| 155 | 23.1 | 培训材料与用户手册准备-促销 |  | 36d | 2011-12-12 | 2012-02-07 | 109SS+10d | 26d |  | BA | 288h |
| 156 | 23.2 | 流程业务培训-商品促销 |  | 4d | 2012-03-01 | 2012-03-06 | 150 | 1d |  | PM [50%]; TM [50%]; TL [50%] | 48h |

Notes:
- 144: 需在生产环境中进行压力测试
- 151: 验收测试严格执行经双方确认的测试用例，2天测试，3天修改
- 156: 由客户方PM对内部人员在测试环境进行培训，CORDYS提供支持

| ID | WBS | Task | Type | Duration | Start | Finish | Predecessors | Total slack | Free slack | Constraint | Resources | Work |
| --- | --- | --- | --- | --- | --- | --- | --- | --- | --- | --- | --- | --- |
| 157 | 23.3 | **系统试运行-商品促销管理主体流程业务** |  | 5d | 2012-03-08 | 2012-03-14 | 156, 153 | 0d |  |  |  | 200h |
| 158 | 23.3.1 | 商品促销管理主体流程业务试运行 |  | 5d | 2012-03-08 | 2012-03-14 | 156, 153 | 0d |  |  | TM; TL; SE-C01; SE-L01; SE-L02 | 200h |
| 159 | 24 | **系统开发-其余流程** |  | 23d | 2012-03-15 | 2012-04-16 | 154 | 0d |  |  |  | 800h |
| 160 | 24.1 | **门店翻新及续约相关流程** |  | 21d | 2012-03-15 | 2012-04-12 | 157 | 0d |  |  |  | 720h |
| 161 | 24.1.1 | 标准暂闭店(19步骤)(复杂表单) |  | 14d | 2012-03-15 | 2012-04-03 | 158 | 7d |  |  | SE-C01 | 112h |
| 162 | 24.1.2 | 门店整体翻新(11步骤) |  | 9d | 2012-03-15 | 2012-03-27 | 158 | 0d |  |  | SE-L02 | 72h |
| 163 | 24.1.3 | 加盟商新开店及老翻新(7步骤) |  | 8d | 2012-03-15 | 2012-03-26 | 158 | 1d |  |  | SE-C02 | 64h |
| 164 | 24.1.4 | 门店续租(9步骤) |  | 8d | 2012-03-15 | 2012-03-26 | 158 | 1d |  |  | TL | 64h |
| 165 | 24.1.5 | 标准门店拆店(42步骤)(复杂表单) |  | 15d | 2012-03-15 | 2012-04-04 | 158 | 6d |  | start no earlier than 2011-08-31 | SE-L01 | 120h |
| 166 | 24.1.6 | 其余流程打印(5) |  | 12d | 2012-03-28 | 2012-04-12 | 162, 163, 164 | 0d |  |  | TL; SE-L02; SE-C02 | 288h |
| 167 | 24.2 | 促销阶段设计文档更新及代码评审 |  | 2d | 2012-04-13 | 2012-04-16 | 160 | 0d |  |  | TL; SE-C01; SE-L01; SE-L02; SE-C02 | 80h |
| 168 | 25 | 系统开发完毕-新开店其余流程业务 | milestone | 0d | 2012-04-16 | 2012-04-16 | 159 | 0d |  |  |  |  |
| 169 | 26 | **系统测试-其余流程** |  | 33d | 2012-03-15 | 2012-04-30 | 154 | 0d |  |  |  | 524h |
| 170 | 26.1 | **系统测试计划与准备-其余流程** |  | 8d | 2012-03-15 | 2012-03-26 | 157 | 15d |  |  |  | 136h |
| 171 | 26.1.1 | 测试需求理解及计划编写 |  | 1d | 2012-03-15 | 2012-03-15 | 158 | 15d | 0d |  | TE1; TE2; PM [50%] | 20h |
| 172 | 26.1.2 | 测试计划评审与修改 |  | 1d | 2012-03-16 | 2012-03-16 | 171 | 15d | 0d |  | TE1; TE2; PM [50%] | 20h |
| 173 | 26.1.3 | 业务测试用例编写-其余流程 |  | 4d | 2012-03-19 | 2012-03-22 | 172 | 15d | 0d |  | TE1; TE2 | 64h |
| 174 | 26.1.4 | 测试用例评审及修改-其余流程业务 |  | 2d | 2012-03-23 | 2012-03-26 | 173 | 15d |  |  | TE1; TE2 | 32h |
| 175 | 26.2 | **系统测试执行-促销** |  | 10d | 2012-04-17 | 2012-04-30 | 168, 174 | 0d |  |  |  | 388h |
| 176 | 26.2.1 | 测试系统部署-其余流程业务 |  | 1d | 2012-04-17 | 2012-04-17 | 168, 174 | 0d |  |  | TL | 8h |
| 177 | 26.2.2 | 测试系统初始化-其余流程业务 |  | 1d | 2012-04-18 | 2012-04-18 | 176 | 0d |  |  | TL | 8h |
| 178 | 26.2.3 | 其余流程业务功能测试与修改 |  | 5d | 2012-04-19 | 2012-04-25 | 177 | 0d |  |  | TL [50%]; SE-C01; SE-L01; SE-L02; TE1; TE2; PM [50%]; TM [50%]; SE-C02 | 300h |
| 179 | 26.2.4 | 系统压力测试及调优-其余流程业务 |  | 2d | 2012-04-26 | 2012-04-27 | 178 | 0d |  |  | PM [50%]; TM [50%]; TL [50%]; SE-C01; SE-L01 | 56h |
| 180 | 26.2.5 | 提交系统测试报告-其余流程业务 |  | 1d | 2012-04-30 | 2012-04-30 | 179 | 0d |  |  | TE1; TE2 | 16h |
| 181 | 26.2.6 | 确认系统测试报告-其余流程业务 | milestone | 0d | 2012-04-30 | 2012-04-30 | 180 | 0d |  |  |  |  |
| 182 | 27 | 系统测试完毕-新开店其余流程业务 | milestone | 0d | 2012-04-30 | 2012-04-30 | 169 | 0d |  |  |  |  |

Notes:
- 159: 所有开发人员在此时间点前通过Cordys基础认证考试
- 165: TL对此模块进行2天的支持.从9.15-9.16两天
- 166: 5 个表单,2复杂
- 179: 需在生产环境中进行压力测试

| ID | WBS | Task | Type | Duration | Start | Finish | Predecessors | Total slack | Resources | Work |
| --- | --- | --- | --- | --- | --- | --- | --- | --- | --- | --- |
| 183 | 28 | **系统部署-其余流程** |  | 9d | 2012-05-01 | 2012-05-11 | 182 | 0d |  | 332h |
| 184 | 28.1 | 生产环境系统部署、配置与初始化 |  | 2d | 2012-05-01 | 2012-05-02 | 182 | 0d | PM [50%]; TM [50%]; TL [50%]; SE-C01; SE-L01 | 56h |
| 185 | 28.2 | 部署验证测试 |  | 2d | 2012-05-03 | 2012-05-04 | 184 | 0d | TL [50%]; TE1; TE2; SE-C01 | 56h |
| 186 | 28.3 | 用户验收测试支持与问题修正 |  | 5d | 2012-05-07 | 2012-05-11 | 185 | 0d | PM [50%]; TM [50%]; TL [50%]; SE-C01; SE-L01; SE-L02; SE-C02 | 220h |
| 187 | 28.4 | 系统验收报告签字确认 | milestone | 0d | 2012-05-11 | 2012-05-11 | 186 | 0d |  |  |
| 188 | 29 | 系统部署完毕-新开店其余流程业务 | milestone | 0d | 2012-05-11 | 2012-05-11 | 183 | 0d |  |  |
| 189 | 30 | **收尾阶段-其余流程** |  | 39d | 2012-03-29 | 2012-05-22 | 159SS+10d | 0d |  | 348h |
| 190 | 30.1 | 培训材料与用户手册准备-其余流程业务 |  | 8d | 2012-03-29 | 2012-04-09 | 159SS+10d | 31d | BA | 64h |
| 191 | 30.2 | 流程业务培训-其余流程业务 |  | 1d | 2012-05-07 | 2012-05-07 | 185 | 4d | PM [50%]; TM [50%]; TL [50%] | 12h |
| 192 | 30.3 | **系统试运行-新开店其余流程业务** |  | 5d | 2012-05-14 | 2012-05-18 | 188, 191 | 0d |  | 240h |
| 193 | 30.3.1 | 新开店其余流程业务试运行初期 |  | 5d | 2012-05-14 | 2012-05-18 | 188, 191 | 0d | TM; TL; SE-C01; SE-L01; SE-L02; SE-C02 | 240h |
| 194 | 30.4 | 系统正式运行 | milestone | 0d | 2012-05-18 | 2012-05-18 | 192, 103, 157 | 2d |  |  |
| 195 | 30.5 | 项目移交 |  | 2d | 2012-05-21 | 2012-05-22 | 192 | 0d | PM; TM | 32h |
| 196 | 30.6 | 项目结束 | milestone | 0d | 2012-05-22 | 2012-05-22 | 195 | 0d |  |  |

Notes:
- 186: 验收测试严格执行经双方确认的测试用例，2天测试，3天修改
- 191: 由客户方PM对内部人员在测试环境进行培训，CORDYS提供支持
- 195: 由于项目分阶段允许,在前面的几个阶段中已经包含了试运行.因此,将试运行时间去除
