# sss

Schedule from MS Project, 2011-08-23 to 2011-09-20, A marks actual dates.

## Calendars

- Standard: Mon-Fri 08:00-12:00, 13:00-17:00; Sat-Sun off.

## Resources

| Resource |
| --- |
| 姚秋明 |
| 王志强 |
| 侯钢 |
| 江庆荣 |
| 马波 |
| 牟忠海 |
| 杜兰 |
| 栗成业 |

## Schedule

| ID | WBS | Task | Type | Duration | Start | Finish | Predecessors | Complete | Remaining | Baseline start | Baseline finish | Baseline duration | Total slack | Free slack | Constraint | Resources | Work | Actual work |
| --- | --- | --- | --- | --- | --- | --- | --- | --- | --- | --- | --- | --- | --- | --- | --- | --- | --- | --- |
| 1 | 1 | 开发启动 | milestone | 0h | 2011-08-23 00:00 A | 2011-08-23 00:00 |  |  | 0h | 2011-08-23 08:00 | 2011-08-23 08:00 | 0d? | 0.95d | 0d | start no earlier than 2011-08-23 00:00 |  |  |  |
| 2 | 2 | **T-BPM阶段开发** |  | 21d | 2011-08-23 08:00 A | 2011-09-20 17:00 |  | 11% | 18.72d | 2011-08-23 08:00 | 2011-09-20 17:00 | 0d? | 0d |  |  |  | 1048h | 109.2h |
| 3 | 2.1 | **基础开发** |  | 21d | 2011-08-23 08:00 A | 2011-09-20 17:00 |  | 20% | 16.75d | 2011-08-23 08:00 | 2011-09-20 17:00 | 0d? | 0d |  |  |  | 312h | 61.6h |
| 4 | 2.1.1 | 组织模型 |  | 24h | 2011-08-23 08:00 A | 2011-08-25 17:00 | 1 | 50% | 12h | 2011-08-23 08:00 | 2011-08-25 17:00 | 0d? | 0d |  | start no earlier than 2011-08-22 08:00 | 姚秋明 | 24h | 12h |
| 5 | 2.1.2 | **用户同步** |  | 3d | 2011-08-23 08:00 A | 2011-08-25 17:00 A |  | 100% |  | 2011-08-23 08:00 | 2011-08-25 17:00 | 0d? |  |  |  |  | 24h | 24h |
| 6 | 2.1.2.1 | SSO |  | 8h | 2011-08-23 08:00 A | 2011-08-23 17:00 A | 1 | 100% |  | 2011-08-23 08:00 | 2011-08-23 17:00 | 0d? |  |  | start no earlier than 2011-08-22 08:00 |  | 8h |  |
| 7 | 2.1.2.2 | 职位,TBPM角色匹配关系维护 |  | 8h | 2011-08-23 08:00 A | 2011-08-23 17:00 A | 1 | 100% |  | 2011-08-23 08:00 | 2011-08-23 17:00 | 0d? |  |  | start no earlier than 2011-08-22 08:00 | 侯钢 | 8h | 8h |
| 8 | 2.1.2.3 | 用户同步 |  | 16h | 2011-08-24 08:00 A | 2011-08-25 17:00 A | 7 | 100% |  | 2011-08-24 08:00 | 2011-08-25 17:00 | 0d? |  |  |  | 侯钢 | 16h | 16h |
| 9 | 2.1.3 | **公用组件** |  | 19d | 2011-08-23 08:00 A | 2011-09-16 17:00 |  | 15% | 16.24d | 2011-08-23 08:00 | 2011-09-16 17:00 | 0d? | 2d |  |  |  | 176h | 25.6h |
| 10 | 2.1.3.1 | 取下一环节处理人 |  | 24h | 2011-08-23 08:00 A | 2011-08-25 17:00 A | 1 | 100% |  | 2011-08-23 08:00 | 2011-08-25 17:00 | 0d? |  |  | start no earlier than 2011-08-22 08:00 | 栗成业 | 24h | 24h |
| 11 | 2.1.3.2 | 授权体系 |  | 16h | 2011-08-26 08:00 A | 2011-08-29 17:00 | 10 |  | 16h | 2011-08-26 08:00 | 2011-08-29 17:00 | 0d? | 0d |  | start no earlier than 2011-08-22 08:00 | 栗成业 | 16h |  |
| 12 | 2.1.3.3 | 文件上传下载 |  | 16h | 2011-08-30 08:00 A | 2011-08-31 17:00 | 11 |  | 16h | 2011-08-30 08:00 | 2011-08-31 17:00 | 0d? | 0d |  |  | 栗成业 | 16h |  |
| 13 | 2.1.3.4 | SAP接口封装 |  | 24h | 2011-09-01 08:00 A | 2011-09-05 17:00 | 12 |  | 24h | 2011-09-01 08:00 | 2011-09-05 17:00 | 0d? | 0d |  |  | 栗成业 | 24h |  |
| 14 | 2.1.3.5 | 超时处理 |  | 24h | 2011-09-06 08:00 A | 2011-09-08 17:00 | 13 |  | 24h | 2011-09-06 08:00 | 2011-09-08 17:00 | 0d? | 0d |  |  | 栗成业 | 24h |  |
| 15 | 2.1.3.6 | 菜单管理 | milestone | 0h | 2011-09-09 08:00 A | 2011-09-09 08:00 | 14 |  | 0h | 2011-09-09 08:00 | 2011-09-09 08:00 | 0d? | 0d |  |  | 栗成业 |  |  |
| 16 | 2.1.3.7 | 参数配置管理 |  | 16h | 2011-09-09 08:00 A | 2011-09-12 17:00 | 15 |  | 16h | 2011-09-09 08:00 | 2011-09-12 17:00 | 0d? | 1d | 0.97d | start no earlier than 2011-08-22 08:00 | 栗成业 | 16h |  |
| 17 | 2.1.3.8 | 权限委托 |  | 16h | 2011-09-14 08:00 A | 2011-09-15 17:00 | 16 |  | 16h | 2011-09-14 08:00 | 2011-09-15 17:00 | 0d? | 0d |  | start no earlier than 2011-08-22 08:00 | 栗成业 | 16h |  |
| 18 | 2.1.3.9 | INBOX定制 |  | 24h | 2011-08-24 08:00 A | 2011-08-26 17:00 | 6 |  | 24h | 2011-08-24 08:00 | 2011-08-26 17:00 | 0d? | 17d |  |  | 马波 | 24h |  |
| 19 | 2.1.3.10 | **系统日志管理** |  | 19d | 2011-08-23 08:00 A | 2011-09-16 17:00 |  | 10% | 17.1d | 2011-08-23 08:00 | 2011-09-16 17:00 | 0d? | 0d |  |  |  | 16h | 1.6h |
| 20 | 2.1.3.10.1 | LOG记录 |  | 8h | 2011-08-23 08:00 A | 2011-08-23 17:00 | 1 | 20% | 6.4h | 2011-08-23 08:00 | 2011-08-23 17:00 | 0d? | 1d | 0d | start no earlier than 2011-08-22 08:00 | 江庆荣 | 8h | 1.6h |
| 21 | 2.1.3.10.2 | LOG管理查询界面 |  | 8h | 2011-09-16 08:00 A | 2011-09-16 17:00 | 17 |  | 8h | 2011-09-16 08:00 | 2011-09-16 17:00 | 0d? | 0d |  |  | 栗成业 | 8h |  |
| 22 | 2.1.4 | **SAP基础数据管理** |  | 18d | 2011-08-26 08:00 A | 2011-09-20 17:00 |  |  | 18d | 2011-08-26 08:00 | 2011-09-20 17:00 | 0d? | 0d |  |  |  | 24h |  |
| 23 | 2.1.4.1 | SAP字典管理 |  | 16h | 2011-09-19 08:00 A | 2011-09-20 17:00 | 21 |  | 16h | 2011-09-19 08:00 | 2011-09-20 17:00 | 0d? | 0d |  |  | 栗成业 | 16h |  |
| 24 | 2.1.4.2 | CACHE机制 |  | 8h | 2011-08-26 08:00 A | 2011-08-26 17:00 | 8 |  | 8h | 2011-08-26 08:00 | 2011-08-26 17:00 | 0d? | 0d |  |  | 侯钢 | 8h |  |

Notes:
- 15: 使用CORDYS自带功能

| ID | WBS | Task | Duration | Start | Finish | Predecessors | Complete | Remaining | Baseline start | Baseline finish | Baseline duration | Total slack | Constraint | Resources | Work | Actual work |
| --- | --- | --- | --- | --- | --- | --- | --- | --- | --- | --- | --- | --- | --- | --- | --- | --- |
| 25 | 2.1.5 | **系统参数初始化** | 11d | 2011-08-26 08:00 A | 2011-09-09 17:00 |  |  | 11d | 2011-08-26 08:00 | 2011-09-09 17:00 | 0d? | 7d |  |  | 64h |  |
| 26 | 2.1.5.1 | 业务字典信息初始化 | 24h | 2011-08-26 08:00 A | 2011-08-30 17:00 | 4 |  | 24h | 2011-08-26 08:00 | 2011-08-30 17:00 | 0d? | 0d |  |  | 24h |  |
| 27 | 2.1.5.2 | 来伊份职位,TBPM角色匹配关系初始化 | 40h | 2011-08-31 08:00 A | 2011-09-06 17:00 | 26 |  | 40h | 2011-08-31 08:00 | 2011-09-06 17:00 | 0d? | 0d |  | 姚秋明 | 40h |  |
| 28 | 2.1.5.3 | 功能角色初始化 | 24h | 2011-09-07 08:00 A | 2011-09-09 17:00 | 27 |  | 24h | 2011-09-07 08:00 | 2011-09-09 17:00 | 0d? | 7d |  | 姚秋明 | 24h |  |
| 29 | 2.2 | **开店业务流程开发** | 21d | 2011-08-23 08:00 A | 2011-09-20 17:00 |  | 6% | 19.64d | 2011-08-23 08:00 | 2011-09-20 17:00 | 0d? | 0d |  |  | 736h | 47.6h |
| 30 | 2.2.1 | **网点年度规划** | 4d | 2011-08-23 08:00 A | 2011-08-26 17:00 |  | 85% | 0.6d | 2011-08-23 08:00 | 2011-08-26 17:00 | 0d? | 0d |  |  | 32h | 27.2h |
| 31 | 2.2.1.1 | 网点年度规划管理 | 24h | 2011-08-23 08:00 A | 2011-08-25 17:00 | 1 | 80% | 4.8h | 2011-08-23 08:00 | 2011-08-25 17:00 | 0d? | 1d | start no earlier than 2011-08-22 08:00 | 王志强 | 24h | 19.2h |
| 32 | 2.2.1.2 | 网点年度规划汇总查询 | 8h | 2011-08-26 08:00 A | 2011-08-26 17:00 A | 31 | 100% |  | 2011-08-26 08:00 | 2011-08-26 17:00 | 0d? |  |  | 王志强 | 8h | 8h |
| 33 | 2.2.2 | **网点年度开发计划** | 4d | 2011-08-23 08:00 A | 2011-08-26 17:00 |  | 24% | 3.05d | 2011-08-23 08:00 | 2011-08-26 17:00 | 0d? | 0d |  |  | 32h | 7.6h |
| 34 | 2.2.2.1 | 网点开发计划流程 | 8h | 2011-08-23 08:00 A | 2011-08-23 17:00 | 1 | 95% | 0.4h | 2011-08-23 08:00 | 2011-08-23 17:00 | 0d? | 0d | start no earlier than 2011-08-22 08:00 | 牟忠海 | 8h | 7.6h |
| 35 | 2.2.2.2 | 网点开发计划管理 | 16h | 2011-08-24 08:00 A | 2011-08-25 17:00 | 34 |  | 16h | 2011-08-24 08:00 | 2011-08-25 17:00 | 0d? | 0d | start no earlier than 2011-08-19 08:00 | 牟忠海 | 16h |  |
| 36 | 2.2.2.3 | 网点开发计划查询 | 8h | 2011-08-26 08:00 A | 2011-08-26 17:00 | 35 |  | 8h | 2011-08-26 08:00 | 2011-08-26 17:00 | 0d? | 0d |  | 牟忠海 | 8h |  |
| 37 | 2.2.3 | **标准新店选址与发布** | 14d | 2011-08-24 08:00 A | 2011-09-12 17:00 |  | 6% | 13.23d | 2011-08-24 08:00 | 2011-09-12 17:00 | 0d? | 1d |  |  | 232h | 12.8h |
| 38 | 2.2.3.1 | **商超信息移交单** | 4d | 2011-08-26 08:00 A | 2011-08-31 17:00 |  | 15% | 3.4d | 2011-08-26 08:00 | 2011-08-31 17:00 | 0d? | 0d |  |  | 32h | 4.8h |
| 39 | 2.2.3.1.1 | 商超信息移交单流程 | 8h | 2011-08-26 08:00 A | 2011-08-26 17:00 | 1SS+24h | 60% | 3.2h | 2011-08-26 08:00 | 2011-08-26 17:00 | 0d? | 0d | start no earlier than 2011-08-25 08:00 | 杜兰 | 8h | 4.8h |
| 40 | 2.2.3.1.2 | 商超信息移交单管理 | 16h | 2011-08-29 08:00 A | 2011-08-30 17:00 | 39 |  | 16h | 2011-08-29 08:00 | 2011-08-30 17:00 | 0d? | 0d | start no earlier than 2011-08-19 08:00 | 杜兰 | 16h |  |
| 41 | 2.2.3.1.3 | 商超信息移交单查询 | 8h | 2011-08-31 08:00 A | 2011-08-31 17:00 | 40 |  | 8h | 2011-08-31 08:00 | 2011-08-31 17:00 | 0d? | 0d |  | 杜兰 | 8h |  |
| 42 | 2.2.3.2 | **目标调查表** | 9d | 2011-08-24 08:00 A | 2011-09-05 17:00 |  | 11% | 8d | 2011-08-24 08:00 | 2011-09-05 17:00 | 0d? | 0d |  |  | 72h | 8h |
| 43 | 2.2.3.2.1 | 目标调查表流程 | 16h | 2011-08-24 08:00 A | 2011-08-25 17:00 | 20 | 50% | 8h | 2011-08-24 08:00 | 2011-08-25 17:00 | 0d? | 0d |  | 江庆荣 | 16h | 8h |
| 44 | 2.2.3.2.2 | 目标调查表管理(一般店) | 32h | 2011-08-26 08:00 A | 2011-08-31 17:00 | 43 |  | 32h | 2011-08-26 08:00 | 2011-08-31 17:00 | 0d? | 0d |  | 江庆荣 | 32h |  |
| 45 | 2.2.3.2.3 | 目标调查表管理(商超) | 16h | 2011-09-01 08:00 A | 2011-09-02 17:00 | 44 |  | 16h | 2011-09-01 08:00 | 2011-09-02 17:00 | 0d? | 0d |  | 江庆荣 | 16h |  |
| 46 | 2.2.3.2.4 | 目标调查表查询 | 8h | 2011-09-05 08:00 A | 2011-09-05 17:00 | 45 |  | 8h | 2011-09-05 08:00 | 2011-09-05 17:00 | 0d? | 0d |  | 江庆荣 | 8h |  |
| 47 | 2.2.3.3 | **合同用印** | 5d | 2011-08-29 08:00 A | 2011-09-02 17:00 |  |  | 5d | 2011-08-29 08:00 | 2011-09-02 17:00 | 0d? | 0d |  |  | 40h |  |
| 48 | 2.2.3.3.1 | 合同用印流程 | 8h | 2011-08-29 08:00 A | 2011-08-29 17:00 | 36 |  | 8h | 2011-08-29 08:00 | 2011-08-29 17:00 | 0d? | 0d |  | 牟忠海 | 8h |  |
| 49 | 2.2.3.3.2 | 合同用印流程表单 | 24h | 2011-08-30 08:00 A | 2011-09-01 17:00 | 48 |  | 24h | 2011-08-30 08:00 | 2011-09-01 17:00 | 0d? | 0d |  | 牟忠海 | 24h |  |
| 50 | 2.2.3.3.3 | 合同用印查询 | 8h | 2011-09-02 08:00 A | 2011-09-02 17:00 | 49 |  | 8h | 2011-09-02 08:00 | 2011-09-02 17:00 | 0d? | 0d |  | 牟忠海 | 8h |  |

| ID | WBS | Task | Duration | Start | Finish | Predecessors | Remaining | Baseline start | Baseline finish | Baseline duration | Total slack | Resources | Work |
| --- | --- | --- | --- | --- | --- | --- | --- | --- | --- | --- | --- | --- | --- |
| 51 | 2.2.3.4 | **新店信息移交** | 11d | 2011-08-29 08:00 A | 2011-09-12 17:00 |  | 11d | 2011-08-29 08:00 | 2011-09-12 17:00 | 0d? | 1d |  | 88h |
| 52 | 2.2.3.4.1 | 新店信息移交流程 | 16h | 2011-08-29 08:00 A | 2011-08-30 17:00 | 24 | 16h | 2011-08-29 08:00 | 2011-08-30 17:00 | 0d? | 0d | 侯钢 | 16h |
| 53 | 2.2.3.4.2 | 新店信息移交管理(一般) | 32h | 2011-08-31 08:00 A | 2011-09-05 17:00 | 52 | 32h | 2011-08-31 08:00 | 2011-09-05 17:00 | 0d? | 0d | 侯钢 | 32h |
| 54 | 2.2.3.4.3 | 新店信息移交管理(商超) | 16h | 2011-09-06 08:00 A | 2011-09-07 17:00 | 53 | 16h | 2011-09-06 08:00 | 2011-09-07 17:00 | 0d? | 0d | 侯钢 | 16h |
| 55 | 2.2.3.4.4 | 新店信息移交查询 | 8h | 2011-09-08 08:00 A | 2011-09-08 17:00 | 54 | 8h | 2011-09-08 08:00 | 2011-09-08 17:00 | 0d? | 0d | 侯钢 | 8h |
| 56 | 2.2.3.4.5 | 供应商主数据新增(SAP) | 16h | 2011-09-09 08:00 A | 2011-09-12 17:00 | 55 | 16h | 2011-09-09 08:00 | 2011-09-12 17:00 | 0d? | 1d | 侯钢 | 16h |
| 57 | 2.2.4 | **标准新开店** | 17d | 2011-08-29 08:00 A | 2011-09-20 17:00 |  | 17d | 2011-08-29 08:00 | 2011-09-20 17:00 | 0d? | 0d |  | 328h |
| 58 | 2.2.4.1 | **装修设计** | 4d | 2011-09-05 08:00 A | 2011-09-08 17:00 |  | 4d | 2011-09-05 08:00 | 2011-09-08 17:00 | 0d? | 0d |  | 32h |
| 59 | 2.2.4.1.1 | 装修设计审核流程 | 8h | 2011-09-05 08:00 A | 2011-09-05 17:00 | 50 | 8h | 2011-09-05 08:00 | 2011-09-05 17:00 | 0d? | 0d | 牟忠海 | 8h |
| 60 | 2.2.4.1.2 | 装修设计查询 | 16h | 2011-09-06 08:00 A | 2011-09-07 17:00 | 59 | 16h | 2011-09-06 08:00 | 2011-09-07 17:00 | 0d? | 0d | 牟忠海 | 16h |
| 61 | 2.2.4.1.3 | 装修设计管理 | 8h | 2011-09-08 08:00 A | 2011-09-08 17:00 | 60 | 8h | 2011-09-08 08:00 | 2011-09-08 17:00 | 0d? | 0d | 牟忠海 | 8h |
| 62 | 2.2.4.2 | **物料配送审核** | 5d | 2011-09-14 08:00 A | 2011-09-20 17:00 |  | 5d | 2011-09-14 08:00 | 2011-09-20 17:00 | 0d? | 0d |  | 40h |
| 63 | 2.2.4.2.1 | 物流配送审核流程 | 8h | 2011-09-14 08:00 A | 2011-09-14 17:00 | 56 | 8h | 2011-09-14 08:00 | 2011-09-14 17:00 | 0d? | 0d | 侯钢 | 8h |
| 64 | 2.2.4.2.2 | 物料配送查询 | 8h | 2011-09-15 08:00 A | 2011-09-15 17:00 | 63 | 8h | 2011-09-15 08:00 | 2011-09-15 17:00 | 0d? | 0d | 侯钢 | 8h |
| 65 | 2.2.4.2.3 | 基础物料配置 | 8h | 2011-09-16 08:00 A | 2011-09-16 17:00 | 64 | 8h | 2011-09-16 08:00 | 2011-09-16 17:00 | 0d? | 0d | 侯钢 | 8h |
| 66 | 2.2.4.2.4 | 物料配送管理 | 16h | 2011-09-19 08:00 A | 2011-09-20 17:00 | 65 | 16h | 2011-09-19 08:00 | 2011-09-20 17:00 | 0d? | 0d | 侯钢 | 16h |
| 67 | 2.2.4.3 | **物料状态** | 5d | 2011-09-09 08:00 A | 2011-09-15 17:00 |  | 5d | 2011-09-09 08:00 | 2011-09-15 17:00 | 0d? | 0d |  | 32h |
| 68 | 2.2.4.3.1 | 物料状态流程 | 8h | 2011-09-09 08:00 A | 2011-09-09 17:00 | 61 | 8h | 2011-09-09 08:00 | 2011-09-09 17:00 | 0d? | 1d | 牟忠海 | 8h |
| 69 | 2.2.4.3.2 | 物料状态表单 | 16h | 2011-09-13 08:00 A | 2011-09-14 17:00 | 68 | 16h | 2011-09-13 08:00 | 2011-09-14 17:00 | 0d? | 0d | 牟忠海 | 16h |
| 70 | 2.2.4.3.3 | 物料状态查询 | 8h | 2011-09-15 08:00 A | 2011-09-15 17:00 | 69 | 8h | 2011-09-15 08:00 | 2011-09-15 17:00 | 0d? | 0d | 牟忠海 | 8h |
| 71 | 2.2.4.4 | **商品预置键** | 3d | 2011-09-16 08:00 A | 2011-09-20 17:00 |  | 3d | 2011-09-16 08:00 | 2011-09-20 17:00 | 0d? | 0d |  | 24h |
| 72 | 2.2.4.4.1 | 商品预置键表单&流程 | 16h | 2011-09-16 08:00 A | 2011-09-19 17:00 | 70 | 16h | 2011-09-16 08:00 | 2011-09-19 17:00 | 0d? | 0d | 牟忠海 | 16h |
| 73 | 2.2.4.4.2 | 商品预置键查询 | 8h | 2011-09-20 08:00 A | 2011-09-20 17:00 | 72 | 8h | 2011-09-20 08:00 | 2011-09-20 17:00 | 0d? | 0d | 牟忠海 | 8h |
| 74 | 2.2.4.5 | **促销规则** | 3d | 2011-09-06 08:00 A | 2011-09-08 17:00 |  | 3d | 2011-09-06 08:00 | 2011-09-08 17:00 | 0d? | 0d |  | 24h |
| 75 | 2.2.4.5.1 | 促销规则管理 | 16h | 2011-09-06 08:00 A | 2011-09-07 17:00 | 46 | 16h | 2011-09-06 08:00 | 2011-09-07 17:00 | 0d? | 0d | 江庆荣 | 16h |
| 76 | 2.2.4.5.2 | 促销规则查询 | 8h | 2011-09-08 08:00 A | 2011-09-08 17:00 | 75 | 8h | 2011-09-08 08:00 | 2011-09-08 17:00 | 0d? | 0d | 江庆荣 | 8h |

| ID | WBS | Task | Duration | Start | Finish | Predecessors | Remaining | Baseline start | Baseline finish | Baseline duration | Total slack | Free slack | Resources | Work |
| --- | --- | --- | --- | --- | --- | --- | --- | --- | --- | --- | --- | --- | --- | --- |
| 77 | 2.2.4.6 | **装修执行子流程** | 14d | 2011-09-01 08:00 A | 2011-09-20 17:00 |  | 14d | 2011-09-01 08:00 | 2011-09-20 17:00 | 0d? | 0d |  |  | 104h |
| 78 | 2.2.4.6.1 | 装修执行流程 | 8h | 2011-09-01 08:00 A | 2011-09-01 17:00 | 41 | 8h | 2011-09-01 08:00 | 2011-09-01 17:00 | 0d? | 0d |  | 杜兰 | 8h |
| 79 | 2.2.4.6.2 | 证照表单 | 16h | 2011-09-02 08:00 A | 2011-09-05 17:00 | 78 | 16h | 2011-09-02 08:00 | 2011-09-05 17:00 | 0d? | 0d |  | 杜兰 | 16h |
| 80 | 2.2.4.6.3 | ADSL安装单表单 | 8h | 2011-09-06 08:00 A | 2011-09-06 17:00 | 79 | 8h | 2011-09-06 08:00 | 2011-09-06 17:00 | 0d? | 0d |  | 杜兰 | 8h |
| 81 | 2.2.4.6.4 | POS机移交确认单表单 | 8h | 2011-09-07 08:00 A | 2011-09-07 17:00 | 80 | 8h | 2011-09-07 08:00 | 2011-09-07 17:00 | 0d? | 0d |  | 杜兰 | 8h |
| 82 | 2.2.4.6.5 | 海信设备安装表单 | 8h | 2011-09-08 08:00 A | 2011-09-08 17:00 | 81 | 8h | 2011-09-08 08:00 | 2011-09-08 17:00 | 0d? | 0d |  | 杜兰 | 8h |
| 83 | 2.2.4.6.6 | 子公司营运部数据表单 | 16h | 2011-09-09 08:00 A | 2011-09-12 17:00 | 82 | 16h | 2011-09-09 08:00 | 2011-09-12 17:00 | 0d? | 1d | 0.98d | 杜兰 | 16h |
| 84 | 2.2.4.6.7 | 子公司工程部表单 | 16h | 2011-09-14 08:00 A | 2011-09-15 17:00 | 83 | 16h | 2011-09-14 08:00 | 2011-09-15 17:00 | 0d? | 0d |  | 杜兰 | 16h |
| 85 | 2.2.4.6.8 | 运输部主数据表单 | 8h | 2011-09-16 08:00 A | 2011-09-16 17:00 | 84 | 8h | 2011-09-16 08:00 | 2011-09-16 17:00 | 0d? | 0d |  | 杜兰 | 8h |
| 86 | 2.2.4.6.9 | 门店主数据(财务)表单 | 8h | 2011-09-19 08:00 A | 2011-09-19 17:00 | 85 | 8h | 2011-09-19 08:00 | 2011-09-19 17:00 | 0d? | 0d |  | 杜兰 | 8h |
| 87 | 2.2.4.6.10 | 主数据人事表单 | 8h | 2011-09-20 08:00 A | 2011-09-20 17:00 | 86 | 8h | 2011-09-20 08:00 | 2011-09-20 17:00 | 0d? | 0d |  | 杜兰 | 8h |
| 88 | 2.2.4.7 | **门店主数据** | 12d | 2011-08-29 08:00 A | 2011-09-13 17:00 |  | 12d | 2011-08-29 08:00 | 2011-09-13 17:00 | 0d? | 1d |  |  | 72h |
| 89 | 2.2.4.7.1 | 门店主数据管理流程 | 16h | 2011-08-29 08:00 A | 2011-08-30 17:00 | 32 | 16h | 2011-08-29 08:00 | 2011-08-30 17:00 | 0d? | 0d |  | 王志强 | 16h |
| 90 | 2.2.4.7.2 | 门店主数据新增 | 40h | 2011-09-07 08:00 A | 2011-09-13 17:00 | 91 | 40h | 2011-09-07 08:00 | 2011-09-13 17:00 | 0d? | 1d | 0.98d | 王志强 | 40h |
| 91 | 2.2.4.7.3 | 海信系统集成 | 16h | 2011-09-05 08:00 A | 2011-09-06 17:00 | 96 | 16h | 2011-09-05 08:00 | 2011-09-06 17:00 | 0d? | 0d |  | 王志强 | 16h |
| 92 | 2.2.5 | 流程集成 | 24h | 2011-09-16 08:00 A | 2011-09-20 17:00 | 94 | 24h | 2011-09-16 08:00 | 2011-09-20 17:00 | 0d? | 0d |  | 江庆荣 | 24h |
| 93 | 2.2.6 | **BAM** | 15d | 2011-08-31 08:00 A | 2011-09-20 17:00 |  | 15d | 2011-08-31 08:00 | 2011-09-20 17:00 | 0d? | 0d |  |  | 88h |
| 94 | 2.2.6.1 | 图形化事件配置 | 32h | 2011-09-09 08:00 A | 2011-09-14 17:00 | 76 | 32h | 2011-09-09 08:00 | 2011-09-14 17:00 | 0d? | 1d | 0.97d | 江庆荣 | 32h |
| 95 | 2.2.6.2 | **BAM监控展示** | 15d | 2011-08-31 08:00 A | 2011-09-20 17:00 |  | 15d | 2011-08-31 08:00 | 2011-09-20 17:00 | 0d? | 0d |  |  | 56h |
| 96 | 2.2.6.2.1 | 业务营运监控 | 24h | 2011-08-31 08:00 A | 2011-09-02 17:00 | 89 | 24h | 2011-08-31 08:00 | 2011-09-02 17:00 | 0d? | 0d |  | 王志强 | 24h |
| 97 | 2.2.6.2.2 | 业务执行监控 | 24h | 2011-09-15 08:00 A | 2011-09-19 17:00 | 90 | 24h | 2011-09-15 08:00 | 2011-09-19 17:00 | 0d? | 0d |  | 王志强 | 24h |
| 98 | 2.2.6.2.3 | 业务操作监控 | 8h | 2011-09-20 08:00 A | 2011-09-20 17:00 | 97 | 8h | 2011-09-20 08:00 | 2011-09-20 17:00 | 0d? | 0d |  | 王志强 | 8h |
