# sss

Schedule from MS Project, 2011-08-23 to 2011-09-20.
Microsoft

## Calendars

- 标准: Mon-Fri 08:00-12:00, 13:00-17:00; Sat-Sun off. Exceptions (off unless hours are given): 2011-09-12.

## Resources

| Resource |
| --- |
| 姚秋明 |
| 王志强 |
| 侯钢 |
| 江庆荣 |
| 马波 |
| 牟忠海 |
| 杜兰 |
| 栗成业 |
| 张立强 |

## Schedule

| ID | WBS | Task | Type | Duration | Start | Finish | Predecessors | Total slack | Free slack | Constraint | Resources | Work |
| --- | --- | --- | --- | --- | --- | --- | --- | --- | --- | --- | --- | --- |
| 1 | 1 | 开发启动 | milestone | 0d | 2011-08-23 | 2011-08-23 |  | 0d |  | start no earlier than 2011-08-23 |  |  |
| 2 | 2 | **T-BPM阶段开发** |  | 20d? | 2011-08-23 | 2011-09-20 |  | 0d |  |  |  | 1136h |
| 3 | 2.1 | **基础开发** |  | 20d? | 2011-08-23 | 2011-09-20 |  | 0d |  |  |  | 360h |
| 4 | 2.1.1 | 组织模型 |  | 3d | 2011-08-23 | 2011-08-25 | 1 | 17d |  | start no earlier than 2011-08-22 | 姚秋明 | 24h |
| 5 | 2.1.2 | **用户同步** |  | 3d | 2011-08-23 | 2011-08-25 |  | 0d |  |  |  | 32h |
| 6 | 2.1.2.1 | SSO |  | 1d | 2011-08-23 | 2011-08-23 | 1 | 16d | 0d | start no earlier than 2011-08-22 | 马波 | 8h |
| 7 | 2.1.2.2 | 职位,TBPM角色匹配关系维护 |  | 1d | 2011-08-23 | 2011-08-23 | 1 | 0d |  | start no earlier than 2011-08-22 | 侯钢 | 8h |
| 8 | 2.1.2.3 | 用户同步 |  | 2d | 2011-08-24 | 2011-08-25 | 7 | 0d |  |  | 侯钢 | 16h |
| 9 | 2.1.3 | **公用组件** |  | 18d? | 2011-08-23 | 2011-09-16 |  | 0d |  |  |  | 200h |
| 10 | 2.1.3.1 | 取下一环节处理人 |  | 3d | 2011-08-23 | 2011-08-25 | 1 | 0d |  | start no earlier than 2011-08-22 | 栗成业 | 24h |
| 11 | 2.1.3.2 | 授权体系 |  | 2d | 2011-08-26 | 2011-08-29 | 10 | 0d |  | start no earlier than 2011-08-22 | 栗成业 | 16h |
| 12 | 2.1.3.3 | 文件上传下载 |  | 2d | 2011-08-30 | 2011-08-31 | 11 | 0d |  |  | 栗成业 | 16h |
| 13 | 2.1.3.4 | SAP接口封装 |  | 3d | 2011-09-01 | 2011-09-05 | 12 | 0d |  |  | 栗成业 | 24h |
| 14 | 2.1.3.5 | 超时处理 |  | 3d | 2011-09-06 | 2011-09-08 | 13 | 0d |  |  | 栗成业 | 24h |
| 15 | 2.1.3.6 | 菜单管理 | milestone | 0d | 2011-09-08 | 2011-09-08 | 14 | 0d |  |  | 栗成业 |  |
| 16 | 2.1.3.7 | 参数配置管理 |  | 2d | 2011-09-09 | 2011-09-13 | 15 | 0d |  | start no earlier than 2011-08-22 | 栗成业 | 16h |
| 17 | 2.1.3.8 | 权限委托 |  | 2d? | 2011-09-14 | 2011-09-15 | 16 | 0d |  | start no earlier than 2011-08-22 | 栗成业 | 16h |
| 18 | 2.1.3.9 | **系统日志管理** |  | 12d | 2011-08-31 | 2011-09-16 |  | 0d |  |  |  | 24h |
| 19 | 2.1.3.9.1 | LOG记录 |  | 2d | 2011-08-31 | 2011-09-01 | 1 | 6d | 0d | start no earlier than 2011-08-31 | 张立强 | 16h |
| 20 | 2.1.3.9.2 | LOG管理查询界面 |  | 1d | 2011-09-16 | 2011-09-16 | 17 | 0d |  |  | 栗成业 | 8h |
| 21 | 2.1.3.10 | INBOX定制 |  | 5d | 2011-09-02 | 2011-09-08 | 19 | 6d | 0d |  | 张立强 | 40h |
| 22 | 2.1.4 | **SAP基础数据管理** |  | 17d | 2011-08-26 | 2011-09-20 |  | 0d |  |  |  | 24h |
| 23 | 2.1.4.1 | SAP字典管理 |  | 2d | 2011-09-19 | 2011-09-20 | 20 | 0d |  |  | 栗成业 | 16h |
| 24 | 2.1.4.2 | CACHE机制 |  | 1d | 2011-08-26 | 2011-08-26 | 8 | 0d |  |  | 侯钢 | 8h |

Notes:
- 15: 使用CORDYS自带功能

| ID | WBS | Task | Duration | Start | Finish | Predecessors | Total slack | Free slack | Constraint | Resources | Work |
| --- | --- | --- | --- | --- | --- | --- | --- | --- | --- | --- | --- |
| 25 | 2.1.5 | **系统参数初始化** | 10d | 2011-08-31 | 2011-09-14 |  | 4d |  |  |  | 80h |
| 26 | 2.1.5.1 | 来伊份职位,TBPM角色匹配关系初始化 | 4d | 2011-08-31 | 2011-09-05 |  | 4d | 0d | start no earlier than 2011-08-31 | 姚秋明 | 32h |
| 27 | 2.1.5.2 | 业务字典信息初始化 | 3d | 2011-09-06 | 2011-09-08 | 26 | 4d | 0d |  | 姚秋明 | 24h |
| 28 | 2.1.5.3 | 功能角色初始化 | 3d | 2011-09-09 | 2011-09-14 | 27 | 4d |  |  | 姚秋明 | 24h |
| 29 | 2.2 | **开店业务流程开发** | 20d | 2011-08-23 | 2011-09-20 |  | 0d |  |  |  | 776h |
| 30 | 2.2.1 | **网点年度规划** | 4d | 2011-08-23 | 2011-08-26 |  | 1d |  |  |  | 32h |
| 31 | 2.2.1.1 | 网点年度规划管理 | 3d | 2011-08-23 | 2011-08-25 | 1 | 1d | 0d | start no earlier than 2011-08-22 | 王志强 | 24h |
| 32 | 2.2.1.2 | 网点年度规划汇总查询 | 1d | 2011-08-26 | 2011-08-26 | 31 | 1d | 0d |  | 王志强 | 8h |
| 33 | 2.2.2 | **网点年度开发计划** | 4d | 2011-08-23 | 2011-08-26 |  | 0d |  |  |  | 32h |
| 34 | 2.2.2.1 | 网点开发计划流程 | 1d | 2011-08-23 | 2011-08-23 | 1 | 0d |  | start no earlier than 2011-08-22 | 牟忠海 | 8h |
| 35 | 2.2.2.2 | 网点开发计划管理 | 2d | 2011-08-24 | 2011-08-25 | 34 | 0d |  | start no earlier than 2011-08-19 | 牟忠海 | 16h |
| 36 | 2.2.2.3 | 网点开发计划查询 | 1d | 2011-08-26 | 2011-08-26 | 35 | 0d |  |  | 牟忠海 | 8h |
| 37 | 2.2.3 | **标准新店选址与发布** | 15d | 2011-08-23 | 2011-09-13 |  | 0d |  |  |  | 264h |
| 38 | 2.2.3.1 | **商超信息移交单** | 5d | 2011-08-26 | 2011-09-01 |  | 0d |  |  |  | 40h |
| 39 | 2.2.3.1.1 | 商超信息移交单流程 | 1d | 2011-08-26 | 2011-08-26 | 1SS+3d | 0d |  | start no earlier than 2011-08-25 | 杜兰 | 8h |
| 40 | 2.2.3.1.2 | 商超信息移交单管理 | 3d | 2011-08-29 | 2011-08-31 | 39 | 0d |  | start no earlier than 2011-08-19 | 杜兰 | 24h |
| 41 | 2.2.3.1.3 | 商超信息移交单查询 | 1d | 2011-09-01 | 2011-09-01 | 40 | 0d |  |  | 杜兰 | 8h |
| 42 | 2.2.3.2 | **目标调查表** | 12d | 2011-08-23 | 2011-09-07 |  | 0d |  |  |  | 96h |
| 43 | 2.2.3.2.1 | 目标调查表流程 | 3d | 2011-08-23 | 2011-08-25 | 1 | 0d |  |  | 江庆荣 | 24h |
| 44 | 2.2.3.2.2 | 目标调查表管理(一般店) | 5d | 2011-08-26 | 2011-09-01 | 43 | 0d |  |  | 江庆荣 | 40h |
| 45 | 2.2.3.2.3 | 目标调查表管理(商超) | 3d | 2011-09-02 | 2011-09-06 | 44 | 0d |  |  | 江庆荣 | 24h |
| 46 | 2.2.3.2.4 | 目标调查表查询 | 1d | 2011-09-07 | 2011-09-07 | 45 | 0d |  |  | 江庆荣 | 8h |
| 47 | 2.2.3.3 | **合同用印** | 5d | 2011-08-29 | 2011-09-02 |  | 0d |  |  |  | 40h |
| 48 | 2.2.3.3.1 | 合同用印流程 | 1d | 2011-08-29 | 2011-08-29 | 36 | 0d |  |  | 牟忠海 | 8h |
| 49 | 2.2.3.3.2 | 合同用印流程表单 | 3d | 2011-08-30 | 2011-09-01 | 48 | 0d |  |  | 牟忠海 | 24h |
| 50 | 2.2.3.3.3 | 合同用印查询 | 1d | 2011-09-02 | 2011-09-02 | 49 | 0d |  |  | 牟忠海 | 8h |

| ID | WBS | Task | Duration | Start | Finish | Predecessors | Total slack | Free slack | Resources | Work |
| --- | --- | --- | --- | --- | --- | --- | --- | --- | --- | --- |
| 51 | 2.2.3.4 | **新店信息移交** | 11d | 2011-08-29 | 2011-09-13 |  | 0d |  |  | 88h |
| 52 | 2.2.3.4.1 | 新店信息移交流程 | 2d | 2011-08-29 | 2011-08-30 | 24 | 0d |  | 侯钢 | 16h |
| 53 | 2.2.3.4.2 | 新店信息移交管理(一般) | 4d | 2011-08-31 | 2011-09-05 | 52 | 0d |  | 侯钢 | 32h |
| 54 | 2.2.3.4.3 | 新店信息移交管理(商超) | 2d | 2011-09-06 | 2011-09-07 | 53 | 0d |  | 侯钢 | 16h |
| 55 | 2.2.3.4.4 | 新店信息移交查询 | 1d | 2011-09-08 | 2011-09-08 | 54 | 0d |  | 侯钢 | 8h |
| 56 | 2.2.3.4.5 | 供应商主数据新增(SAP) | 2d | 2011-09-09 | 2011-09-13 | 55 | 0d |  | 侯钢 | 16h |
| 57 | 2.2.4 | **标准新开店** | 16d | 2011-08-29 | 2011-09-20 |  | 0d |  |  | 328h |
| 58 | 2.2.4.1 | **装修设计** | 4d | 2011-09-05 | 2011-09-08 |  | 0d |  |  | 32h |
| 59 | 2.2.4.1.1 | 装修设计审核流程 | 1d | 2011-09-05 | 2011-09-05 | 50 | 0d |  | 牟忠海 | 8h |
| 60 | 2.2.4.1.2 | 装修设计查询 | 2d | 2011-09-06 | 2011-09-07 | 59 | 0d |  | 牟忠海 | 16h |
| 61 | 2.2.4.1.3 | 装修设计管理 | 1d | 2011-09-08 | 2011-09-08 | 60 | 0d |  | 牟忠海 | 8h |
| 62 | 2.2.4.2 | **物料配送审核** | 5d | 2011-09-14 | 2011-09-20 |  | 0d |  |  | 40h |
| 63 | 2.2.4.2.1 | 物流配送审核流程 | 1d | 2011-09-14 | 2011-09-14 | 56 | 0d |  | 侯钢 | 8h |
| 64 | 2.2.4.2.2 | 物料配送查询 | 1d | 2011-09-15 | 2011-09-15 | 63 | 0d |  | 侯钢 | 8h |
| 65 | 2.2.4.2.3 | 基础物料配置 | 1d | 2011-09-16 | 2011-09-16 | 64 | 0d |  | 侯钢 | 8h |
| 66 | 2.2.4.2.4 | 物料配送管理 | 2d | 2011-09-19 | 2011-09-20 | 65 | 0d |  | 侯钢 | 16h |
| 67 | 2.2.4.3 | **物料状态** | 4d | 2011-09-09 | 2011-09-15 |  | 0d |  |  | 32h |
| 68 | 2.2.4.3.1 | 物料状态流程 | 1d | 2011-09-09 | 2011-09-09 | 61 | 0d |  | 牟忠海 | 8h |
| 69 | 2.2.4.3.2 | 物料状态表单 | 2d | 2011-09-13 | 2011-09-14 | 68 | 0d |  | 牟忠海 | 16h |
| 70 | 2.2.4.3.3 | 物料状态查询 | 1d | 2011-09-15 | 2011-09-15 | 69 | 0d |  | 牟忠海 | 8h |
| 71 | 2.2.4.4 | **商品预置键** | 3d | 2011-09-16 | 2011-09-20 |  | 0d |  |  | 24h |
| 72 | 2.2.4.4.1 | 商品预置键表单&流程 | 2d | 2011-09-16 | 2011-09-19 | 70 | 0d |  | 牟忠海 | 16h |
| 73 | 2.2.4.4.2 | 商品预置键查询 | 1d | 2011-09-20 | 2011-09-20 | 72 | 0d |  | 牟忠海 | 8h |
| 74 | 2.2.4.5 | **促销规则** | 3d | 2011-08-30 | 2011-09-01 |  | 1d |  |  | 24h |
| 75 | 2.2.4.5.1 | 促销规则管理 | 2d | 2011-08-30 | 2011-08-31 | 89 | 1d | 0d | 王志强 | 16h |
| 76 | 2.2.4.5.2 | 促销规则查询 | 1d | 2011-09-01 | 2011-09-01 | 75 | 1d | 0d | 王志强 | 8h |

| ID | WBS | Task | Duration | Start | Finish | Predecessors | Total slack | Free slack | Constraint | Resources | Work |
| --- | --- | --- | --- | --- | --- | --- | --- | --- | --- | --- | --- |
| 77 | 2.2.4.6 | **装修执行子流程** | 12d | 2011-09-02 | 2011-09-20 |  | 0d |  |  |  | 96h |
| 78 | 2.2.4.6.1 | 装修执行流程 | 1d | 2011-09-02 | 2011-09-02 | 41 | 0d |  |  | 杜兰 | 8h |
| 79 | 2.2.4.6.2 | 证照表单 | 2d | 2011-09-05 | 2011-09-06 | 78 | 0d |  |  | 杜兰 | 16h |
| 80 | 2.2.4.6.3 | ADSL安装单表单 | 1d | 2011-09-07 | 2011-09-07 | 79 | 0d |  |  | 杜兰 | 8h |
| 81 | 2.2.4.6.4 | POS机移交确认单表单 | 1d | 2011-09-08 | 2011-09-08 | 80 | 0d |  |  | 杜兰 | 8h |
| 82 | 2.2.4.6.5 | 海信设备安装表单 | 1d | 2011-09-09 | 2011-09-09 | 81 | 0d |  |  | 杜兰 | 8h |
| 83 | 2.2.4.6.6 | 子公司营运部数据表单 | 2d | 2011-09-13 | 2011-09-14 | 82 | 0d |  |  | 杜兰 | 16h |
| 84 | 2.2.4.6.7 | 子公司工程部表单 | 1d | 2011-09-15 | 2011-09-15 | 83 | 0d |  |  | 杜兰 | 8h |
| 85 | 2.2.4.6.8 | 运输部主数据表单 | 1d | 2011-09-16 | 2011-09-16 | 84 | 0d |  |  | 杜兰 | 8h |
| 86 | 2.2.4.6.9 | 门店主数据(财务)表单 | 1d | 2011-09-19 | 2011-09-19 | 85 | 0d |  |  | 杜兰 | 8h |
| 87 | 2.2.4.6.10 | 主数据人事表单 | 1d | 2011-09-20 | 2011-09-20 | 86 | 0d |  |  | 杜兰 | 8h |
| 88 | 2.2.4.7 | **门店主数据** | 12d | 2011-08-29 | 2011-09-14 |  | 1d |  |  |  | 80h |
| 89 | 2.2.4.7.1 | 门店主数据管理流程 | 1d | 2011-08-29 | 2011-08-29 | 32 | 1d | 0d |  | 王志强 | 8h |
| 90 | 2.2.4.7.2 | 门店主数据管理流程优化 | 2d | 2011-09-05 | 2011-09-06 |  | 9d |  | start no earlier than 2011-09-05 | 马波 | 16h |
| 91 | 2.2.4.7.3 | 门店主数据新增 | 5d | 2011-09-07 | 2011-09-14 | 97 | 1d | 0d |  | 王志强 | 40h |
| 92 | 2.2.4.7.4 | 海信系统集成 | 2d | 2011-09-09 | 2011-09-13 |  | 5d |  | start no earlier than 2011-09-09 | 马波 | 16h |
| 93 | 2.2.5 | 流程集成 | 4d | 2011-09-15 | 2011-09-20 | 95 | 0d |  |  | 江庆荣 | 32h |
| 94 | 2.2.6 | **BAM** | 11d | 2011-09-02 | 2011-09-19 |  | 1d |  |  |  | 88h |
| 95 | 2.2.6.1 | 图形化事件配置 | 4d | 2011-09-08 | 2011-09-14 | 46 | 0d |  |  | 江庆荣 | 32h |
| 96 | 2.2.6.2 | **BAM监控展示** | 11d | 2011-09-02 | 2011-09-19 |  | 1d |  |  |  | 56h |
| 97 | 2.2.6.2.1 | 业务执行监控 | 3d | 2011-09-02 | 2011-09-06 | 76 | 1d | 0d |  | 王志强 | 24h |
| 98 | 2.2.6.2.2 | 业务营运监控 | 3d | 2011-09-15 | 2011-09-19 | 91 | 1d |  |  | 王志强 | 24h |
| 99 | 2.2.6.2.3 | 业务操作监控 | 1d | 2011-09-09 | 2011-09-09 | 21 | 6d |  |  | 张立强 | 8h |
