# sss

Schedule from MS Project, 2011-09-13 to 2011-11-09.
Microsoft

## Calendars

- 标准: Mon-Fri 08:00-12:00, 13:00-17:00; Sat-Sun off. Exceptions (off unless hours are given): 2011-10-03 to 2011-10-07 (National Day Holiday).

## Resources

| Resource |
| --- |
| 姚秋明 |
| 王志强 |
| 侯钢 |
| 江庆荣 |
| 马波 |
| 牟忠海 |
| 杜兰 |
| 栗成业 |
| 张立强 |
| 戴鲲 |
| 李斌 |
| 何叶 |
| 唐炜炜 |

## Schedule

| ID | WBS | Task | Type | Duration | Start | Finish | Predecessors | Total slack | Constraint | Resources | Work | Text1 |
| --- | --- | --- | --- | --- | --- | --- | --- | --- | --- | --- | --- | --- |
| 1 | 1 | 培训计划启动 | milestone | 0d | 2011-09-13 08:00 | 2011-09-13 08:00 |  | 0d | start no earlier than 2011-09-13 08:00 |  |  |  |
| 2 | 2 | **T-BPM新开店业务第一阶段培训** |  | 37d | 2011-09-13 08:00 | 2011-11-09 17:00 | 1 | 0d |  |  | 536h |  |
| 3 | 2.1 | **培训材料准备** |  | 15d | 2011-09-13 08:00 | 2011-10-10 17:00 |  | 0d |  |  | 424h |  |
| 4 | 2.1.1 | 基础操作(登录EIP/访问待办/访问查询/访问监控) |  | 1d | 2011-09-16 08:00 | 2011-09-16 17:00 | 1FS+3d | 5d | start no earlier than 2011-08-22 08:00 | 戴鲲; 马波 | 16h |  |
| 5 | 2.1.2 | 新开店业务 |  | 9d | 2011-09-13 08:00 | 2011-09-23 17:00 | 1 | 0d | start no earlier than 2011-08-22 08:00 | 李斌; 何叶; 姚秋明 | 216h |  |
| 6 | 2.1.3 | 系统管理(用户管理/权限管理/岗位映射) |  | 2d | 2011-09-22 08:00 | 2011-09-23 17:00 | 5FF | 0d | start no earlier than 2011-08-22 08:00 | 戴鲲; 马波; 姚秋明 | 48h |  |
| 7 | 2.1.4 | 培训材料确认 |  | 1d | 2011-09-26 08:00 | 2011-09-26 17:00 | 4, 6 | 0d | start no earlier than 2011-08-22 08:00 | 唐炜炜; 马波; 戴鲲 | 24h |  |
| 8 | 2.1.5 | 培训材料修正 |  | 5d | 2011-09-27 08:00 | 2011-10-10 17:00 | 7 | 0d | start no earlier than 2011-08-22 08:00 | 姚秋明; 马波; 戴鲲 | 120h |  |
| 9 | 2.2 | **内部培训** |  | 1.5d | 2011-10-11 08:00 | 2011-10-12 12:00 | 8 | 0d |  |  | 24h | 网点中心试用人员 |
| 10 | 2.2.1 | 基础操作培训 |  | 0.5d | 2011-10-11 08:00 | 2011-10-11 12:00 |  | 0d |  | 马波; 唐炜炜 | 8h |  |
| 11 | 2.2.2 | **新开店业务操作使用培训** |  | 1d | 2011-10-11 13:00 | 2011-10-12 12:00 | 10 | 0d |  |  | 16h |  |
| 12 | 2.2.2.1 | **标准新店选址与发布** |  | 0.5d | 2011-10-11 13:00 | 2011-10-11 17:00 |  | 0d |  |  | 8h |  |
| 13 | 2.2.2.1.1 | 目标调查表 |  | 0.5d | 2011-10-11 13:00 | 2011-10-11 17:00 |  | 0d |  | 马波; 唐炜炜 | 8h |  |
| 14 | 2.2.2.2 | 业务监控(运营监控/执行监控/操作监控) |  | 0.5d | 2011-10-12 08:00 | 2011-10-12 12:00 | 12 | 0d |  | 马波; 唐炜炜 | 8h |  |
| 15 | 2.3 | 业务部门先期试用 |  | 5d | 2011-10-12 13:00 | 2011-10-19 12:00 | 14 | 0d |  |  |  | 网点中心试用人员 |
| 16 | 2.4 | **上线培训** |  | 5.5d | 2011-10-19 13:00 | 2011-10-26 17:00 | 15 | 0d |  |  | 88h | 新开店业务相关人员 |
| 17 | 2.4.1 | 基础操作培训 |  | 0.5d | 2011-10-19 13:00 | 2011-10-19 17:00 | 15 | 0d |  | 马波; 唐炜炜 | 8h |  |
| 18 | 2.4.2 | **新开店业务操作使用培训** |  | 5d | 2011-10-20 08:00 | 2011-10-26 17:00 | 17 | 0d |  |  | 80h |  |
| 19 | 2.4.2.1 | 网点年度规划 |  | 0.5d | 2011-10-20 08:00 | 2011-10-20 12:00 | 3FS+1d | 0d |  | 马波; 唐炜炜 | 8h |  |
| 20 | 2.4.2.2 | 网点年度开发计划 |  | 0.5d | 2011-10-20 13:00 | 2011-10-20 17:00 | 19 | 0d |  | 马波; 唐炜炜 | 8h |  |
| 21 | 2.4.2.3 | **标准新店选址与发布** |  | 2d | 2011-10-21 08:00 | 2011-10-24 17:00 | 20 | 0d |  |  | 32h |  |
| 22 | 2.4.2.3.1 | 商超信息移交单 |  | 0.5d | 2011-10-21 08:00 | 2011-10-21 12:00 | 20 | 0d |  | 马波; 唐炜炜 | 8h |  |
| 23 | 2.4.2.3.2 | 目标调查表 |  | 0.5d | 2011-10-21 13:00 | 2011-10-21 17:00 | 22 | 0d |  | 马波; 唐炜炜 | 8h |  |
| 24 | 2.4.2.3.3 | 合同用印 |  | 0.5d | 2011-10-24 08:00 | 2011-10-24 12:00 | 23 | 0d |  | 马波; 唐炜炜 | 8h |  |
| 25 | 2.4.2.3.4 | 新店信息移交 |  | 0.5d | 2011-10-24 13:00 | 2011-10-24 17:00 | 24 | 0d |  | 马波; 唐炜炜 | 8h |  |

Notes:
- 2: 基于业务蓝图报告+ARIS操作规范

| ID | WBS | Task | Duration | Start | Finish | Predecessors | Total slack | Resources | Work | Text1 |
| --- | --- | --- | --- | --- | --- | --- | --- | --- | --- | --- |
| 26 | 2.4.2.4 | **标准新开店** | 1.5d | 2011-10-25 08:00 | 2011-10-26 12:00 | 21 | 0d |  | 24h |  |
| 27 | 2.4.2.4.1 | 装修设计 | 0.25d | 2011-10-25 08:00 | 2011-10-25 10:00 | 25 | 0d | 马波; 唐炜炜 | 4h |  |
| 28 | 2.4.2.4.2 | 物料配送审核 | 0.25d | 2011-10-25 10:00 | 2011-10-25 12:00 | 27 | 0d | 马波; 唐炜炜 | 4h |  |
| 29 | 2.4.2.4.3 | 物料状态 | 0.25d | 2011-10-25 13:00 | 2011-10-25 15:00 | 28 | 0d | 马波; 唐炜炜 | 4h |  |
| 30 | 2.4.2.4.4 | 促销规则 | 0.25d | 2011-10-25 15:00 | 2011-10-25 17:00 | 29 | 0d | 马波; 唐炜炜 | 4h |  |
| 31 | 2.4.2.4.5 | 装修执行子流程 | 0.25d | 2011-10-26 08:00 | 2011-10-26 10:00 | 30 | 0d | 马波; 唐炜炜 | 4h |  |
| 32 | 2.4.2.4.6 | 门店主数据 | 0.25d | 2011-10-26 10:00 | 2011-10-26 12:00 | 31 | 0d | 马波; 唐炜炜 | 4h |  |
| 33 | 2.4.2.5 | 业务监控(运营监控/执行监控/操作监控) | 0.5d | 2011-10-26 13:00 | 2011-10-26 17:00 | 26 | 0d | 马波; 唐炜炜 | 8h |  |
| 34 | 2.5 | 用户验收测试 | 5d | 2011-10-27 08:00 | 2011-11-02 17:00 | 16 | 0d |  |  | 验收测试组 |
| 35 | 2.6 | 上线运行 | 5d | 2011-11-03 08:00 | 2011-11-09 17:00 | 34 | 0d |  |  | 验收测试组 |
