# 测试

Schedule from MS Project, 2011-09-22 to 2011-10-28.

## Calendars

- 标准: Mon-Fri 08:00-12:00, 13:00-17:00; Sat-Sun 09:00-10:00. Exceptions (off unless hours are given): 2011-10-01 to 2011-10-07, 2011-10-08 to 2011-10-09 08:00-12:00, 13:00-17:00.

## Resources

| Resource |
| --- |
| 李斌 |
| 何叶 |
| 来伊份同事A |
| 来伊份同事B |
| 姚秋明 |
| 董雨花 |
| 陆怡嫣 |
| SAP顾问 |

## Schedule

| ID | WBS | Task | Type | Duration | Start | Finish | Predecessors | Total slack | Free slack | Constraint | Resources | Work |
| --- | --- | --- | --- | --- | --- | --- | --- | --- | --- | --- | --- | --- |
| 1 | 1 | 测试启动 | milestone | 0d | 2011-09-22 08:00 | 2011-09-22 08:00 |  | 0.62d | 0d | start no earlier than 2011-09-22 08:00 |  |  |
| 2 | 2 | ARIS业务流程分析(准备) |  | 2d | 2011-09-22 08:00 | 2011-09-23 17:00 | 1 | 0.75d | 0d | finish no earlier than 2011-09-23 17:00 | 来伊份同事A; 来伊份同事B | 32h |
| 3 | 3 | 流程表单介绍 |  | 0.5d | 2011-09-26 08:00 | 2011-09-26 12:00 |  | 0.5d |  | start no earlier than 2011-09-26 08:00 | 来伊份同事A; 来伊份同事B | 8h |
| 4 | 4 | 流程表单Review |  | 1d | 2011-09-27 08:00 | 2011-09-27 17:00 | 3 | 0d |  | start no earlier than 2011-09-27 08:00 | 来伊份同事A; 来伊份同事B | 16h |
| 5 | 5 | 测试用例学习 |  | 1d | 2011-09-28 08:00 | 2011-09-28 17:00 | 4 | 0d |  |  | 来伊份同事A; 来伊份同事B | 16h |
| 6 | 6 | **测试任务** |  | 19d | 2011-09-29 08:00 | 2011-10-28 12:00 | 5 | 0d |  |  |  | 264h |
| 7 | 6.1 | **标准新店选址与发布** |  | 6.5d | 2011-09-29 08:00 | 2011-10-12 12:00 |  | 0d |  |  | 来伊份同事A | 52h |
| 8 | 6.1.1 | 目标调查表(商超,一般) |  | 3d | 2011-09-29 08:00 | 2011-10-08 17:00 | 5 | 0d |  |  |  |  |
| 9 | 6.1.2 | 合同用印 |  | 1d | 2011-10-09 08:00 | 2011-10-09 17:00 | 8 | 0d |  |  |  |  |
| 10 | 6.1.3 | 新店信息移交（商超,一般） |  | 2d | 2011-10-10 08:00 | 2011-10-11 17:00 | 9 | 0d |  |  |  |  |
| 11 | 6.1.4 | 商超信息移交单 |  | 0.5d | 2011-10-12 08:00 | 2011-10-12 12:00 | 10 | 0d |  | start no earlier than 2011-09-29 08:00 |  |  |
| 12 | 6.2 | 网点开发年度计划 |  | 0.5d | 2011-10-12 13:00 | 2011-10-12 17:00 | 11 | 2d |  |  |  |  |
| 13 | 6.3 | 网点年度开发计划 |  | 0.5d | 2011-10-12 13:00 | 2011-10-12 17:00 | 11 | 0d |  |  |  |  |
| 14 | 6.4 | **标准新开店** |  | 7d | 2011-10-08 08:00 | 2011-10-14 17:00 |  | 0.5d |  |  |  | 52h |
| 15 | 6.4.1 | 装修设计 |  | 1d | 2011-10-08 08:00 | 2011-10-08 17:00 | 5 | 0.5d | 0d | start no earlier than 2011-10-08 08:00 | 来伊份同事B | 8h |
| 16 | 6.4.2 | 物料配送审核 |  | 1d | 2011-10-09 08:00 | 2011-10-09 17:00 | 15 | 0.5d | 0d | start no earlier than 2011-10-08 08:00 | 来伊份同事B | 8h |
| 17 | 6.4.3 | 物料状态 |  | 0.5d | 2011-10-10 08:00 | 2011-10-10 12:00 | 16 | 4.5d |  |  | 来伊份同事B | 4h |
| 18 | 6.4.4 | 促销规则 |  | 0.5d | 2011-10-10 08:00 | 2011-10-10 12:00 | 16 | 0.5d | 0d |  |  |  |
| 19 | 6.4.5 | **装修执行子流程** |  | 2.25d | 2011-10-10 13:00 | 2011-10-12 15:00 |  | 0.5d |  |  |  |  |
| 20 | 6.4.5.1 | 装修执行流程 |  | 1d | 2011-10-10 13:00 | 2011-10-11 12:00 | 18 | 0.5d | 0d |  |  |  |
| 21 | 6.4.5.2 | 证照表单 |  | 0.25d | 2011-10-11 13:00 | 2011-10-11 15:00 | 20 | 6.25d |  | start no earlier than 2011-10-11 08:00 |  |  |
| 22 | 6.4.5.3 | ADSL安装单表单 |  | 0.25d | 2011-10-11 13:00 | 2011-10-11 15:00 | 20 | 6.25d |  |  |  |  |
| 23 | 6.4.5.4 | POS机移交确认单表单 |  | 0.25d | 2011-10-11 13:00 | 2011-10-11 15:00 | 20 | 6.25d |  | start no earlier than 2011-10-11 08:00 |  |  |
| 24 | 6.4.5.5 | 海信设备安装表单 |  | 0.25d | 2011-10-11 13:00 | 2011-10-11 15:00 | 20 | 0.5d | 0d |  |  |  |
| 25 | 6.4.5.6 | 子公司营运部数据表单 |  | 0.5d | 2011-10-11 15:00 | 2011-10-12 10:00 | 24 | 0.5d | 0d |  |  |  |
| 26 | 6.4.5.7 | 子公司工程部表单 |  | 0.5d | 2011-10-12 10:00 | 2011-10-12 15:00 | 25 | 5.25d |  |  |  |  |
| 27 | 6.4.5.8 | 运输部主数据表单 |  | 0.25d | 2011-10-12 10:00 | 2011-10-12 12:00 | 25 | 5.5d |  |  |  |  |
| 28 | 6.4.5.9 | 门店主数据(财务)表单 |  | 0.25d | 2011-10-12 10:00 | 2011-10-12 12:00 | 25 | 5.5d |  |  |  |  |
| 29 | 6.4.5.10 | 主数据人事表单 |  | 0.25d | 2011-10-12 10:00 | 2011-10-12 12:00 | 25 | 0.5d |  |  |  |  |
| 30 | 6.4.6 | 业务,运营监控 |  | 1d | 2011-10-13 08:00 | 2011-10-13 17:00 | 13, 29 | 0d |  |  | 来伊份同事A; 来伊份同事B | 16h |
| 31 | 6.4.7 | 门店主数据 |  | 1d | 2011-10-14 08:00 | 2011-10-14 17:00 | 30 | 0d |  |  | 来伊份同事A; 来伊份同事B | 16h |
| 32 | 6.5 | 回归测试 |  | 10d | 2011-10-15 09:00 | 2011-10-28 12:00 | 31 | 0d |  |  | 来伊份同事A; 来伊份同事B | 160h |
