# sss

Schedule from MS Project, 2011-12-26 to 2012-03-02.
Microsoft

## Calendars

- 标准: Mon-Fri 08:00-12:00, 13:00-17:00; Sat-Sun off. Exceptions (off unless hours are given): 2011-12-31 to 2012-01-02, 2012-01-04 to 2012-01-05, 2012-01-21, 2012-01-23 to 2012-01-27, 2012-01-29.

## Resources

| Resource |
| --- |
| PM |
| SA |
| SE01 |
| TM |
| LYF01 |
| LYF02 |
| SE02 |
| SE03 |
| SE04 |

## Schedule

| ID | WBS | Task | Type | Duration | Start | Finish | Predecessors | Total slack | Free slack | Constraint | Resources | Work |
| --- | --- | --- | --- | --- | --- | --- | --- | --- | --- | --- | --- | --- |
| 1 | 1 | 开发执行 | milestone | 0d | 2011-12-26 | 2011-12-26 |  | 0d |  | start no earlier than 2011-12-26 |  |  |
| 2 | 2 | **促销开发计划** |  | 42d | 2011-12-26 | 2012-03-02 |  | 0d |  |  |  | 2088h |
| 3 | 2.1 | **基础模块开发** |  | 6d | 2011-12-26 | 2012-01-03 |  | 36d |  |  |  | 48h |
| 4 | 2.1.1 | 环节超时设计开发 |  | 3d | 2011-12-26 | 2011-12-28 | 1 | 1d | 0d |  | SE03 | 24h |
| 5 | 2.1.2 | 环节处理人优化 |  | 3d | 2011-12-29 | 2012-01-03 | 4 | 1d | 0d |  | SE03 | 24h |
| 6 | 2.2 | **流程开发** |  | 20d | 2011-12-26 | 2012-02-01 | 1 | 0d |  |  | PM [50%]; TM | 928h |
| 7 | 2.2.1 | 促销商品制定流程 |  | 9d | 2011-12-26 | 2012-01-10 | 1 | 1d | 0d |  | SA | 72h |
| 8 | 2.2.2 | 促销商品信息发布 |  | 4d | 2012-01-03 | 2012-01-10 | 25 | 5d | 0d |  | SE04 | 32h |
| 9 | 2.2.3 | 活动赠品申购 |  | 5d | 2011-12-26 | 2011-12-30 | 1 | 7d | 0d |  | SE01 | 40h |
| 10 | 2.2.4 | 促销活动培训课件制作 |  | 2d | 2011-12-26 | 2011-12-27 |  | 2d | 0d |  | SE02 | 16h |
| 11 | 2.2.5 | 物资需求配置表(总部) |  | 2d | 2011-12-28 | 2011-12-29 | 10 | 2d | 0d |  | SE02 | 16h |
| 12 | 2.2.6 | 物资需求配置表(子公司) |  | 2d | 2011-12-30 | 2012-01-03 | 11 | 2d | 0d |  | SE02 | 16h |
| 13 | 2.2.7 | 物料状态主数据 |  | 3d | 2011-12-26 | 2011-12-28 | 1 | 7d | 0d |  | LYF01 | 24h |
| 14 | 2.2.8 | 活动赠品订购入库及配送 |  | 4d | 2012-01-06 | 2012-01-11 | 12 | 2d | 0d |  | SE02 | 32h |
| 15 | 2.2.9 | 促销活动执行 |  | 4d | 2012-01-03 | 2012-01-10 | 9 | 7d |  |  | SE01 | 32h |
| 16 | 2.2.10 | 标准促销收尾 |  | 4d | 2012-01-12 | 2012-01-17 | 14 | 2d |  |  | SE02 | 32h |
| 17 | 2.2.11 | 促销主数据（特殊促销） |  | 3d | 2012-01-11 | 2012-01-13 | 7 | 1d | 0d |  | SA | 24h |
| 18 | 2.2.12 | 促销主数据（会员价） |  | 3d | 2012-01-06 | 2012-01-10 | 22 | 0d |  |  | LYF02 | 24h |
| 19 | 2.2.13 | 商品或主题或热点或异业促销活动（总部） |  | 4d | 2012-01-11 | 2012-01-16 | 18 | 0d |  |  | LYF02 | 32h |
| 20 | 2.2.14 | 商品或主题或热点或异业促销活动（子公司） |  | 2d | 2012-01-17 | 2012-01-18 | 19 | 0d |  |  | LYF02 | 16h |
| 21 | 2.2.15 | 库存及竞品活动规划（总部） |  | 4d | 2011-12-26 | 2011-12-29 | 1 | 0d |  |  | LYF02 | 32h |
| 22 | 2.2.16 | 库存及竞品活动规划（子公司） |  | 2d | 2011-12-30 | 2012-01-03 | 21 | 0d |  |  | LYF02 | 16h |
| 23 | 2.2.17 | 新品推广活动规划（总部） |  | 4d | 2011-12-29 | 2012-01-06 | 13 | 7d | 0d |  | LYF01 | 32h |
| 24 | 2.2.18 | 新品推广活动规划（子公司） |  | 2d | 2012-01-09 | 2012-01-10 | 23 | 7d |  |  | LYF01 | 16h |
| 25 | 2.2.19 | 全年活动规划 |  | 5d | 2011-12-26 | 2011-12-30 | 1 | 5d | 0d |  | SE04 | 40h |
| 26 | 2.2.20 | 活动赠品设计打样封样 |  | 2d | 2012-01-11 | 2012-01-12 | 8 | 5d |  |  | SE04 | 16h |
| 27 | 2.2.21 | SAP 接口集成 |  | 3d | 2012-01-16 | 2012-01-18 | 17 | 1d |  |  | SA; LYF01 | 48h |
| 28 | 2.2.22 | 主线流程集成 |  | 5d | 2012-01-19 | 2012-02-01 | 20, 19 | 0d |  |  | SE03; LYF02 | 80h |
| 29 | 2.3 | 流程重构 |  | 7d | 2012-02-02 | 2012-02-10 | 6 | 0d |  |  | SA; SE01; SE02; SE03; SE04; LYF01; LYF02 | 392h |

Notes:
- 7: 根据ARIS模型无驳回到上一级。 / 数据库设计符合业务需求 / 该部分信息能涵盖促销主数据（降价促销）所需要的内容,/ 该部分时间包含3个子流程 / 以及降价促销主数据
- 8: 表单能复用之前促销商品制定的表单
- 9: 活动赠品申购涉及的表单中明细是以附件的方式进行处理， / 另考虑驳回上一步功能。
- 10: 无特殊表单需求，以附件审批为主。
- 11: 当前无该流程的相关表单， / 考虑以附件的审批为主
- 12: 当前无该流程的相关表单， / 考虑以附件的审批为主
- 13: 此流程的主要难度在表单，流程可以考虑0.5天。 / 数据层面的处理考虑在2.5天。
- 14: 假设在活动赠品订购入库及配送中的物料状态是可以复用物料状态主数据。 / 其它相关的数据采用附件的方式来进行。 / 无特殊表单需求。
- 15: 主要考虑线下环节执行，只是对关键点进行监控 / 考虑2天左右的时间进行流程及流程使用表单的开发。 / 2天左右时间完成日常功能的审核提交。
- 16: 无表单相关需求， / 都是以附件的格式作为审批内容
- 17: 借鉴之前新开店的成功
- 19: 考虑表单相关字段不超过10个， / 其余内容是以附件的格式进行提交
- 21: 可以复用商品或主题或热点的促销计划子流程
- 23: 可以复用库存竞品的流程及表单
- 24: 可以复用库存竞品的流程及表单
- 25: 以附件方式的进行流程的处理，不需要相关表单
- 26: 对于该流程，考虑到都是线下操作，只保留一个环节，且表单上字段内容部超过10个。
- 27: SAP
- 29: 所有相关流程基于需求确认90%的情况下，预留10%的未确认。

| ID | WBS | Task | Duration | Start | Finish | Predecessors | Total slack | Resources | Work |
| --- | --- | --- | --- | --- | --- | --- | --- | --- | --- |
| 30 | 2.4 | **业务信息管理及查询** | 15d | 2012-02-13 | 2012-03-02 | 29 | 0d |  | 720h |
| 31 | 2.4.1 | 管理页面定义及开发 | 5d | 2012-02-13 | 2012-02-17 |  | 0d | SA; SE01; SE02; SE03; SE04; LYF01; LYF02 | 280h |
| 32 | 2.4.2 | 查询统计页面查询 | 5d | 2012-02-20 | 2012-02-24 | 31 | 0d | SA; SE01; SE02; SE03; SE04; LYF01; LYF02 | 280h |
| 33 | 2.4.3 | 促销业务仪表板 | 5d | 2012-02-27 | 2012-03-02 | 32 | 0d | SA; SE03; SE01; LYF01 | 160h |
