# sss

Schedule from MS Project, 2011-12-26 to 2012-02-24, A marks actual dates.
Microsoft

## Calendars

- 标准: Mon-Fri 08:00-12:00, 13:00-17:00; Sat-Sun off. Exceptions (off unless hours are given): 2011-12-31 to 2012-01-02, 2012-01-04 to 2012-01-05, 2012-01-21, 2012-01-23 to 2012-01-27, 2012-01-29.

## Resources

| Resource |
| --- |
| 戴鲲 |
| 王志强 |
| 侯钢 |
| 马波 |
| 牟忠海 |
| 杜兰 |
| 江庆荣 |
| 徐新宇 |
| 王遐 |

## Schedule

| ID | WBS | Task | Type | Duration | Start | Finish | Predecessors | Complete | Remaining | Total slack | Free slack | Constraint | Resources | Work | Actual work |
| --- | --- | --- | --- | --- | --- | --- | --- | --- | --- | --- | --- | --- | --- | --- | --- |
| 1 | 1 | 开发执行 | milestone | 0d | 2011-12-26 | 2011-12-26 |  |  |  | 8.1d | 0d | start no earlier than 2011-12-26 |  |  |  |
| 2 | 2 | **促销开发计划** |  | 37d | 2011-12-26 A | 2012-02-24 |  | 57% | 15.95d | 0d |  |  |  | 1836h | 669.26h |
| 3 | 2.1 | **基础模块开发** |  | 6d | 2012-01-06 A | 2012-01-13 A |  | 100% |  |  |  |  |  | 48h | 48h |
| 4 | 2.1.1 | 环节超时设计开发 |  | 3d | 2012-01-06 A | 2012-01-10 A | 19 | 100% |  |  |  |  | 徐新宇 | 24h | 24h |
| 5 | 2.1.2 | 环节处理人优化 |  | 3d | 2012-01-11 A | 2012-01-13 A | 4 | 100% |  |  |  |  | 徐新宇 | 24h | 24h |
| 6 | 2.2 | **流程开发** |  | 17d | 2011-12-26 A | 2012-01-20 | 1 | 68% | 5.46d | 0d |  |  | 戴鲲 [50%]; 马波 | 908h | 621.26h |
| 7 | 2.2.1 | 促销商品制定流程 |  | 9d | 2011-12-26 A | 2012-01-10 | 1 | 30% | 6.3d | 4.55d | 0d |  | 王志强 | 72h | 64.8h |
| 8 | 2.2.2 | 促销商品信息发布 |  | 4d | 2011-12-26 A | 2011-12-29 A | 1 | 100% |  |  |  |  | 侯钢 | 32h | 32h |
| 9 | 2.2.3 | 活动赠品申购 |  | 5d | 2011-12-30 A | 2012-01-17 A | 14 | 100% |  |  |  |  | 侯钢 | 40h | 40h |
| 10 | 2.2.4 | 促销活动培训课件制作 |  | 2d | 2011-12-26 A | 2011-12-27 A | 1 | 100% |  |  |  |  | 江庆荣 | 16h | 16h |
| 11 | 2.2.5 | 物资需求配置表(总部+子公司) |  | 5d | 2011-12-28 A | 2012-01-06 A | 10 | 100% |  |  |  |  | 江庆荣 | 40h | 40h |
| 13 | 2.2.6 | 活动赠品订购入库及配送 |  | 4d | 2012-01-09 A | 2012-01-12 | 11 | 60% | 1.6d | 2d | 0d |  | 江庆荣 | 32h | 19.2h |
| 14 | 2.2.7 | 促销活动执行 |  | 5d | 2011-12-30 A | 2012-01-10 A | 8 | 100% |  |  |  |  | 侯钢 | 40h | 40h |
| 15 | 2.2.8 | 标准促销收尾 |  | 4d | 2012-01-13 | 2012-01-18 | 13 |  |  | 2d |  |  | 江庆荣 | 32h |  |
| 17 | 2.2.9 | 促销主数据（特殊促销） |  | 3d | 2012-01-11 A | 2012-01-13 | 7 | 80% | 0.6d | 2.15d | 0d |  | 王志强 | 24h | 19.2h |
| 18 | 2.2.10 | 非常规采购询价 |  | 3d | 2012-01-06 A | 2012-01-10 A | 22 | 100% |  |  |  |  | 杜兰 | 24h | 24h |
| 19 | 2.2.11 | 商品或主题或热点或异业促销活动（总部+子公司） |  | 6d | 2011-12-26 A | 2012-01-03 A | 1 | 100% |  |  |  |  | 徐新宇 | 48h | 48h |
| 21 | 2.2.12 | 库存及竞品活动规划（总部） |  | 4d | 2011-12-26 A | 2011-12-29 A | 1 | 100% |  |  |  |  | 杜兰 | 32h | 32h |
| 22 | 2.2.13 | 库存及竞品活动规划（子公司） |  | 2d | 2011-12-30 A | 2012-01-03 A | 21 | 100% |  |  |  |  | 杜兰 | 16h | 16h |
| 23 | 2.2.14 | 新品推广活动规划（总部） |  | 4d | 2011-12-29 A | 2012-01-06 A | 26 | 100% |  |  |  |  | 牟忠海 | 32h | 32h |
| 24 | 2.2.15 | 新品推广活动规划（子公司） |  | 2d | 2012-01-09 A | 2012-01-10 A | 23 | 100% |  |  |  |  | 牟忠海 | 16h | 16h |
| 25 | 2.2.16 | 全年活动规划 |  | 5d | 2011-12-26 A | 2011-12-30 | 1 | 25% | 3.75d | 12d |  |  | 王遐 | 40h | 10h |
| 26 | 2.2.17 | 物料状态主数据 |  | 3d | 2011-12-26 A | 2011-12-28 | 1 | 30% | 2.1d | 14d |  |  | 牟忠海 | 24h | 7.2h |
| 27 | 2.2.18 | 活动赠品设计打样封样 |  | 2d | 2012-01-17 A | 2012-01-19 A | 9 | 100% |  |  |  |  | 侯钢 | 16h | 16h |
| 28 | 2.2.19 | SAP 接口集成 |  | 3d | 2012-01-16 A | 2012-01-18 | 17 | 5% | 2.85d | 2d |  |  | 王志强; 牟忠海 | 48h | 2.4h |
| 29 | 2.2.20 | 主线流程集成 |  | 5d | 2012-01-16 A | 2012-01-20 | 5 | 10% | 4.5d | 0d |  |  | 徐新宇; 杜兰 | 80h | 8h |
| 30 | 2.3 | 流程重构 |  | 5d | 2012-01-30 | 2012-02-03 | 6 |  |  | 0d |  |  | 王志强; 侯钢; 江庆荣; 徐新宇; 杜兰 | 200h |  |

Notes:
- 7: 根据ARIS模型无驳回到上一级。 / 数据库设计符合业务需求 / 该部分信息能涵盖促销主数据（降价促销）所需要的内容,/ 该部分时间包含3个子流程 / 以及降价促销主数据
- 8: 表单能复用之前促销商品制定的表单
- 9: 活动赠品申购涉及的表单中明细是以附件的方式进行处理， / 另考虑驳回上一步功能。
- 10: 无特殊表单需求，以附件审批为主。
- 11: 当前无该流程的相关表单， / 考虑以附件的审批为主
- 13: 假设在活动赠品订购入库及配送中的物料状态是可以复用物料状态主数据。 / 其它相关的数据采用附件的方式来进行。 / 无特殊表单需求。
- 14: 主要考虑线下环节执行，只是对关键点进行监控 / 考虑2天左右的时间进行流程及流程使用表单的开发。 / 2天左右时间完成日常功能的审核提交。
- 15: 无表单相关需求， / 都是以附件的格式作为审批内容
- 17: 借鉴之前新开店的成功
- 19: 考虑表单相关字段不超过10个， / 其余内容是以附件的格式进行提交
- 21: 可以复用商品或主题或热点的促销计划子流程
- 23: 可以复用库存竞品的流程及表单
- 24: 可以复用库存竞品的流程及表单
- 25: 以附件方式的进行流程的处理，不需要相关表单
- 26: 此流程的主要难度在表单，流程可以考虑0.5天。 / 数据层面的处理考虑在2.5天。
- 27: 对于该流程，考虑到都是线下操作，只保留一个环节，且表单上字段内容部超过10个。
- 28: SAP
- 30: 所有相关流程基于需求确认90%的情况下，预留10%的未确认。

| ID | WBS | Task | Duration | Start | Finish | Predecessors | Total slack | Resources | Work |
| --- | --- | --- | --- | --- | --- | --- | --- | --- | --- |
| 31 | 2.4 | **业务信息管理及查询** | 15d | 2012-02-06 | 2012-02-24 |  | 0d |  | 680h |
| 32 | 2.4.1 | 管理页面定义及开发 | 5d | 2012-02-06 | 2012-02-10 | 30 | 0d | 王志强; 侯钢; 江庆荣; 徐新宇; 王遐; 牟忠海; 杜兰 | 280h |
| 33 | 2.4.2 | 查询统计页面查询 | 5d | 2012-02-13 | 2012-02-17 | 32 | 0d | 王志强; 侯钢; 江庆荣; 徐新宇; 王遐; 牟忠海; 杜兰 | 280h |
| 35 | 2.4.3 | 促销业务仪表板 | 5d | 2012-02-20 | 2012-02-24 | 33 | 0d | 王志强; 徐新宇; 侯钢 | 120h |

Notes:
- 33: 按照一个流程提供一个页面查询表单
